# Cronograma Elora

How a schedule from MS Project changed from version to version. A marks actual dates.

## Version 1 (saved 2026-06-08, file Cronograma_Elora.mpp)

Note of the change: Merge a26e98e6295125fc00b796a95f8d23998858f8b5 into 7d3e57d2ccf8c8a450d8a9a7f2fd930d07deae7a

| ID | WBS | Task | Duration | Start | Finish | Total float |
| --- | --- | --- | --- | --- | --- | --- |
| 1 | 1 | **Elora** | 2d? | 2026-06-09 | 2026-06-10 | 0d |
| 2 | 1.1 | **Iteração 01** | 2d? | 2026-06-09 | 2026-06-10 | 0d |
| 3 | 1.1.1 | **Modelagem** | 1d? | 2026-06-09 | 2026-06-09 | 1d |
| 4 | 1.1.1.1 | **"Modelo de análise"** | 1d? | 2026-06-09 | 2026-06-09 | 1d |
| 5 |  | Elaborar EL-UCD_001 – Diagrama de Caso de Uso de "Modelo de análise" | 1d? | 2026-06-09 | 2026-06-09 | 1d |
| 6 |  | Redigir EL-UCE_001 – Especificação de Caso de Uso de "Modelo de análise" | 1d? | 2026-06-09 | 2026-06-09 | 1d |
| 7 |  | Elaborar EL-CD_001 – Diagrama de Classes de "Modelo de análise" | 1d? | 2026-06-09 | 2026-06-09 | 1d |
| 8 |  | Elaborar EL-MER_001 – Modelo Entidade Relacionamento de "Modelo de análise" | 1d? | 2026-06-09 | 2026-06-09 | 1d |
| 9 |  | Gerar EL-Script_001 – Esquema/Script de "Modelo de análise" | 0.5d? | 2026-06-09 | 2026-06-09 | 1.5d |
| 10 |  | Elaborar EL-DBD_001 – Documentação de Banco de Dados de "Modelo de análise" | 0.5d? | 2026-06-09 | 2026-06-09 | 1.5d |
| 11 | 1.1.1.2 | **"Controle de acesso"** | 1d? | 2026-06-09 | 2026-06-09 | 1d |
| 12 |  | Elaborar EL-UCD_002 – Diagrama de Caso de Uso de "Controle de acesso" | 1d? | 2026-06-09 | 2026-06-09 | 1d |
| 13 |  | Redigir EL-UCE_002 – Especificação de Caso de Uso de "Controle de acesso" | 1d? | 2026-06-09 | 2026-06-09 | 1d |
| 14 |  | Elaborar EL-CD_002 – Diagrama de Classes de "Controle de acesso" | 1d? | 2026-06-09 | 2026-06-09 | 1d |
| 15 |  | Elaborar EL-MER_002 – Modelo Entidade Relacionamento de "Controle de acesso" | 1d? | 2026-06-09 | 2026-06-09 | 1d |
| 16 |  | Gerar EL-Script_002 – Esquema/Script de "Controle de acesso" | 0.5d? | 2026-06-09 | 2026-06-09 | 1.5d |
| 17 |  | Elaborar EL-DBD_002 – Documentação de Banco de Dados de "Controle de acesso" | 0.5d? | 2026-06-09 | 2026-06-09 | 1.5d |
| 18 | 1.1.1.3 | **"Cadastro de usuário"** | 1d? | 2026-06-09 | 2026-06-09 | 1d |
| 19 |  | Elaborar EL-UCD_003 – Diagrama de Caso de Uso de "Cadastro de usuário" | 1d? | 2026-06-09 | 2026-06-09 | 1d |
| 20 |  | Redigir EL-UCE_003 – Especificação de Caso de Uso de "Cadastro de usuário" | 1d? | 2026-06-09 | 2026-06-09 | 1d |
| 21 |  | Elaborar EL-CD_003 – Diagrama de Classes de "Cadastro de usuário" | 1d? | 2026-06-09 | 2026-06-09 | 1d |
| 22 |  | Elaborar EL-MER_003 – Modelo Entidade Relacionamento de "Cadastro de usuário" | 1d? | 2026-06-09 | 2026-06-09 | 1d |
| 23 |  | Gerar EL-Script_003 – Esquema/Script de "Cadastro de usuário" | 0.5d? | 2026-06-09 | 2026-06-09 | 1.5d |
| 24 |  | Elaborar EL-DBD_003 – Documentação de Banco de Dados de "Cadastro de usuário" | 0.5d? | 2026-06-09 | 2026-06-09 | 1.5d |
| 25 | 1.1.1.4 | **"Gestão de pagamento"** | 1d? | 2026-06-09 | 2026-06-09 | 1d |
| 26 |  | Elaborar EL-UCD_004 – Diagrama de Caso de Uso de "Gestão de pagamento" | 1d? | 2026-06-09 | 2026-06-09 | 1d |
| 27 |  | Redigir EL-UCE_004 – Especificação de Caso de Uso de "Gestão de pagamento" | 1d? | 2026-06-09 | 2026-06-09 | 1d |
| 28 |  | Elaborar EL-CD_004 – Diagrama de Classes de "Gestão de pagamento" | 1d? | 2026-06-09 | 2026-06-09 | 1d |
| 29 |  | Elaborar EL-MER_004 – Modelo Entidade Relacionamento de "Gestão de pagamento" | 1d? | 2026-06-09 | 2026-06-09 | 1d |
| 30 |  | Gerar EL-Script_004 – Esquema/Script de "Gestão de pagamento" | 0.5d? | 2026-06-09 | 2026-06-09 | 1.5d |
| 31 |  | Elaborar EL-DBD_004 – Documentação de Banco de Dados de "Gestão de pagamento" | 0.5d? | 2026-06-09 | 2026-06-09 | 1.5d |
| 32 | 1.1.2 | **Construção** | 2d? | 2026-06-09 | 2026-06-10 | 0d |
| 33 | 1.1.2.1 | **"Modelo de análise"** | 2d? | 2026-06-09 | 2026-06-10 | 0d |
| 34 |  | Implementar EL-CMC_001 – Classes, Métodos e Componentes de "Modelo de análise" | 2d? | 2026-06-09 | 2026-06-10 | 0d |
| 35 |  | Implementar EL-FUX_001 – Front-UX de "Modelo de análise" | 2d? | 2026-06-09 | 2026-06-10 | 0d |
| 36 |  | Identificar EL-API_001 – APIs de "Modelo de análise" | 1d? | 2026-06-09 | 2026-06-09 | 1d |
| 37 |  | Criar EL-IBD_001 – Interface do Mapeamento de Banco de Dados de "Modelo de análise" | 1d? | 2026-06-09 | 2026-06-09 | 1d |
| 38 |  | Integrar EL-I_001 – "Modelo de análise" | 1d? | 2026-06-09 | 2026-06-09 | 1d |
| 39 | 1.1.2.2 | **"Controle de acesso"** | 2d? | 2026-06-09 | 2026-06-10 | 0d |
| 40 |  | Implementar EL-CMC_002 – Classes, Métodos e Componentes de "Controle de acesso" | 2d? | 2026-06-09 | 2026-06-10 | 0d |
| 41 |  | Implementar EL-FUX_002 – Front-UX de "Controle de acesso" | 2d? | 2026-06-09 | 2026-06-10 | 0d |
| 42 |  | Identificar EL-API_002 – APIs de "Controle de acesso" | 1d? | 2026-06-09 | 2026-06-09 | 1d |
| 43 |  | Criar EL-IBD_002 – Interface do Mapeamento de Banco de Dados de "Controle de acesso" | 1d? | 2026-06-09 | 2026-06-09 | 1d |
| 44 |  | Integrar EL-I_002 – "Controle de acesso" | 1d? | 2026-06-09 | 2026-06-09 | 1d |
| 45 | 1.1.2.3 | **"Cadastro de usuário"** | 2d? | 2026-06-09 | 2026-06-10 | 0d |
| 46 |  | Implementar EL-CMC_003 – Classes, Métodos e Componentes de "Cadastro de usuário" | 2d? | 2026-06-09 | 2026-06-10 | 0d |
| 47 |  | Implementar EL-FUX_003 – Front-UX de "Cadastro de usuário" | 2d? | 2026-06-09 | 2026-06-10 | 0d |
| 48 |  | Identificar EL-API_003 – APIs de "Cadastro de usuário" | 1d? | 2026-06-09 | 2026-06-09 | 1d |
| 49 |  | Criar EL-IBD_003 – Interface do Mapeamento de Banco de Dados de "Cadastro de usuário" | 1d? | 2026-06-09 | 2026-06-09 | 1d |
| 50 |  | Integrar EL-I_003 – "Cadastro de usuário" | 1d? | 2026-06-09 | 2026-06-09 | 1d |
| 51 | 1.1.2.4 | **"Gestão de pagamento"** | 2d? | 2026-06-09 | 2026-06-10 | 0d |
| 52 |  | Implementar EL-CMC_004 – Classes, Métodos e Componentes de "Gestão de pagamento" | 2d? | 2026-06-09 | 2026-06-10 | 0d |
| 53 |  | Implementar EL-FUX_004 – Front-UX de "Gestão de pagamento" | 2d? | 2026-06-09 | 2026-06-10 | 0d |
| 54 |  | Identificar EL-API_004 – APIs de "Gestão de pagamento" | 1d? | 2026-06-09 | 2026-06-09 | 1d |
| 55 |  | Criar EL-IBD_004 – Interface do Mapeamento de Banco de Dados de "Gestão de pagamento" | 1d? | 2026-06-09 | 2026-06-09 | 1d |
| 56 |  | Integrar EL-I_004 – "Gestão de pagamento" | 1d? | 2026-06-09 | 2026-06-09 | 1d |
| 57 | 1.1.3 | **Testes** | 1d? | 2026-06-09 | 2026-06-09 | 1d |
| 58 | 1.1.3.1 | **"Modelo de análise"** | 1d? | 2026-06-09 | 2026-06-09 | 1d |
| 59 |  | Implementar EL-TC_001 – Casos de Teste de "Modelo de análise" | 1d? | 2026-06-09 | 2026-06-09 | 1d |
| 60 |  | Executar EL-T_001 – Testes de "Modelo de análise" | 1d? | 2026-06-09 | 2026-06-09 | 1d |
| 61 |  | Registrar EL-LT_001 – Logs de Teste de "Modelo de análise" | 0.5d? | 2026-06-09 | 2026-06-09 | 1.5d |
| 62 |  | Executar EL-TH_001 – Testes de Homologação de "Modelo de análise" | 1d? | 2026-06-09 | 2026-06-09 | 1d |
| 63 | 1.1.3.2 | **"Controle de acesso"** | 1d? | 2026-06-09 | 2026-06-09 | 1d |
| 64 |  | Implementar EL-TC_002 – Casos de Teste de "Controle de acesso" | 1d? | 2026-06-09 | 2026-06-09 | 1d |
| 65 |  | Executar EL-T_002 – Testes de "Controle de acesso" | 1d? | 2026-06-09 | 2026-06-09 | 1d |
| 66 |  | Registrar EL-LT_002 – Logs de Teste de "Controle de acesso" | 0.5d? | 2026-06-09 | 2026-06-09 | 1.5d |
| 67 |  | Executar EL-TH_002 – Testes de Homologação de "Controle de acesso" | 1d? | 2026-06-09 | 2026-06-09 | 1d |
| 68 | 1.1.3.3 | **"Cadastro de usuário"** | 1d? | 2026-06-09 | 2026-06-09 | 1d |
| 69 |  | Implementar EL-TC_003 – Casos de Teste de "Cadastro de usuário" | 1d? | 2026-06-09 | 2026-06-09 | 1d |
| 70 |  | Executar EL-T_003 – Testes de "Cadastro de usuário" | 1d? | 2026-06-09 | 2026-06-09 | 1d |

| ID | WBS | Task | Duration | Start | Finish | Total float |
| --- | --- | --- | --- | --- | --- | --- |
| 71 |  | Registrar EL-LT_003 – Logs de Teste de "Cadastro de usuário" | 0.5d? | 2026-06-09 | 2026-06-09 | 1.5d |
| 72 |  | Executar EL-TH_003 – Testes de Homologação de "Cadastro de usuário" | 1d? | 2026-06-09 | 2026-06-09 | 1d |
| 73 | 1.1.3.4 | **"Gestão de pagamento"** | 1d? | 2026-06-09 | 2026-06-09 | 1d |
| 74 |  | Implementar EL-TC_004 – Casos de Teste de "Gestão de pagamento" | 1d? | 2026-06-09 | 2026-06-09 | 1d |
| 75 |  | Executar EL-T_004 – Testes de "Gestão de pagamento" | 1d? | 2026-06-09 | 2026-06-09 | 1d |
| 76 |  | Registrar EL-LT_004 – Logs de Teste de "Gestão de pagamento" | 0.5d? | 2026-06-09 | 2026-06-09 | 1.5d |
| 77 |  | Executar EL-TH_004 – Testes de Homologação de "Gestão de pagamento" | 1d? | 2026-06-09 | 2026-06-09 | 1d |
| 78 |  | ★ Marco da Entrega da Iteração 01 | 0d? | 2026-06-09 | 2026-06-09 | 2d |
| 79 | 1.2 | **Iteração 02** | 2d? | 2026-06-09 | 2026-06-10 | 0d |
| 80 | 1.2.1 | **Modelagem** | 1d? | 2026-06-09 | 2026-06-09 | 1d |
| 81 | 1.2.1.1 | **"Nível de acesso ao sistema"** | 1d? | 2026-06-09 | 2026-06-09 | 1d |
| 82 |  | Elaborar EL-UCD_005 – Diagrama de Caso de Uso de "Nível de acesso ao sistema" | 1d? | 2026-06-09 | 2026-06-09 | 1d |
| 83 |  | Redigir EL-UCE_005 – Especificação de Caso de Uso de "Nível de acesso ao sistema" | 1d? | 2026-06-09 | 2026-06-09 | 1d |
| 84 |  | Elaborar EL-CD_005 – Diagrama de Classes de "Nível de acesso ao sistema" | 1d? | 2026-06-09 | 2026-06-09 | 1d |
| 85 |  | Elaborar EL-MER_005 – Modelo Entidade Relacionamento de "Nível de acesso ao sistema" | 1d? | 2026-06-09 | 2026-06-09 | 1d |
| 86 |  | Gerar EL-Script_005 – Esquema/Script de "Nível de acesso ao sistema" | 0.5d? | 2026-06-09 | 2026-06-09 | 1.5d |
| 87 |  | Elaborar EL-DBD_005 – Documentação de Banco de Dados de "Nível de acesso ao sistema" | 0.5d? | 2026-06-09 | 2026-06-09 | 1.5d |
| 88 | 1.2.1.2 | **"Cadastro de profissionais"** | 1d? | 2026-06-09 | 2026-06-09 | 1d |
| 89 |  | Elaborar EL-UCD_006 – Diagrama de Caso de Uso de "Cadastro de profissionais" | 1d? | 2026-06-09 | 2026-06-09 | 1d |
| 90 |  | Redigir EL-UCE_006 – Especificação de Caso de Uso de "Cadastro de profissionais" | 1d? | 2026-06-09 | 2026-06-09 | 1d |
| 91 |  | Elaborar EL-CD_006 – Diagrama de Classes de "Cadastro de profissionais" | 1d? | 2026-06-09 | 2026-06-09 | 1d |
| 92 |  | Elaborar EL-MER_006 – Modelo Entidade Relacionamento de "Cadastro de profissionais" | 1d? | 2026-06-09 | 2026-06-09 | 1d |
| 93 |  | Gerar EL-Script_006 – Esquema/Script de "Cadastro de profissionais" | 0.5d? | 2026-06-09 | 2026-06-09 | 1.5d |
| 94 |  | Elaborar EL-DBD_006 – Documentação de Banco de Dados de "Cadastro de profissionais" | 0.5d? | 2026-06-09 | 2026-06-09 | 1.5d |
| 95 | 1.2.1.3 | **"Definição de taxa de serviço"** | 1d? | 2026-06-09 | 2026-06-09 | 1d |
| 96 |  | Elaborar EL-UCD_007 – Diagrama de Caso de Uso de "Definição de taxa de serviço" | 1d? | 2026-06-09 | 2026-06-09 | 1d |
| 97 |  | Redigir EL-UCE_007 – Especificação de Caso de Uso de "Definição de taxa de serviço" | 1d? | 2026-06-09 | 2026-06-09 | 1d |
| 98 |  | Elaborar EL-CD_007 – Diagrama de Classes de "Definição de taxa de serviço" | 1d? | 2026-06-09 | 2026-06-09 | 1d |
| 99 |  | Elaborar EL-MER_007 – Modelo Entidade Relacionamento de "Definição de taxa de serviço" | 1d? | 2026-06-09 | 2026-06-09 | 1d |
| 100 |  | Gerar EL-Script_007 – Esquema/Script de "Definição de taxa de serviço" | 0.5d? | 2026-06-09 | 2026-06-09 | 1.5d |
| 101 |  | Elaborar EL-DBD_007 – Documentação de Banco de Dados de "Definição de taxa de serviço" | 0.5d? | 2026-06-09 | 2026-06-09 | 1.5d |
| 102 | 1.2.1.4 | **"Controle de assinatura de contrato"** | 1d? | 2026-06-09 | 2026-06-09 | 1d |
| 103 |  | Elaborar EL-UCD_008 – Diagrama de Caso de Uso de "Controle de assinatura de contrato" | 1d? | 2026-06-09 | 2026-06-09 | 1d |
| 104 |  | Redigir EL-UCE_008 – Especificação de Caso de Uso de "Controle de assinatura de contrato" | 1d? | 2026-06-09 | 2026-06-09 | 1d |
| 105 |  | Elaborar EL-CD_008 – Diagrama de Classes de "Controle de assinatura de contrato" | 1d? | 2026-06-09 | 2026-06-09 | 1d |
| 106 |  | Elaborar EL-MER_008 – Modelo Entidade Relacionamento de "Controle de assinatura de contrato" | 1d? | 2026-06-09 | 2026-06-09 | 1d |
| 107 |  | Gerar EL-Script_008 – Esquema/Script de "Controle de assinatura de contrato" | 0.5d? | 2026-06-09 | 2026-06-09 | 1.5d |
| 108 |  | Elaborar EL-DBD_008 – Documentação de Banco de Dados de "Controle de assinatura de contrato" | 0.5d? | 2026-06-09 | 2026-06-09 | 1.5d |
| 109 | 1.2.1.5 | **"Proposta de contrato"** | 1d? | 2026-06-09 | 2026-06-09 | 1d |
| 110 |  | Elaborar EL-UCD_009 – Diagrama de Caso de Uso de "Proposta de contrato" | 1d? | 2026-06-09 | 2026-06-09 | 1d |
| 111 |  | Redigir EL-UCE_009 – Especificação de Caso de Uso de "Proposta de contrato" | 1d? | 2026-06-09 | 2026-06-09 | 1d |
| 112 |  | Elaborar EL-CD_009 – Diagrama de Classes de "Proposta de contrato" | 1d? | 2026-06-09 | 2026-06-09 | 1d |
| 113 |  | Elaborar EL-MER_009 – Modelo Entidade Relacionamento de "Proposta de contrato" | 1d? | 2026-06-09 | 2026-06-09 | 1d |
| 114 |  | Gerar EL-Script_009 – Esquema/Script de "Proposta de contrato" | 0.5d? | 2026-06-09 | 2026-06-09 | 1.5d |
| 115 |  | Elaborar EL-DBD_009 – Documentação de Banco de Dados de "Proposta de contrato" | 0.5d? | 2026-06-09 | 2026-06-09 | 1.5d |
| 116 | 1.2.1.6 | **"Busca de profissionais"** | 1d? | 2026-06-09 | 2026-06-09 | 1d |
| 117 |  | Elaborar EL-UCD_010 – Diagrama de Caso de Uso de "Busca de profissionais" | 1d? | 2026-06-09 | 2026-06-09 | 1d |
| 118 |  | Redigir EL-UCE_010 – Especificação de Caso de Uso de "Busca de profissionais" | 1d? | 2026-06-09 | 2026-06-09 | 1d |
| 119 |  | Elaborar EL-CD_010 – Diagrama de Classes de "Busca de profissionais" | 1d? | 2026-06-09 | 2026-06-09 | 1d |
| 120 |  | Elaborar EL-MER_010 – Modelo Entidade Relacionamento de "Busca de profissionais" | 1d? | 2026-06-09 | 2026-06-09 | 1d |
| 121 |  | Gerar EL-Script_010 – Esquema/Script de "Busca de profissionais" | 0.5d? | 2026-06-09 | 2026-06-09 | 1.5d |
| 122 |  | Elaborar EL-DBD_010 – Documentação de Banco de Dados de "Busca de profissionais" | 0.5d? | 2026-06-09 | 2026-06-09 | 1.5d |
| 123 | 1.2.1.7 | **"Gerenciamento de escala de trabalho"** | 1d? | 2026-06-09 | 2026-06-09 | 1d |
| 124 |  | Elaborar EL-UCD_011 – Diagrama de Caso de Uso de "Gerenciamento de escala de trabalho" | 1d? | 2026-06-09 | 2026-06-09 | 1d |
| 125 |  | Redigir EL-UCE_011 – Especificação de Caso de Uso de "Gerenciamento de escala de trabalho" | 1d? | 2026-06-09 | 2026-06-09 | 1d |
| 126 |  | Elaborar EL-CD_011 – Diagrama de Classes de "Gerenciamento de escala de trabalho" | 1d? | 2026-06-09 | 2026-06-09 | 1d |
| 127 |  | Elaborar EL-MER_011 – Modelo Entidade Relacionamento de "Gerenciamento de escala de trabalho" | 1d? | 2026-06-09 | 2026-06-09 | 1d |
| 128 |  | Gerar EL-Script_011 – Esquema/Script de "Gerenciamento de escala de trabalho" | 0.5d? | 2026-06-09 | 2026-06-09 | 1.5d |
| 129 |  | Elaborar EL-DBD_011 – Documentação de Banco de Dados de "Gerenciamento de escala de trabalho" | 0.5d? | 2026-06-09 | 2026-06-09 | 1.5d |
| 130 | 1.2.2 | **Construção** | 2d? | 2026-06-09 | 2026-06-10 | 0d |
| 131 | 1.2.2.1 | **"Nível de acesso ao sistema"** | 2d? | 2026-06-09 | 2026-06-10 | 0d |
| 132 |  | Implementar EL-CMC_005 – Classes, Métodos e Componentes de "Nível de acesso ao sistema" | 2d? | 2026-06-09 | 2026-06-10 | 0d |
| 133 |  | Implementar EL-FUX_005 – Front-UX de "Nível de acesso ao sistema" | 2d? | 2026-06-09 | 2026-06-10 | 0d |
| 134 |  | Identificar EL-API_005 – APIs de "Nível de acesso ao sistema" | 1d? | 2026-06-09 | 2026-06-09 | 1d |
| 135 |  | Criar EL-IBD_005 – Interface do Mapeamento de Banco de Dados de "Nível de acesso ao sistema" | 1d? | 2026-06-09 | 2026-06-09 | 1d |
| 136 |  | Integrar EL-I_005 – "Nível de acesso ao sistema" | 1d? | 2026-06-09 | 2026-06-09 | 1d |
| 137 | 1.2.2.2 | **"Cadastro de profissionais"** | 2d? | 2026-06-09 | 2026-06-10 | 0d |
| 138 |  | Implementar EL-CMC_006 – Classes, Métodos e Componentes de "Cadastro de profissionais" | 2d? | 2026-06-09 | 2026-06-10 | 0d |
| 139 |  | Implementar EL-FUX_006 – Front-UX de "Cadastro de profissionais" | 2d? | 2026-06-09 | 2026-06-10 | 0d |
| 140 |  | Identificar EL-API_006 – APIs de "Cadastro de profissionais" | 1d? | 2026-06-09 | 2026-06-09 | 1d |

| ID | WBS | Task | Duration | Start | Finish | Total float |
| --- | --- | --- | --- | --- | --- | --- |
| 141 |  | Criar EL-IBD_006 – Interface do Mapeamento de Banco de Dados de "Cadastro de profissionais" | 1d? | 2026-06-09 | 2026-06-09 | 1d |
| 142 |  | Integrar EL-I_006 – "Cadastro de profissionais" | 1d? | 2026-06-09 | 2026-06-09 | 1d |
| 143 | 1.2.2.3 | **"Definição de taxa de serviço"** | 2d? | 2026-06-09 | 2026-06-10 | 0d |
| 144 |  | Implementar EL-CMC_007 – Classes, Métodos e Componentes de "Definição de taxa de serviço" | 2d? | 2026-06-09 | 2026-06-10 | 0d |
| 145 |  | Implementar EL-FUX_007 – Front-UX de "Definição de taxa de serviço" | 2d? | 2026-06-09 | 2026-06-10 | 0d |
| 146 |  | Identificar EL-API_007 – APIs de "Definição de taxa de serviço" | 1d? | 2026-06-09 | 2026-06-09 | 1d |
| 147 |  | Criar EL-IBD_007 – Interface do Mapeamento de Banco de Dados de "Definição de taxa de serviço" | 1d? | 2026-06-09 | 2026-06-09 | 1d |
| 148 |  | Integrar EL-I_007 – "Definição de taxa de serviço" | 1d? | 2026-06-09 | 2026-06-09 | 1d |
| 149 | 1.2.2.4 | **"Controle de assinatura de contrato"** | 2d? | 2026-06-09 | 2026-06-10 | 0d |
| 150 |  | Implementar EL-CMC_008 – Classes, Métodos e Componentes de "Controle de assinatura de contrato" | 2d? | 2026-06-09 | 2026-06-10 | 0d |
| 151 |  | Implementar EL-FUX_008 – Front-UX de "Controle de assinatura de contrato" | 2d? | 2026-06-09 | 2026-06-10 | 0d |
| 152 |  | Identificar EL-API_008 – APIs de "Controle de assinatura de contrato" | 1d? | 2026-06-09 | 2026-06-09 | 1d |
| 153 |  | Criar EL-IBD_008 – Interface do Mapeamento de Banco de Dados de "Controle de assinatura de contrato" | 1d? | 2026-06-09 | 2026-06-09 | 1d |
| 154 |  | Integrar EL-I_008 – "Controle de assinatura de contrato" | 1d? | 2026-06-09 | 2026-06-09 | 1d |
| 155 | 1.2.2.5 | **"Proposta de contrato"** | 2d? | 2026-06-09 | 2026-06-10 | 0d |
| 156 |  | Implementar EL-CMC_009 – Classes, Métodos e Componentes de "Proposta de contrato" | 2d? | 2026-06-09 | 2026-06-10 | 0d |
| 157 |  | Implementar EL-FUX_009 – Front-UX de "Proposta de contrato" | 2d? | 2026-06-09 | 2026-06-10 | 0d |
| 158 |  | Identificar EL-API_009 – APIs de "Proposta de contrato" | 1d? | 2026-06-09 | 2026-06-09 | 1d |
| 159 |  | Criar EL-IBD_009 – Interface do Mapeamento de Banco de Dados de "Proposta de contrato" | 1d? | 2026-06-09 | 2026-06-09 | 1d |
| 160 |  | Integrar EL-I_009 – "Proposta de contrato" | 1d? | 2026-06-09 | 2026-06-09 | 1d |
| 161 | 1.2.2.6 | **"Busca de profissionais"** | 2d? | 2026-06-09 | 2026-06-10 | 0d |
| 162 |  | Implementar EL-CMC_010 – Classes, Métodos e Componentes de "Busca de profissionais" | 2d? | 2026-06-09 | 2026-06-10 | 0d |
| 163 |  | Implementar EL-FUX_010 – Front-UX de "Busca de profissionais" | 2d? | 2026-06-09 | 2026-06-10 | 0d |
| 164 |  | Identificar EL-API_010 – APIs de "Busca de profissionais" | 1d? | 2026-06-09 | 2026-06-09 | 1d |
| 165 |  | Criar EL-IBD_010 – Interface do Mapeamento de Banco de Dados de "Busca de profissionais" | 1d? | 2026-06-09 | 2026-06-09 | 1d |
| 166 |  | Integrar EL-I_010 – "Busca de profissionais" | 1d? | 2026-06-09 | 2026-06-09 | 1d |
| 167 | 1.2.2.7 | **"Gerenciamento de escala de trabalho"** | 2d? | 2026-06-09 | 2026-06-10 | 0d |
| 168 |  | Implementar EL-CMC_011 – Classes, Métodos e Componentes de "Gerenciamento de escala de trabalho" | 2d? | 2026-06-09 | 2026-06-10 | 0d |
| 169 |  | Implementar EL-FUX_011 – Front-UX de "Gerenciamento de escala de trabalho" | 2d? | 2026-06-09 | 2026-06-10 | 0d |
| 170 |  | Identificar EL-API_011 – APIs de "Gerenciamento de escala de trabalho" | 1d? | 2026-06-09 | 2026-06-09 | 1d |
| 171 |  | Criar EL-IBD_011 – Interface do Mapeamento de Banco de Dados de "Gerenciamento de escala de trabalho" | 1d? | 2026-06-09 | 2026-06-09 | 1d |
| 172 |  | Integrar EL-I_011 – "Gerenciamento de escala de trabalho" | 1d? | 2026-06-09 | 2026-06-09 | 1d |
| 173 | 1.2.3 | **Testes** | 1d? | 2026-06-09 | 2026-06-09 | 1d |
| 174 | 1.2.3.1 | **"Nível de acesso ao sistema"** | 1d? | 2026-06-09 | 2026-06-09 | 1d |
| 175 |  | Implementar EL-TC_005 – Casos de Teste de "Nível de acesso ao sistema" | 1d? | 2026-06-09 | 2026-06-09 | 1d |
| 176 |  | Executar EL-T_005 – Testes de "Nível de acesso ao sistema" | 1d? | 2026-06-09 | 2026-06-09 | 1d |
| 177 |  | Registrar EL-LT_005 – Logs de Teste de "Nível de acesso ao sistema" | 0.5d? | 2026-06-09 | 2026-06-09 | 1.5d |
| 178 |  | Executar EL-TH_005 – Testes de Homologação de "Nível de acesso ao sistema" | 1d? | 2026-06-09 | 2026-06-09 | 1d |
| 179 | 1.2.3.2 | **"Cadastro de profissionais"** | 1d? | 2026-06-09 | 2026-06-09 | 1d |
| 180 |  | Implementar EL-TC_006 – Casos de Teste de "Cadastro de profissionais" | 1d? | 2026-06-09 | 2026-06-09 | 1d |
| 181 |  | Executar EL-T_006 – Testes de "Cadastro de profissionais" | 1d? | 2026-06-09 | 2026-06-09 | 1d |
| 182 |  | Registrar EL-LT_006 – Logs de Teste de "Cadastro de profissionais" | 0.5d? | 2026-06-09 | 2026-06-09 | 1.5d |
| 183 |  | Executar EL-TH_006 – Testes de Homologação de "Cadastro de profissionais" | 1d? | 2026-06-09 | 2026-06-09 | 1d |
| 184 | 1.2.3.3 | **"Definição de taxa de serviço"** | 1d? | 2026-06-09 | 2026-06-09 | 1d |
| 185 |  | Implementar EL-TC_007 – Casos de Teste de "Definição de taxa de serviço" | 1d? | 2026-06-09 | 2026-06-09 | 1d |
| 186 |  | Executar EL-T_007 – Testes de "Definição de taxa de serviço" | 1d? | 2026-06-09 | 2026-06-09 | 1d |
| 187 |  | Registrar EL-LT_007 – Logs de Teste de "Definição de taxa de serviço" | 0.5d? | 2026-06-09 | 2026-06-09 | 1.5d |
| 188 |  | Executar EL-TH_007 – Testes de Homologação de "Definição de taxa de serviço" | 1d? | 2026-06-09 | 2026-06-09 | 1d |
| 189 | 1.2.3.4 | **"Controle de assinatura de contrato"** | 1d? | 2026-06-09 | 2026-06-09 | 1d |
| 190 |  | Implementar EL-TC_008 – Casos de Teste de "Controle de assinatura de contrato" | 1d? | 2026-06-09 | 2026-06-09 | 1d |
| 191 |  | Executar EL-T_008 – Testes de "Controle de assinatura de contrato" | 1d? | 2026-06-09 | 2026-06-09 | 1d |
| 192 |  | Registrar EL-LT_008 – Logs de Teste de "Controle de assinatura de contrato" | 0.5d? | 2026-06-09 | 2026-06-09 | 1.5d |
| 193 |  | Executar EL-TH_008 – Testes de Homologação de "Controle de assinatura de contrato" | 1d? | 2026-06-09 | 2026-06-09 | 1d |
| 194 | 1.2.3.5 | **"Proposta de contrato"** | 1d? | 2026-06-09 | 2026-06-09 | 1d |
| 195 |  | Implementar EL-TC_009 – Casos de Teste de "Proposta de contrato" | 1d? | 2026-06-09 | 2026-06-09 | 1d |
| 196 |  | Executar EL-T_009 – Testes de "Proposta de contrato" | 1d? | 2026-06-09 | 2026-06-09 | 1d |
| 197 |  | Registrar EL-LT_009 – Logs de Teste de "Proposta de contrato" | 0.5d? | 2026-06-09 | 2026-06-09 | 1.5d |
| 198 |  | Executar EL-TH_009 – Testes de Homologação de "Proposta de contrato" | 1d? | 2026-06-09 | 2026-06-09 | 1d |
| 199 | 1.2.3.6 | **"Busca de profissionais"** | 1d? | 2026-06-09 | 2026-06-09 | 1d |
| 200 |  | Implementar EL-TC_010 – Casos de Teste de "Busca de profissionais" | 1d? | 2026-06-09 | 2026-06-09 | 1d |
| 201 |  | Executar EL-T_010 – Testes de "Busca de profissionais" | 1d? | 2026-06-09 | 2026-06-09 | 1d |
| 202 |  | Registrar EL-LT_010 – Logs de Teste de "Busca de profissionais" | 0.5d? | 2026-06-09 | 2026-06-09 | 1.5d |
| 203 |  | Executar EL-TH_010 – Testes de Homologação de "Busca de profissionais" | 1d? | 2026-06-09 | 2026-06-09 | 1d |
| 204 | 1.2.3.7 | **"Gerenciamento de escala de trabalho"** | 1d? | 2026-06-09 | 2026-06-09 | 1d |
| 205 |  | Implementar EL-TC_011 – Casos de Teste de "Gerenciamento de escala de trabalho" | 1d? | 2026-06-09 | 2026-06-09 | 1d |
| 206 |  | Executar EL-T_011 – Testes de "Gerenciamento de escala de trabalho" | 1d? | 2026-06-09 | 2026-06-09 | 1d |
| 207 |  | Registrar EL-LT_011 – Logs de Teste de "Gerenciamento de escala de trabalho" | 0.5d? | 2026-06-09 | 2026-06-09 | 1.5d |
| 208 |  | Executar EL-TH_011 – Testes de Homologação de "Gerenciamento de escala de trabalho" | 1d? | 2026-06-09 | 2026-06-09 | 1d |
| 209 |  | ★ Marco da Entrega da Iteração 02 | 0d? | 2026-06-09 | 2026-06-09 | 2d |
| 210 | 1.3 | **Iteração 03** | 2d? | 2026-06-09 | 2026-06-10 | 0d |

| ID | WBS | Task | Duration | Start | Finish | Total float |
| --- | --- | --- | --- | --- | --- | --- |
| 211 | 1.3.1 | **Modelagem** | 1d? | 2026-06-09 | 2026-06-09 | 1d |
| 212 | 1.3.1.1 | **"Controle de pagamento"** | 1d? | 2026-06-09 | 2026-06-09 | 1d |
| 213 |  | Elaborar EL-UCD_012 – Diagrama de Caso de Uso de "Controle de pagamento" | 1d? | 2026-06-09 | 2026-06-09 | 1d |
| 214 |  | Redigir EL-UCE_012 – Especificação de Caso de Uso de "Controle de pagamento" | 1d? | 2026-06-09 | 2026-06-09 | 1d |
| 215 |  | Elaborar EL-CD_012 – Diagrama de Classes de "Controle de pagamento" | 1d? | 2026-06-09 | 2026-06-09 | 1d |
| 216 |  | Elaborar EL-MER_012 – Modelo Entidade Relacionamento de "Controle de pagamento" | 1d? | 2026-06-09 | 2026-06-09 | 1d |
| 217 |  | Gerar EL-Script_012 – Esquema/Script de "Controle de pagamento" | 0.5d? | 2026-06-09 | 2026-06-09 | 1.5d |
| 218 |  | Elaborar EL-DBD_012 – Documentação de Banco de Dados de "Controle de pagamento" | 0.5d? | 2026-06-09 | 2026-06-09 | 1.5d |
| 219 | 1.3.1.2 | **"Configuração de Percentuais e Repasse"** | 1d? | 2026-06-09 | 2026-06-09 | 1d |
| 220 |  | Elaborar EL-UCD_013 – Diagrama de Caso de Uso de "Configuração de Percentuais e Repasse" | 1d? | 2026-06-09 | 2026-06-09 | 1d |
| 221 |  | Redigir EL-UCE_013 – Especificação de Caso de Uso de "Configuração de Percentuais e Repasse" | 1d? | 2026-06-09 | 2026-06-09 | 1d |
| 222 |  | Elaborar EL-CD_013 – Diagrama de Classes de "Configuração de Percentuais e Repasse" | 1d? | 2026-06-09 | 2026-06-09 | 1d |
| 223 |  | Elaborar EL-MER_013 – Modelo Entidade Relacionamento de "Configuração de Percentuais e Repasse" | 1d? | 2026-06-09 | 2026-06-09 | 1d |
| 224 |  | Gerar EL-Script_013 – Esquema/Script de "Configuração de Percentuais e Repasse" | 0.5d? | 2026-06-09 | 2026-06-09 | 1.5d |
| 225 |  | Elaborar EL-DBD_013 – Documentação de Banco de Dados de "Configuração de Percentuais e Repasse" | 0.5d? | 2026-06-09 | 2026-06-09 | 1.5d |
| 226 | 1.3.1.3 | **"Gestão de painel jurídico"** | 1d? | 2026-06-09 | 2026-06-09 | 1d |
| 227 |  | Elaborar EL-UCD_014 – Diagrama de Caso de Uso de "Gestão de painel jurídico" | 1d? | 2026-06-09 | 2026-06-09 | 1d |
| 228 |  | Redigir EL-UCE_014 – Especificação de Caso de Uso de "Gestão de painel jurídico" | 1d? | 2026-06-09 | 2026-06-09 | 1d |
| 229 |  | Elaborar EL-CD_014 – Diagrama de Classes de "Gestão de painel jurídico" | 1d? | 2026-06-09 | 2026-06-09 | 1d |
| 230 |  | Elaborar EL-MER_014 – Modelo Entidade Relacionamento de "Gestão de painel jurídico" | 1d? | 2026-06-09 | 2026-06-09 | 1d |
| 231 |  | Gerar EL-Script_014 – Esquema/Script de "Gestão de painel jurídico" | 0.5d? | 2026-06-09 | 2026-06-09 | 1.5d |
| 232 |  | Elaborar EL-DBD_014 – Documentação de Banco de Dados de "Gestão de painel jurídico" | 0.5d? | 2026-06-09 | 2026-06-09 | 1.5d |
| 233 | 1.3.1.4 | **"Cadastro do documento do profissional"** | 1d? | 2026-06-09 | 2026-06-09 | 1d |
| 234 |  | Elaborar EL-UCD_015 – Diagrama de Caso de Uso de "Cadastro do documento do profissional" | 1d? | 2026-06-09 | 2026-06-09 | 1d |
| 235 |  | Redigir EL-UCE_015 – Especificação de Caso de Uso de "Cadastro do documento do profissional" | 1d? | 2026-06-09 | 2026-06-09 | 1d |
| 236 |  | Elaborar EL-CD_015 – Diagrama de Classes de "Cadastro do documento do profissional" | 1d? | 2026-06-09 | 2026-06-09 | 1d |
| 237 |  | Elaborar EL-MER_015 – Modelo Entidade Relacionamento de "Cadastro do documento do profissional" | 1d? | 2026-06-09 | 2026-06-09 | 1d |
| 238 |  | Gerar EL-Script_015 – Esquema/Script de "Cadastro do documento do profissional" | 0.5d? | 2026-06-09 | 2026-06-09 | 1.5d |
| 239 |  | Elaborar EL-DBD_015 – Documentação de Banco de Dados de "Cadastro do documento do profissional" | 0.5d? | 2026-06-09 | 2026-06-09 | 1.5d |
| 240 | 1.3.1.5 | **"Gestão de relatórios financeiros"** | 1d? | 2026-06-09 | 2026-06-09 | 1d |
| 241 |  | Elaborar EL-UCD_016 – Diagrama de Caso de Uso de "Gestão de relatórios financeiros" | 1d? | 2026-06-09 | 2026-06-09 | 1d |
| 242 |  | Redigir EL-UCE_016 – Especificação de Caso de Uso de "Gestão de relatórios financeiros" | 1d? | 2026-06-09 | 2026-06-09 | 1d |
| 243 |  | Elaborar EL-CD_016 – Diagrama de Classes de "Gestão de relatórios financeiros" | 1d? | 2026-06-09 | 2026-06-09 | 1d |
| 244 |  | Elaborar EL-MER_016 – Modelo Entidade Relacionamento de "Gestão de relatórios financeiros" | 1d? | 2026-06-09 | 2026-06-09 | 1d |
| 245 |  | Gerar EL-Script_016 – Esquema/Script de "Gestão de relatórios financeiros" | 0.5d? | 2026-06-09 | 2026-06-09 | 1.5d |
| 246 |  | Elaborar EL-DBD_016 – Documentação de Banco de Dados de "Gestão de relatórios financeiros" | 0.5d? | 2026-06-09 | 2026-06-09 | 1.5d |
| 247 | 1.3.2 | **Construção** | 2d? | 2026-06-09 | 2026-06-10 | 0d |
| 248 | 1.3.2.1 | **"Controle de pagamento"** | 2d? | 2026-06-09 | 2026-06-10 | 0d |
| 249 |  | Implementar EL-CMC_012 – Classes, Métodos e Componentes de "Controle de pagamento" | 2d? | 2026-06-09 | 2026-06-10 | 0d |
| 250 |  | Implementar EL-FUX_012 – Front-UX de "Controle de pagamento" | 2d? | 2026-06-09 | 2026-06-10 | 0d |
| 251 |  | Identificar EL-API_012 – APIs de "Controle de pagamento" | 1d? | 2026-06-09 | 2026-06-09 | 1d |
| 252 |  | Criar EL-IBD_012 – Interface do Mapeamento de Banco de Dados de "Controle de pagamento" | 1d? | 2026-06-09 | 2026-06-09 | 1d |
| 253 |  | Integrar EL-I_012 – "Controle de pagamento" | 1d? | 2026-06-09 | 2026-06-09 | 1d |
| 254 | 1.3.2.2 | **"Configuração de Percentuais e Repasse"** | 2d? | 2026-06-09 | 2026-06-10 | 0d |
| 255 |  | Implementar EL-CMC_013 – Classes, Métodos e Componentes de "Configuração de Percentuais e Repasse" | 2d? | 2026-06-09 | 2026-06-10 | 0d |
| 256 |  | Implementar EL-FUX_013 – Front-UX de "Configuração de Percentuais e Repasse" | 2d? | 2026-06-09 | 2026-06-10 | 0d |
| 257 |  | Identificar EL-API_013 – APIs de "Configuração de Percentuais e Repasse" | 1d? | 2026-06-09 | 2026-06-09 | 1d |
| 258 |  | Criar EL-IBD_013 – Interface do Mapeamento de Banco de Dados de "Configuração de Percentuais e Repasse" | 1d? | 2026-06-09 | 2026-06-09 | 1d |
| 259 |  | Integrar EL-I_013 – "Configuração de Percentuais e Repasse" | 1d? | 2026-06-09 | 2026-06-09 | 1d |
| 260 | 1.3.2.3 | **"Gestão de painel jurídico"** | 2d? | 2026-06-09 | 2026-06-10 | 0d |
| 261 |  | Implementar EL-CMC_014 – Classes, Métodos e Componentes de "Gestão de painel jurídico" | 2d? | 2026-06-09 | 2026-06-10 | 0d |
| 262 |  | Implementar EL-FUX_014 – Front-UX de "Gestão de painel jurídico" | 2d? | 2026-06-09 | 2026-06-10 | 0d |
| 263 |  | Identificar EL-API_014 – APIs de "Gestão de painel jurídico" | 1d? | 2026-06-09 | 2026-06-09 | 1d |
| 264 |  | Criar EL-IBD_014 – Interface do Mapeamento de Banco de Dados de "Gestão de painel jurídico" | 1d? | 2026-06-09 | 2026-06-09 | 1d |
| 265 |  | Integrar EL-I_014 – "Gestão de painel jurídico" | 1d? | 2026-06-09 | 2026-06-09 | 1d |
| 266 | 1.3.2.4 | **"Cadastro do documento do profissional"** | 2d? | 2026-06-09 | 2026-06-10 | 0d |
| 267 |  | Implementar EL-CMC_015 – Classes, Métodos e Componentes de "Cadastro do documento do profissional" | 2d? | 2026-06-09 | 2026-06-10 | 0d |
| 268 |  | Implementar EL-FUX_015 – Front-UX de "Cadastro do documento do profissional" | 2d? | 2026-06-09 | 2026-06-10 | 0d |
| 269 |  | Identificar EL-API_015 – APIs de "Cadastro do documento do profissional" | 1d? | 2026-06-09 | 2026-06-09 | 1d |
| 270 |  | Criar EL-IBD_015 – Interface do Mapeamento de Banco de Dados de "Cadastro do documento do profissional" | 1d? | 2026-06-09 | 2026-06-09 | 1d |
| 271 |  | Integrar EL-I_015 – "Cadastro do documento do profissional" | 1d? | 2026-06-09 | 2026-06-09 | 1d |
| 272 | 1.3.2.5 | **"Gestão de relatórios financeiros"** | 2d? | 2026-06-09 | 2026-06-10 | 0d |
| 273 |  | Implementar EL-CMC_016 – Classes, Métodos e Componentes de "Gestão de relatórios financeiros" | 2d? | 2026-06-09 | 2026-06-10 | 0d |
| 274 |  | Implementar EL-FUX_016 – Front-UX de "Gestão de relatórios financeiros" | 2d? | 2026-06-09 | 2026-06-10 | 0d |
| 275 |  | Identificar EL-API_016 – APIs de "Gestão de relatórios financeiros" | 1d? | 2026-06-09 | 2026-06-09 | 1d |
| 276 |  | Criar EL-IBD_016 – Interface do Mapeamento de Banco de Dados de "Gestão de relatórios financeiros" | 1d? | 2026-06-09 | 2026-06-09 | 1d |
| 277 |  | Integrar EL-I_016 – "Gestão de relatórios financeiros" | 1d? | 2026-06-09 | 2026-06-09 | 1d |
| 278 | 1.3.3 | **Testes** | 1d? | 2026-06-09 | 2026-06-09 | 1d |
| 279 | 1.3.3.1 | **"Controle de pagamento"** | 1d? | 2026-06-09 | 2026-06-09 | 1d |
| 280 |  | Implementar EL-TC_012 – Casos de Teste de "Controle de pagamento" | 1d? | 2026-06-09 | 2026-06-09 | 1d |

| ID | WBS | Task | Duration | Start | Finish | Total float |
| --- | --- | --- | --- | --- | --- | --- |
| 281 |  | Executar EL-T_012 – Testes de "Controle de pagamento" | 1d? | 2026-06-09 | 2026-06-09 | 1d |
| 282 |  | Registrar EL-LT_012 – Logs de Teste de "Controle de pagamento" | 0.5d? | 2026-06-09 | 2026-06-09 | 1.5d |
| 283 |  | Executar EL-TH_012 – Testes de Homologação de "Controle de pagamento" | 1d? | 2026-06-09 | 2026-06-09 | 1d |
| 284 | 1.3.3.2 | **"Configuração de Percentuais e Repasse"** | 1d? | 2026-06-09 | 2026-06-09 | 1d |
| 285 |  | Implementar EL-TC_013 – Casos de Teste de "Configuração de Percentuais e Repasse" | 1d? | 2026-06-09 | 2026-06-09 | 1d |
| 286 |  | Executar EL-T_013 – Testes de "Configuração de Percentuais e Repasse" | 1d? | 2026-06-09 | 2026-06-09 | 1d |
| 287 |  | Registrar EL-LT_013 – Logs de Teste de "Configuração de Percentuais e Repasse" | 0.5d? | 2026-06-09 | 2026-06-09 | 1.5d |
| 288 |  | Executar EL-TH_013 – Testes de Homologação de "Configuração de Percentuais e Repasse" | 1d? | 2026-06-09 | 2026-06-09 | 1d |
| 289 | 1.3.3.3 | **"Gestão de painel jurídico"** | 1d? | 2026-06-09 | 2026-06-09 | 1d |
| 290 |  | Implementar EL-TC_014 – Casos de Teste de "Gestão de painel jurídico" | 1d? | 2026-06-09 | 2026-06-09 | 1d |
| 291 |  | Executar EL-T_014 – Testes de "Gestão de painel jurídico" | 1d? | 2026-06-09 | 2026-06-09 | 1d |
| 292 |  | Registrar EL-LT_014 – Logs de Teste de "Gestão de painel jurídico" | 0.5d? | 2026-06-09 | 2026-06-09 | 1.5d |
| 293 |  | Executar EL-TH_014 – Testes de Homologação de "Gestão de painel jurídico" | 1d? | 2026-06-09 | 2026-06-09 | 1d |
| 294 | 1.3.3.4 | **"Cadastro do documento do profissional"** | 1d? | 2026-06-09 | 2026-06-09 | 1d |
| 295 |  | Implementar EL-TC_015 – Casos de Teste de "Cadastro do documento do profissional" | 1d? | 2026-06-09 | 2026-06-09 | 1d |
| 296 |  | Executar EL-T_015 – Testes de "Cadastro do documento do profissional" | 1d? | 2026-06-09 | 2026-06-09 | 1d |
| 297 |  | Registrar EL-LT_015 – Logs de Teste de "Cadastro do documento do profissional" | 0.5d? | 2026-06-09 | 2026-06-09 | 1.5d |
| 298 |  | Executar EL-TH_015 – Testes de Homologação de "Cadastro do documento do profissional" | 1d? | 2026-06-09 | 2026-06-09 | 1d |
| 299 | 1.3.3.5 | **"Gestão de relatórios financeiros"** | 1d? | 2026-06-09 | 2026-06-09 | 1d |
| 300 |  | Implementar EL-TC_016 – Casos de Teste de "Gestão de relatórios financeiros" | 1d? | 2026-06-09 | 2026-06-09 | 1d |
| 301 |  | Executar EL-T_016 – Testes de "Gestão de relatórios financeiros" | 1d? | 2026-06-09 | 2026-06-09 | 1d |
| 302 |  | Registrar EL-LT_016 – Logs de Teste de "Gestão de relatórios financeiros" | 0.5d? | 2026-06-09 | 2026-06-09 | 1.5d |
| 303 |  | Executar EL-TH_016 – Testes de Homologação de "Gestão de relatórios financeiros" | 1d? | 2026-06-09 | 2026-06-09 | 1d |
| 304 |  | ★ Marco da Entrega da Iteração 03 | 0d? | 2026-06-09 | 2026-06-09 | 2d |

## Version 2 (saved 2026-06-08, file Cronograma_Elora_WB.mpp)

Note of the change: Merge a26e98e6295125fc00b796a95f8d23998858f8b5 into 7d3e57d2ccf8c8a450d8a9a7f2fd930d07deae7a

Last finish 2026-06-10 → 2026-06-02 (-8d).

Changed:

| ID | Task | Start | Finish | Duration | Total float | Predecessors | Other |
| --- | --- | --- | --- | --- | --- | --- | --- |
| 1 | **Elora** | 2026-06-09 → 2026-05-29 (-11d) | 2026-06-10 → 2026-06-02 (-8d) | 2d? → 3d? |  |  |  |
| 2 | **Iteração 01** | 2026-06-09 → 2026-05-29 (-11d) | 2026-06-10 → 2026-06-02 (-8d) | 2d? → 3d? |  |  |  |
| 3 | **Modelagem** | 2026-06-09 → 2026-05-29 (-11d) | 2026-06-09 → 2026-06-02 (-7d) | 1d? → 3d? | 1d → 0d |  |  |
| 4 | **"Modelo de análise"** | 2026-06-09 → 2026-05-29 (-11d) | 2026-06-09 → 2026-06-02 (-7d) | 1d? → 3d? | 1d → 0d |  |  |
| 5 | Elaborar EL-UCD_001 – Diagrama de Caso de Uso de "Modelo de análise" | 2026-06-09 → 2026-05-29 (-11d) | 2026-06-09 → 2026-05-29 (-11d) |  | 1d → 0d |  | resources none → Analista 01 |
| 6 | Redigir EL-UCE_001 – Especificação de Caso de Uso de "Modelo de análise" | 2026-06-09 → 2026-05-29 (-11d) | 2026-06-09 → 2026-05-29 (-11d) |  | 1d → 0d | none → 5SS | resources none → Analista 02 |
| 7 | Elaborar EL-CD_001 – Diagrama de Classes de "Modelo de análise" | 2026-06-09 → 2026-06-01 (-8d) | 2026-06-09 → 2026-06-01 (-8d) |  | 1d → 0d | none → 6 | resources none → Analista 03 |
| 8 | Elaborar EL-MER_001 – Modelo Entidade Relacionamento de "Modelo de análise" | 2026-06-09 → 2026-06-01 (-8d) | 2026-06-09 → 2026-06-01 (-8d) |  | 1d → 0d | none → 7SS | resources none → Analista 02 |
| 9 | Gerar EL-Script_001 – Esquema/Script de "Modelo de análise" | 2026-06-09 → 2026-06-02 (-7d) | 2026-06-09 → 2026-06-02 (-7d) |  | 1.5d → 0d | none → 8 | resources none → Analista 03 |
| 10 | Elaborar EL-DBD_001 – Documentação de Banco de Dados de "Modelo de análise" | 2026-06-09 → 2026-06-02 (-7d) | 2026-06-09 → 2026-06-02 (-7d) |  | 1.5d → 0d | none → 9 | resources none → Analista 03 |
| 11 | **"Controle de acesso"** | 2026-06-09 → 2026-05-29 (-11d) | 2026-06-09 → 2026-05-29 (-11d) |  | 1d → 2d |  |  |
| 12 | Elaborar EL-UCD_002 – Diagrama de Caso de Uso de "Controle de acesso" | 2026-06-09 → 2026-05-29 (-11d) | 2026-06-09 → 2026-05-29 (-11d) |  | 1d → 2d |  |  |
| 13 | Redigir EL-UCE_002 – Especificação de Caso de Uso de "Controle de acesso" | 2026-06-09 → 2026-05-29 (-11d) | 2026-06-09 → 2026-05-29 (-11d) |  | 1d → 2d |  | resources none → Dev 01 |
| 14 | Elaborar EL-CD_002 – Diagrama de Classes de "Controle de acesso" | 2026-06-09 → 2026-05-29 (-11d) | 2026-06-09 → 2026-05-29 (-11d) |  | 1d → 2d |  | resources none → Dev 01 |
| 15 | Elaborar EL-MER_002 – Modelo Entidade Relacionamento de "Controle de acesso" | 2026-06-09 → 2026-05-29 (-11d) | 2026-06-09 → 2026-05-29 (-11d) |  | 1d → 2d |  | resources none → Dev 01 |
| 16 | Gerar EL-Script_002 – Esquema/Script de "Controle de acesso" | 2026-06-09 → 2026-05-29 (-11d) | 2026-06-09 → 2026-05-29 (-11d) |  | 1.5d → 2.5d |  | resources none → Dev 01 |
| 17 | Elaborar EL-DBD_002 – Documentação de Banco de Dados de "Controle de acesso" | 2026-06-09 → 2026-05-29 (-11d) | 2026-06-09 → 2026-05-29 (-11d) |  | 1.5d → 2.5d |  | resources none → Dev 01 |
| 18 | **"Cadastro de usuário"** | 2026-06-09 → 2026-05-29 (-11d) | 2026-06-09 → 2026-05-29 (-11d) |  | 1d → 2d |  |  |
| 19 | Elaborar EL-UCD_003 – Diagrama de Caso de Uso de "Cadastro de usuário" | 2026-06-09 → 2026-05-29 (-11d) | 2026-06-09 → 2026-05-29 (-11d) |  | 1d → 2d |  | resources none → Dev 01 |
| 20 | Redigir EL-UCE_003 – Especificação de Caso de Uso de "Cadastro de usuário" | 2026-06-09 → 2026-05-29 (-11d) | 2026-06-09 → 2026-05-29 (-11d) |  | 1d → 2d |  | resources none → Dev 01 |
| 21 | Elaborar EL-CD_003 – Diagrama de Classes de "Cadastro de usuário" | 2026-06-09 → 2026-05-29 (-11d) | 2026-06-09 → 2026-05-29 (-11d) |  | 1d → 2d |  | resources none → Dev 01 |
| 22 | Elaborar EL-MER_003 – Modelo Entidade Relacionamento de "Cadastro de usuário" | 2026-06-09 → 2026-05-29 (-11d) | 2026-06-09 → 2026-05-29 (-11d) |  | 1d → 2d |  | resources none → Dev 01 |
| 23 | Gerar EL-Script_003 – Esquema/Script de "Cadastro de usuário" | 2026-06-09 → 2026-05-29 (-11d) | 2026-06-09 → 2026-05-29 (-11d) |  | 1.5d → 2.5d |  | resources none → Dev 01 |
| 24 | Elaborar EL-DBD_003 – Documentação de Banco de Dados de "Cadastro de usuário" | 2026-06-09 → 2026-05-29 (-11d) | 2026-06-09 → 2026-05-29 (-11d) |  | 1.5d → 2.5d |  | resources none → Dev 01 |
| 25 | **"Gestão de pagamento"** | 2026-06-09 → 2026-05-29 (-11d) | 2026-06-09 → 2026-05-29 (-11d) |  | 1d → 2d |  |  |
| 26 | Elaborar EL-UCD_004 – Diagrama de Caso de Uso de "Gestão de pagamento" | 2026-06-09 → 2026-05-29 (-11d) | 2026-06-09 → 2026-05-29 (-11d) |  | 1d → 2d |  | resources none → Dev 01 |
| 27 | Redigir EL-UCE_004 – Especificação de Caso de Uso de "Gestão de pagamento" | 2026-06-09 → 2026-05-29 (-11d) | 2026-06-09 → 2026-05-29 (-11d) |  | 1d → 2d |  | resources none → Dev 01 |
| 28 | Elaborar EL-CD_004 – Diagrama de Classes de "Gestão de pagamento" | 2026-06-09 → 2026-05-29 (-11d) | 2026-06-09 → 2026-05-29 (-11d) |  | 1d → 2d |  | resources none → Dev 01 |
| 29 | Elaborar EL-MER_004 – Modelo Entidade Relacionamento de "Gestão de pagamento" | 2026-06-09 → 2026-05-29 (-11d) | 2026-06-09 → 2026-05-29 (-11d) |  | 1d → 2d |  | resources none → Dev 01 |
| 30 | Gerar EL-Script_004 – Esquema/Script de "Gestão de pagamento" | 2026-06-09 → 2026-05-29 (-11d) | 2026-06-09 → 2026-05-29 (-11d) |  | 1.5d → 2.5d |  | resources none → Dev 01 |
| 31 | Elaborar EL-DBD_004 – Documentação de Banco de Dados de "Gestão de pagamento" | 2026-06-09 → 2026-05-29 (-11d) | 2026-06-09 → 2026-05-29 (-11d) |  | 1.5d → 2.5d |  | resources none → Dev 01 |
| 32 | **Construção** | 2026-06-09 → 2026-05-29 (-11d) | 2026-06-10 → 2026-06-01 (-9d) |  | 0d → 1d |  |  |
| 33 | **"Modelo de análise"** | 2026-06-09 → 2026-05-29 (-11d) | 2026-06-10 → 2026-06-01 (-9d) |  | 0d → 1d |  |  |
| 34 | Implementar EL-CMC_001 – Classes, Métodos e Componentes de "Modelo de análise" | 2026-06-09 → 2026-05-29 (-11d) | 2026-06-10 → 2026-06-01 (-9d) |  | 0d → 1d |  |  |
| 35 | Implementar EL-FUX_001 – Front-UX de "Modelo de análise" | 2026-06-09 → 2026-05-29 (-11d) | 2026-06-10 → 2026-06-01 (-9d) |  | 0d → 1d |  |  |
| 36 | Identificar EL-API_001 – APIs de "Modelo de análise" | 2026-06-09 → 2026-05-29 (-11d) | 2026-06-09 → 2026-05-29 (-11d) |  | 1d → 2d |  |  |
| 37 | Criar EL-IBD_001 – Interface do Mapeamento de Banco de Dados de "Modelo de análise" | 2026-06-09 → 2026-05-29 (-11d) | 2026-06-09 → 2026-05-29 (-11d) |  | 1d → 2d |  |  |
| 38 | Integrar EL-I_001 – "Modelo de análise" | 2026-06-09 → 2026-05-29 (-11d) | 2026-06-09 → 2026-05-29 (-11d) |  | 1d → 2d |  |  |
| 39 | **"Controle de acesso"** | 2026-06-09 → 2026-05-29 (-11d) | 2026-06-10 → 2026-06-01 (-9d) |  | 0d → 1d |  |  |
| 40 | Implementar EL-CMC_002 – Classes, Métodos e Componentes de "Controle de acesso" | 2026-06-09 → 2026-05-29 (-11d) | 2026-06-10 → 2026-06-01 (-9d) |  | 0d → 1d |  |  |
| 41 | Implementar EL-FUX_002 – Front-UX de "Controle de acesso" | 2026-06-09 → 2026-05-29 (-11d) | 2026-06-10 → 2026-06-01 (-9d) |  | 0d → 1d |  |  |
| 42 | Identificar EL-API_002 – APIs de "Controle de acesso" | 2026-06-09 → 2026-05-29 (-11d) | 2026-06-09 → 2026-05-29 (-11d) |  | 1d → 2d |  |  |
| 43 | Criar EL-IBD_002 – Interface do Mapeamento de Banco de Dados de "Controle de acesso" | 2026-06-09 → 2026-05-29 (-11d) | 2026-06-09 → 2026-05-29 (-11d) |  | 1d → 2d |  |  |
| 44 | Integrar EL-I_002 – "Controle de acesso" | 2026-06-09 → 2026-05-29 (-11d) | 2026-06-09 → 2026-05-29 (-11d) |  | 1d → 2d |  |  |
| 45 | **"Cadastro de usuário"** | 2026-06-09 → 2026-05-29 (-11d) | 2026-06-10 → 2026-06-01 (-9d) |  | 0d → 1d |  |  |
| 46 | Implementar EL-CMC_003 – Classes, Métodos e Componentes de "Cadastro de usuário" | 2026-06-09 → 2026-05-29 (-11d) | 2026-06-10 → 2026-06-01 (-9d) |  | 0d → 1d |  |  |
| 47 | Implementar EL-FUX_003 – Front-UX de "Cadastro de usuário" | 2026-06-09 → 2026-05-29 (-11d) | 2026-06-10 → 2026-06-01 (-9d) |  | 0d → 1d |  |  |
| 48 | Identificar EL-API_003 – APIs de "Cadastro de usuário" | 2026-06-09 → 2026-05-29 (-11d) | 2026-06-09 → 2026-05-29 (-11d) |  | 1d → 2d |  |  |
| 49 | Criar EL-IBD_003 – Interface do Mapeamento de Banco de Dados de "Cadastro de usuário" | 2026-06-09 → 2026-05-29 (-11d) | 2026-06-09 → 2026-05-29 (-11d) |  | 1d → 2d |  |  |
| 50 | Integrar EL-I_003 – "Cadastro de usuário" | 2026-06-09 → 2026-05-29 (-11d) | 2026-06-09 → 2026-05-29 (-11d) |  | 1d → 2d |  |  |
| 51 | **"Gestão de pagamento"** | 2026-06-09 → 2026-05-29 (-11d) | 2026-06-10 → 2026-06-01 (-9d) |  | 0d → 1d |  |  |
| 52 | Implementar EL-CMC_004 – Classes, Métodos e Componentes de "Gestão de pagamento" | 2026-06-09 → 2026-05-29 (-11d) | 2026-06-10 → 2026-06-01 (-9d) |  | 0d → 1d |  |  |
| 53 | Implementar EL-FUX_004 – Front-UX de "Gestão de pagamento" | 2026-06-09 → 2026-05-29 (-11d) | 2026-06-10 → 2026-06-01 (-9d) |  | 0d → 1d |  |  |
| 54 | Identificar EL-API_004 – APIs de "Gestão de pagamento" | 2026-06-09 → 2026-05-29 (-11d) | 2026-06-09 → 2026-05-29 (-11d) |  | 1d → 2d |  |  |
| 55 | Criar EL-IBD_004 – Interface do Mapeamento de Banco de Dados de "Gestão de pagamento" | 2026-06-09 → 2026-05-29 (-11d) | 2026-06-09 → 2026-05-29 (-11d) |  | 1d → 2d |  |  |
| 56 | Integrar EL-I_004 – "Gestão de pagamento" | 2026-06-09 → 2026-05-29 (-11d) | 2026-06-09 → 2026-05-29 (-11d) |  | 1d → 2d |  |  |
| 57 | **Testes** | 2026-06-09 → 2026-05-29 (-11d) | 2026-06-09 → 2026-05-29 (-11d) |  | 1d → 2d |  |  |
| 58 | **"Modelo de análise"** | 2026-06-09 → 2026-05-29 (-11d) | 2026-06-09 → 2026-05-29 (-11d) |  | 1d → 2d |  |  |
| 59 | Implementar EL-TC_001 – Casos de Teste de "Modelo de análise" | 2026-06-09 → 2026-05-29 (-11d) | 2026-06-09 → 2026-05-29 (-11d) |  | 1d → 2d |  |  |
| 60 | Executar EL-T_001 – Testes de "Modelo de análise" | 2026-06-09 → 2026-05-29 (-11d) | 2026-06-09 → 2026-05-29 (-11d) |  | 1d → 2d |  |  |
| 61 | Registrar EL-LT_001 – Logs de Teste de "Modelo de análise" | 2026-06-09 → 2026-05-29 (-11d) | 2026-06-09 → 2026-05-29 (-11d) |  | 1.5d → 2.5d |  |  |
| 62 | Executar EL-TH_001 – Testes de Homologação de "Modelo de análise" | 2026-06-09 → 2026-05-29 (-11d) | 2026-06-09 → 2026-05-29 (-11d) |  | 1d → 2d |  |  |
| 63 | **"Controle de acesso"** | 2026-06-09 → 2026-05-29 (-11d) | 2026-06-09 → 2026-05-29 (-11d) |  | 1d → 2d |  |  |
| 64 | Implementar EL-TC_002 – Casos de Teste de "Controle de acesso" | 2026-06-09 → 2026-05-29 (-11d) | 2026-06-09 → 2026-05-29 (-11d) |  | 1d → 2d |  |  |
| 65 | Executar EL-T_002 – Testes de "Controle de acesso" | 2026-06-09 → 2026-05-29 (-11d) | 2026-06-09 → 2026-05-29 (-11d) |  | 1d → 2d |  |  |
| 66 | Registrar EL-LT_002 – Logs de Teste de "Controle de acesso" | 2026-06-09 → 2026-05-29 (-11d) | 2026-06-09 → 2026-05-29 (-11d) |  | 1.5d → 2.5d |  |  |
| 67 | Executar EL-TH_002 – Testes de Homologação de "Controle de acesso" | 2026-06-09 → 2026-05-29 (-11d) | 2026-06-09 → 2026-05-29 (-11d) |  | 1d → 2d |  |  |
| 68 | **"Cadastro de usuário"** | 2026-06-09 → 2026-05-29 (-11d) | 2026-06-09 → 2026-05-29 (-11d) |  | 1d → 2d |  |  |
| 69 | Implementar EL-TC_003 – Casos de Teste de "Cadastro de usuário" | 2026-06-09 → 2026-05-29 (-11d) | 2026-06-09 → 2026-05-29 (-11d) |  | 1d → 2d |  |  |
| 70 | Executar EL-T_003 – Testes de "Cadastro de usuário" | 2026-06-09 → 2026-05-29 (-11d) | 2026-06-09 → 2026-05-29 (-11d) |  | 1d → 2d |  |  |

| ID | Task | Start | Finish | Total float |
| --- | --- | --- | --- | --- |
| 71 | Registrar EL-LT_003 – Logs de Teste de "Cadastro de usuário" | 2026-06-09 → 2026-05-29 (-11d) | 2026-06-09 → 2026-05-29 (-11d) | 1.5d → 2.5d |
| 72 | Executar EL-TH_003 – Testes de Homologação de "Cadastro de usuário" | 2026-06-09 → 2026-05-29 (-11d) | 2026-06-09 → 2026-05-29 (-11d) | 1d → 2d |
| 73 | **"Gestão de pagamento"** | 2026-06-09 → 2026-05-29 (-11d) | 2026-06-09 → 2026-05-29 (-11d) | 1d → 2d |
| 74 | Implementar EL-TC_004 – Casos de Teste de "Gestão de pagamento" | 2026-06-09 → 2026-05-29 (-11d) | 2026-06-09 → 2026-05-29 (-11d) | 1d → 2d |
| 75 | Executar EL-T_004 – Testes de "Gestão de pagamento" | 2026-06-09 → 2026-05-29 (-11d) | 2026-06-09 → 2026-05-29 (-11d) | 1d → 2d |
| 76 | Registrar EL-LT_004 – Logs de Teste de "Gestão de pagamento" | 2026-06-09 → 2026-05-29 (-11d) | 2026-06-09 → 2026-05-29 (-11d) | 1.5d → 2.5d |
| 77 | Executar EL-TH_004 – Testes de Homologação de "Gestão de pagamento" | 2026-06-09 → 2026-05-29 (-11d) | 2026-06-09 → 2026-05-29 (-11d) | 1d → 2d |
| 78 | ★ Marco da Entrega da Iteração 01 | 2026-06-09 → 2026-05-29 (-11d) | 2026-06-09 → 2026-05-29 (-11d) | 2d → 3d |
| 79 | **Iteração 02** | 2026-06-09 → 2026-05-29 (-11d) | 2026-06-10 → 2026-06-01 (-9d) | 0d → 1d |
| 80 | **Modelagem** | 2026-06-09 → 2026-05-29 (-11d) | 2026-06-09 → 2026-05-29 (-11d) | 1d → 2d |
| 81 | **"Nível de acesso ao sistema"** | 2026-06-09 → 2026-05-29 (-11d) | 2026-06-09 → 2026-05-29 (-11d) | 1d → 2d |
| 82 | Elaborar EL-UCD_005 – Diagrama de Caso de Uso de "Nível de acesso ao sistema" | 2026-06-09 → 2026-05-29 (-11d) | 2026-06-09 → 2026-05-29 (-11d) | 1d → 2d |
| 83 | Redigir EL-UCE_005 – Especificação de Caso de Uso de "Nível de acesso ao sistema" | 2026-06-09 → 2026-05-29 (-11d) | 2026-06-09 → 2026-05-29 (-11d) | 1d → 2d |
| 84 | Elaborar EL-CD_005 – Diagrama de Classes de "Nível de acesso ao sistema" | 2026-06-09 → 2026-05-29 (-11d) | 2026-06-09 → 2026-05-29 (-11d) | 1d → 2d |
| 85 | Elaborar EL-MER_005 – Modelo Entidade Relacionamento de "Nível de acesso ao sistema" | 2026-06-09 → 2026-05-29 (-11d) | 2026-06-09 → 2026-05-29 (-11d) | 1d → 2d |
| 86 | Gerar EL-Script_005 – Esquema/Script de "Nível de acesso ao sistema" | 2026-06-09 → 2026-05-29 (-11d) | 2026-06-09 → 2026-05-29 (-11d) | 1.5d → 2.5d |
| 87 | Elaborar EL-DBD_005 – Documentação de Banco de Dados de "Nível de acesso ao sistema" | 2026-06-09 → 2026-05-29 (-11d) | 2026-06-09 → 2026-05-29 (-11d) | 1.5d → 2.5d |
| 88 | **"Cadastro de profissionais"** | 2026-06-09 → 2026-05-29 (-11d) | 2026-06-09 → 2026-05-29 (-11d) | 1d → 2d |
| 89 | Elaborar EL-UCD_006 – Diagrama de Caso de Uso de "Cadastro de profissionais" | 2026-06-09 → 2026-05-29 (-11d) | 2026-06-09 → 2026-05-29 (-11d) | 1d → 2d |
| 90 | Redigir EL-UCE_006 – Especificação de Caso de Uso de "Cadastro de profissionais" | 2026-06-09 → 2026-05-29 (-11d) | 2026-06-09 → 2026-05-29 (-11d) | 1d → 2d |
| 91 | Elaborar EL-CD_006 – Diagrama de Classes de "Cadastro de profissionais" | 2026-06-09 → 2026-05-29 (-11d) | 2026-06-09 → 2026-05-29 (-11d) | 1d → 2d |
| 92 | Elaborar EL-MER_006 – Modelo Entidade Relacionamento de "Cadastro de profissionais" | 2026-06-09 → 2026-05-29 (-11d) | 2026-06-09 → 2026-05-29 (-11d) | 1d → 2d |
| 93 | Gerar EL-Script_006 – Esquema/Script de "Cadastro de profissionais" | 2026-06-09 → 2026-05-29 (-11d) | 2026-06-09 → 2026-05-29 (-11d) | 1.5d → 2.5d |
| 94 | Elaborar EL-DBD_006 – Documentação de Banco de Dados de "Cadastro de profissionais" | 2026-06-09 → 2026-05-29 (-11d) | 2026-06-09 → 2026-05-29 (-11d) | 1.5d → 2.5d |
| 95 | **"Definição de taxa de serviço"** | 2026-06-09 → 2026-05-29 (-11d) | 2026-06-09 → 2026-05-29 (-11d) | 1d → 2d |
| 96 | Elaborar EL-UCD_007 – Diagrama de Caso de Uso de "Definição de taxa de serviço" | 2026-06-09 → 2026-05-29 (-11d) | 2026-06-09 → 2026-05-29 (-11d) | 1d → 2d |
| 97 | Redigir EL-UCE_007 – Especificação de Caso de Uso de "Definição de taxa de serviço" | 2026-06-09 → 2026-05-29 (-11d) | 2026-06-09 → 2026-05-29 (-11d) | 1d → 2d |
| 98 | Elaborar EL-CD_007 – Diagrama de Classes de "Definição de taxa de serviço" | 2026-06-09 → 2026-05-29 (-11d) | 2026-06-09 → 2026-05-29 (-11d) | 1d → 2d |
| 99 | Elaborar EL-MER_007 – Modelo Entidade Relacionamento de "Definição de taxa de serviço" | 2026-06-09 → 2026-05-29 (-11d) | 2026-06-09 → 2026-05-29 (-11d) | 1d → 2d |
| 100 | Gerar EL-Script_007 – Esquema/Script de "Definição de taxa de serviço" | 2026-06-09 → 2026-05-29 (-11d) | 2026-06-09 → 2026-05-29 (-11d) | 1.5d → 2.5d |
| 101 | Elaborar EL-DBD_007 – Documentação de Banco de Dados de "Definição de taxa de serviço" | 2026-06-09 → 2026-05-29 (-11d) | 2026-06-09 → 2026-05-29 (-11d) | 1.5d → 2.5d |
| 102 | **"Controle de assinatura de contrato"** | 2026-06-09 → 2026-05-29 (-11d) | 2026-06-09 → 2026-05-29 (-11d) | 1d → 2d |
| 103 | Elaborar EL-UCD_008 – Diagrama de Caso de Uso de "Controle de assinatura de contrato" | 2026-06-09 → 2026-05-29 (-11d) | 2026-06-09 → 2026-05-29 (-11d) | 1d → 2d |
| 104 | Redigir EL-UCE_008 – Especificação de Caso de Uso de "Controle de assinatura de contrato" | 2026-06-09 → 2026-05-29 (-11d) | 2026-06-09 → 2026-05-29 (-11d) | 1d → 2d |
| 105 | Elaborar EL-CD_008 – Diagrama de Classes de "Controle de assinatura de contrato" | 2026-06-09 → 2026-05-29 (-11d) | 2026-06-09 → 2026-05-29 (-11d) | 1d → 2d |
| 106 | Elaborar EL-MER_008 – Modelo Entidade Relacionamento de "Controle de assinatura de contrato" | 2026-06-09 → 2026-05-29 (-11d) | 2026-06-09 → 2026-05-29 (-11d) | 1d → 2d |
| 107 | Gerar EL-Script_008 – Esquema/Script de "Controle de assinatura de contrato" | 2026-06-09 → 2026-05-29 (-11d) | 2026-06-09 → 2026-05-29 (-11d) | 1.5d → 2.5d |
| 108 | Elaborar EL-DBD_008 – Documentação de Banco de Dados de "Controle de assinatura de contrato" | 2026-06-09 → 2026-05-29 (-11d) | 2026-06-09 → 2026-05-29 (-11d) | 1.5d → 2.5d |
| 109 | **"Proposta de contrato"** | 2026-06-09 → 2026-05-29 (-11d) | 2026-06-09 → 2026-05-29 (-11d) | 1d → 2d |
| 110 | Elaborar EL-UCD_009 – Diagrama de Caso de Uso de "Proposta de contrato" | 2026-06-09 → 2026-05-29 (-11d) | 2026-06-09 → 2026-05-29 (-11d) | 1d → 2d |
| 111 | Redigir EL-UCE_009 – Especificação de Caso de Uso de "Proposta de contrato" | 2026-06-09 → 2026-05-29 (-11d) | 2026-06-09 → 2026-05-29 (-11d) | 1d → 2d |
| 112 | Elaborar EL-CD_009 – Diagrama de Classes de "Proposta de contrato" | 2026-06-09 → 2026-05-29 (-11d) | 2026-06-09 → 2026-05-29 (-11d) | 1d → 2d |
| 113 | Elaborar EL-MER_009 – Modelo Entidade Relacionamento de "Proposta de contrato" | 2026-06-09 → 2026-05-29 (-11d) | 2026-06-09 → 2026-05-29 (-11d) | 1d → 2d |
| 114 | Gerar EL-Script_009 – Esquema/Script de "Proposta de contrato" | 2026-06-09 → 2026-05-29 (-11d) | 2026-06-09 → 2026-05-29 (-11d) | 1.5d → 2.5d |
| 115 | Elaborar EL-DBD_009 – Documentação de Banco de Dados de "Proposta de contrato" | 2026-06-09 → 2026-05-29 (-11d) | 2026-06-09 → 2026-05-29 (-11d) | 1.5d → 2.5d |
| 116 | **"Busca de profissionais"** | 2026-06-09 → 2026-05-29 (-11d) | 2026-06-09 → 2026-05-29 (-11d) | 1d → 2d |
| 117 | Elaborar EL-UCD_010 – Diagrama de Caso de Uso de "Busca de profissionais" | 2026-06-09 → 2026-05-29 (-11d) | 2026-06-09 → 2026-05-29 (-11d) | 1d → 2d |
| 118 | Redigir EL-UCE_010 – Especificação de Caso de Uso de "Busca de profissionais" | 2026-06-09 → 2026-05-29 (-11d) | 2026-06-09 → 2026-05-29 (-11d) | 1d → 2d |
| 119 | Elaborar EL-CD_010 – Diagrama de Classes de "Busca de profissionais" | 2026-06-09 → 2026-05-29 (-11d) | 2026-06-09 → 2026-05-29 (-11d) | 1d → 2d |
| 120 | Elaborar EL-MER_010 – Modelo Entidade Relacionamento de "Busca de profissionais" | 2026-06-09 → 2026-05-29 (-11d) | 2026-06-09 → 2026-05-29 (-11d) | 1d → 2d |
| 121 | Gerar EL-Script_010 – Esquema/Script de "Busca de profissionais" | 2026-06-09 → 2026-05-29 (-11d) | 2026-06-09 → 2026-05-29 (-11d) | 1.5d → 2.5d |
| 122 | Elaborar EL-DBD_010 – Documentação de Banco de Dados de "Busca de profissionais" | 2026-06-09 → 2026-05-29 (-11d) | 2026-06-09 → 2026-05-29 (-11d) | 1.5d → 2.5d |
| 123 | **"Gerenciamento de escala de trabalho"** | 2026-06-09 → 2026-05-29 (-11d) | 2026-06-09 → 2026-05-29 (-11d) | 1d → 2d |
| 124 | Elaborar EL-UCD_011 – Diagrama de Caso de Uso de "Gerenciamento de escala de trabalho" | 2026-06-09 → 2026-05-29 (-11d) | 2026-06-09 → 2026-05-29 (-11d) | 1d → 2d |
| 125 | Redigir EL-UCE_011 – Especificação de Caso de Uso de "Gerenciamento de escala de trabalho" | 2026-06-09 → 2026-05-29 (-11d) | 2026-06-09 → 2026-05-29 (-11d) | 1d → 2d |
| 126 | Elaborar EL-CD_011 – Diagrama de Classes de "Gerenciamento de escala de trabalho" | 2026-06-09 → 2026-05-29 (-11d) | 2026-06-09 → 2026-05-29 (-11d) | 1d → 2d |
| 127 | Elaborar EL-MER_011 – Modelo Entidade Relacionamento de "Gerenciamento de escala de trabalho" | 2026-06-09 → 2026-05-29 (-11d) | 2026-06-09 → 2026-05-29 (-11d) | 1d → 2d |
| 128 | Gerar EL-Script_011 – Esquema/Script de "Gerenciamento de escala de trabalho" | 2026-06-09 → 2026-05-29 (-11d) | 2026-06-09 → 2026-05-29 (-11d) | 1.5d → 2.5d |
| 129 | Elaborar EL-DBD_011 – Documentação de Banco de Dados de "Gerenciamento de escala de trabalho" | 2026-06-09 → 2026-05-29 (-11d) | 2026-06-09 → 2026-05-29 (-11d) | 1.5d → 2.5d |
| 130 | **Construção** | 2026-06-09 → 2026-05-29 (-11d) | 2026-06-10 → 2026-06-01 (-9d) | 0d → 1d |
| 131 | **"Nível de acesso ao sistema"** | 2026-06-09 → 2026-05-29 (-11d) | 2026-06-10 → 2026-06-01 (-9d) | 0d → 1d |
| 132 | Implementar EL-CMC_005 – Classes, Métodos e Componentes de "Nível de acesso ao sistema" | 2026-06-09 → 2026-05-29 (-11d) | 2026-06-10 → 2026-06-01 (-9d) | 0d → 1d |
| 133 | Implementar EL-FUX_005 – Front-UX de "Nível de acesso ao sistema" | 2026-06-09 → 2026-05-29 (-11d) | 2026-06-10 → 2026-06-01 (-9d) | 0d → 1d |
| 134 | Identificar EL-API_005 – APIs de "Nível de acesso ao sistema" | 2026-06-09 → 2026-05-29 (-11d) | 2026-06-09 → 2026-05-29 (-11d) | 1d → 2d |
| 135 | Criar EL-IBD_005 – Interface do Mapeamento de Banco de Dados de "Nível de acesso ao sistema" | 2026-06-09 → 2026-05-29 (-11d) | 2026-06-09 → 2026-05-29 (-11d) | 1d → 2d |
| 136 | Integrar EL-I_005 – "Nível de acesso ao sistema" | 2026-06-09 → 2026-05-29 (-11d) | 2026-06-09 → 2026-05-29 (-11d) | 1d → 2d |
| 137 | **"Cadastro de profissionais"** | 2026-06-09 → 2026-05-29 (-11d) | 2026-06-10 → 2026-06-01 (-9d) | 0d → 1d |
| 138 | Implementar EL-CMC_006 – Classes, Métodos e Componentes de "Cadastro de profissionais" | 2026-06-09 → 2026-05-29 (-11d) | 2026-06-10 → 2026-06-01 (-9d) | 0d → 1d |
| 139 | Implementar EL-FUX_006 – Front-UX de "Cadastro de profissionais" | 2026-06-09 → 2026-05-29 (-11d) | 2026-06-10 → 2026-06-01 (-9d) | 0d → 1d |
| 140 | Identificar EL-API_006 – APIs de "Cadastro de profissionais" | 2026-06-09 → 2026-05-29 (-11d) | 2026-06-09 → 2026-05-29 (-11d) | 1d → 2d |

| ID | Task | Start | Finish | Total float |
| --- | --- | --- | --- | --- |
| 141 | Criar EL-IBD_006 – Interface do Mapeamento de Banco de Dados de "Cadastro de profissionais" | 2026-06-09 → 2026-05-29 (-11d) | 2026-06-09 → 2026-05-29 (-11d) | 1d → 2d |
| 142 | Integrar EL-I_006 – "Cadastro de profissionais" | 2026-06-09 → 2026-05-29 (-11d) | 2026-06-09 → 2026-05-29 (-11d) | 1d → 2d |
| 143 | **"Definição de taxa de serviço"** | 2026-06-09 → 2026-05-29 (-11d) | 2026-06-10 → 2026-06-01 (-9d) | 0d → 1d |
| 144 | Implementar EL-CMC_007 – Classes, Métodos e Componentes de "Definição de taxa de serviço" | 2026-06-09 → 2026-05-29 (-11d) | 2026-06-10 → 2026-06-01 (-9d) | 0d → 1d |
| 145 | Implementar EL-FUX_007 – Front-UX de "Definição de taxa de serviço" | 2026-06-09 → 2026-05-29 (-11d) | 2026-06-10 → 2026-06-01 (-9d) | 0d → 1d |
| 146 | Identificar EL-API_007 – APIs de "Definição de taxa de serviço" | 2026-06-09 → 2026-05-29 (-11d) | 2026-06-09 → 2026-05-29 (-11d) | 1d → 2d |
| 147 | Criar EL-IBD_007 – Interface do Mapeamento de Banco de Dados de "Definição de taxa de serviço" | 2026-06-09 → 2026-05-29 (-11d) | 2026-06-09 → 2026-05-29 (-11d) | 1d → 2d |
| 148 | Integrar EL-I_007 – "Definição de taxa de serviço" | 2026-06-09 → 2026-05-29 (-11d) | 2026-06-09 → 2026-05-29 (-11d) | 1d → 2d |
| 149 | **"Controle de assinatura de contrato"** | 2026-06-09 → 2026-05-29 (-11d) | 2026-06-10 → 2026-06-01 (-9d) | 0d → 1d |
| 150 | Implementar EL-CMC_008 – Classes, Métodos e Componentes de "Controle de assinatura de contrato" | 2026-06-09 → 2026-05-29 (-11d) | 2026-06-10 → 2026-06-01 (-9d) | 0d → 1d |
| 151 | Implementar EL-FUX_008 – Front-UX de "Controle de assinatura de contrato" | 2026-06-09 → 2026-05-29 (-11d) | 2026-06-10 → 2026-06-01 (-9d) | 0d → 1d |
| 152 | Identificar EL-API_008 – APIs de "Controle de assinatura de contrato" | 2026-06-09 → 2026-05-29 (-11d) | 2026-06-09 → 2026-05-29 (-11d) | 1d → 2d |
| 153 | Criar EL-IBD_008 – Interface do Mapeamento de Banco de Dados de "Controle de assinatura de contrato" | 2026-06-09 → 2026-05-29 (-11d) | 2026-06-09 → 2026-05-29 (-11d) | 1d → 2d |
| 154 | Integrar EL-I_008 – "Controle de assinatura de contrato" | 2026-06-09 → 2026-05-29 (-11d) | 2026-06-09 → 2026-05-29 (-11d) | 1d → 2d |
| 155 | **"Proposta de contrato"** | 2026-06-09 → 2026-05-29 (-11d) | 2026-06-10 → 2026-06-01 (-9d) | 0d → 1d |
| 156 | Implementar EL-CMC_009 – Classes, Métodos e Componentes de "Proposta de contrato" | 2026-06-09 → 2026-05-29 (-11d) | 2026-06-10 → 2026-06-01 (-9d) | 0d → 1d |
| 157 | Implementar EL-FUX_009 – Front-UX de "Proposta de contrato" | 2026-06-09 → 2026-05-29 (-11d) | 2026-06-10 → 2026-06-01 (-9d) | 0d → 1d |
| 158 | Identificar EL-API_009 – APIs de "Proposta de contrato" | 2026-06-09 → 2026-05-29 (-11d) | 2026-06-09 → 2026-05-29 (-11d) | 1d → 2d |
| 159 | Criar EL-IBD_009 – Interface do Mapeamento de Banco de Dados de "Proposta de contrato" | 2026-06-09 → 2026-05-29 (-11d) | 2026-06-09 → 2026-05-29 (-11d) | 1d → 2d |
| 160 | Integrar EL-I_009 – "Proposta de contrato" | 2026-06-09 → 2026-05-29 (-11d) | 2026-06-09 → 2026-05-29 (-11d) | 1d → 2d |
| 161 | **"Busca de profissionais"** | 2026-06-09 → 2026-05-29 (-11d) | 2026-06-10 → 2026-06-01 (-9d) | 0d → 1d |
| 162 | Implementar EL-CMC_010 – Classes, Métodos e Componentes de "Busca de profissionais" | 2026-06-09 → 2026-05-29 (-11d) | 2026-06-10 → 2026-06-01 (-9d) | 0d → 1d |
| 163 | Implementar EL-FUX_010 – Front-UX de "Busca de profissionais" | 2026-06-09 → 2026-05-29 (-11d) | 2026-06-10 → 2026-06-01 (-9d) | 0d → 1d |
| 164 | Identificar EL-API_010 – APIs de "Busca de profissionais" | 2026-06-09 → 2026-05-29 (-11d) | 2026-06-09 → 2026-05-29 (-11d) | 1d → 2d |
| 165 | Criar EL-IBD_010 – Interface do Mapeamento de Banco de Dados de "Busca de profissionais" | 2026-06-09 → 2026-05-29 (-11d) | 2026-06-09 → 2026-05-29 (-11d) | 1d → 2d |
| 166 | Integrar EL-I_010 – "Busca de profissionais" | 2026-06-09 → 2026-05-29 (-11d) | 2026-06-09 → 2026-05-29 (-11d) | 1d → 2d |
| 167 | **"Gerenciamento de escala de trabalho"** | 2026-06-09 → 2026-05-29 (-11d) | 2026-06-10 → 2026-06-01 (-9d) | 0d → 1d |
| 168 | Implementar EL-CMC_011 – Classes, Métodos e Componentes de "Gerenciamento de escala de trabalho" | 2026-06-09 → 2026-05-29 (-11d) | 2026-06-10 → 2026-06-01 (-9d) | 0d → 1d |
| 169 | Implementar EL-FUX_011 – Front-UX de "Gerenciamento de escala de trabalho" | 2026-06-09 → 2026-05-29 (-11d) | 2026-06-10 → 2026-06-01 (-9d) | 0d → 1d |
| 170 | Identificar EL-API_011 – APIs de "Gerenciamento de escala de trabalho" | 2026-06-09 → 2026-05-29 (-11d) | 2026-06-09 → 2026-05-29 (-11d) | 1d → 2d |
| 171 | Criar EL-IBD_011 – Interface do Mapeamento de Banco de Dados de "Gerenciamento de escala de trabalho" | 2026-06-09 → 2026-05-29 (-11d) | 2026-06-09 → 2026-05-29 (-11d) | 1d → 2d |
| 172 | Integrar EL-I_011 – "Gerenciamento de escala de trabalho" | 2026-06-09 → 2026-05-29 (-11d) | 2026-06-09 → 2026-05-29 (-11d) | 1d → 2d |
| 173 | **Testes** | 2026-06-09 → 2026-05-29 (-11d) | 2026-06-09 → 2026-05-29 (-11d) | 1d → 2d |
| 174 | **"Nível de acesso ao sistema"** | 2026-06-09 → 2026-05-29 (-11d) | 2026-06-09 → 2026-05-29 (-11d) | 1d → 2d |
| 175 | Implementar EL-TC_005 – Casos de Teste de "Nível de acesso ao sistema" | 2026-06-09 → 2026-05-29 (-11d) | 2026-06-09 → 2026-05-29 (-11d) | 1d → 2d |
| 176 | Executar EL-T_005 – Testes de "Nível de acesso ao sistema" | 2026-06-09 → 2026-05-29 (-11d) | 2026-06-09 → 2026-05-29 (-11d) | 1d → 2d |
| 177 | Registrar EL-LT_005 – Logs de Teste de "Nível de acesso ao sistema" | 2026-06-09 → 2026-05-29 (-11d) | 2026-06-09 → 2026-05-29 (-11d) | 1.5d → 2.5d |
| 178 | Executar EL-TH_005 – Testes de Homologação de "Nível de acesso ao sistema" | 2026-06-09 → 2026-05-29 (-11d) | 2026-06-09 → 2026-05-29 (-11d) | 1d → 2d |
| 179 | **"Cadastro de profissionais"** | 2026-06-09 → 2026-05-29 (-11d) | 2026-06-09 → 2026-05-29 (-11d) | 1d → 2d |
| 180 | Implementar EL-TC_006 – Casos de Teste de "Cadastro de profissionais" | 2026-06-09 → 2026-05-29 (-11d) | 2026-06-09 → 2026-05-29 (-11d) | 1d → 2d |
| 181 | Executar EL-T_006 – Testes de "Cadastro de profissionais" | 2026-06-09 → 2026-05-29 (-11d) | 2026-06-09 → 2026-05-29 (-11d) | 1d → 2d |
| 182 | Registrar EL-LT_006 – Logs de Teste de "Cadastro de profissionais" | 2026-06-09 → 2026-05-29 (-11d) | 2026-06-09 → 2026-05-29 (-11d) | 1.5d → 2.5d |
| 183 | Executar EL-TH_006 – Testes de Homologação de "Cadastro de profissionais" | 2026-06-09 → 2026-05-29 (-11d) | 2026-06-09 → 2026-05-29 (-11d) | 1d → 2d |
| 184 | **"Definição de taxa de serviço"** | 2026-06-09 → 2026-05-29 (-11d) | 2026-06-09 → 2026-05-29 (-11d) | 1d → 2d |
| 185 | Implementar EL-TC_007 – Casos de Teste de "Definição de taxa de serviço" | 2026-06-09 → 2026-05-29 (-11d) | 2026-06-09 → 2026-05-29 (-11d) | 1d → 2d |
| 186 | Executar EL-T_007 – Testes de "Definição de taxa de serviço" | 2026-06-09 → 2026-05-29 (-11d) | 2026-06-09 → 2026-05-29 (-11d) | 1d → 2d |
| 187 | Registrar EL-LT_007 – Logs de Teste de "Definição de taxa de serviço" | 2026-06-09 → 2026-05-29 (-11d) | 2026-06-09 → 2026-05-29 (-11d) | 1.5d → 2.5d |
| 188 | Executar EL-TH_007 – Testes de Homologação de "Definição de taxa de serviço" | 2026-06-09 → 2026-05-29 (-11d) | 2026-06-09 → 2026-05-29 (-11d) | 1d → 2d |
| 189 | **"Controle de assinatura de contrato"** | 2026-06-09 → 2026-05-29 (-11d) | 2026-06-09 → 2026-05-29 (-11d) | 1d → 2d |
| 190 | Implementar EL-TC_008 – Casos de Teste de "Controle de assinatura de contrato" | 2026-06-09 → 2026-05-29 (-11d) | 2026-06-09 → 2026-05-29 (-11d) | 1d → 2d |
| 191 | Executar EL-T_008 – Testes de "Controle de assinatura de contrato" | 2026-06-09 → 2026-05-29 (-11d) | 2026-06-09 → 2026-05-29 (-11d) | 1d → 2d |
| 192 | Registrar EL-LT_008 – Logs de Teste de "Controle de assinatura de contrato" | 2026-06-09 → 2026-05-29 (-11d) | 2026-06-09 → 2026-05-29 (-11d) | 1.5d → 2.5d |
| 193 | Executar EL-TH_008 – Testes de Homologação de "Controle de assinatura de contrato" | 2026-06-09 → 2026-05-29 (-11d) | 2026-06-09 → 2026-05-29 (-11d) | 1d → 2d |
| 194 | **"Proposta de contrato"** | 2026-06-09 → 2026-05-29 (-11d) | 2026-06-09 → 2026-05-29 (-11d) | 1d → 2d |
| 195 | Implementar EL-TC_009 – Casos de Teste de "Proposta de contrato" | 2026-06-09 → 2026-05-29 (-11d) | 2026-06-09 → 2026-05-29 (-11d) | 1d → 2d |
| 196 | Executar EL-T_009 – Testes de "Proposta de contrato" | 2026-06-09 → 2026-05-29 (-11d) | 2026-06-09 → 2026-05-29 (-11d) | 1d → 2d |
| 197 | Registrar EL-LT_009 – Logs de Teste de "Proposta de contrato" | 2026-06-09 → 2026-05-29 (-11d) | 2026-06-09 → 2026-05-29 (-11d) | 1.5d → 2.5d |
| 198 | Executar EL-TH_009 – Testes de Homologação de "Proposta de contrato" | 2026-06-09 → 2026-05-29 (-11d) | 2026-06-09 → 2026-05-29 (-11d) | 1d → 2d |
| 199 | **"Busca de profissionais"** | 2026-06-09 → 2026-05-29 (-11d) | 2026-06-09 → 2026-05-29 (-11d) | 1d → 2d |
| 200 | Implementar EL-TC_010 – Casos de Teste de "Busca de profissionais" | 2026-06-09 → 2026-05-29 (-11d) | 2026-06-09 → 2026-05-29 (-11d) | 1d → 2d |
| 201 | Executar EL-T_010 – Testes de "Busca de profissionais" | 2026-06-09 → 2026-05-29 (-11d) | 2026-06-09 → 2026-05-29 (-11d) | 1d → 2d |
| 202 | Registrar EL-LT_010 – Logs de Teste de "Busca de profissionais" | 2026-06-09 → 2026-05-29 (-11d) | 2026-06-09 → 2026-05-29 (-11d) | 1.5d → 2.5d |
| 203 | Executar EL-TH_010 – Testes de Homologação de "Busca de profissionais" | 2026-06-09 → 2026-05-29 (-11d) | 2026-06-09 → 2026-05-29 (-11d) | 1d → 2d |
| 204 | **"Gerenciamento de escala de trabalho"** | 2026-06-09 → 2026-05-29 (-11d) | 2026-06-09 → 2026-05-29 (-11d) | 1d → 2d |
| 205 | Implementar EL-TC_011 – Casos de Teste de "Gerenciamento de escala de trabalho" | 2026-06-09 → 2026-05-29 (-11d) | 2026-06-09 → 2026-05-29 (-11d) | 1d → 2d |
| 206 | Executar EL-T_011 – Testes de "Gerenciamento de escala de trabalho" | 2026-06-09 → 2026-05-29 (-11d) | 2026-06-09 → 2026-05-29 (-11d) | 1d → 2d |
| 207 | Registrar EL-LT_011 – Logs de Teste de "Gerenciamento de escala de trabalho" | 2026-06-09 → 2026-05-29 (-11d) | 2026-06-09 → 2026-05-29 (-11d) | 1.5d → 2.5d |
| 208 | Executar EL-TH_011 – Testes de Homologação de "Gerenciamento de escala de trabalho" | 2026-06-09 → 2026-05-29 (-11d) | 2026-06-09 → 2026-05-29 (-11d) | 1d → 2d |
| 209 | ★ Marco da Entrega da Iteração 02 | 2026-06-09 → 2026-05-29 (-11d) | 2026-06-09 → 2026-05-29 (-11d) | 2d → 3d |
| 210 | **Iteração 03** | 2026-06-09 → 2026-05-29 (-11d) | 2026-06-10 → 2026-06-01 (-9d) | 0d → 1d |

| ID | Task | Start | Finish | Total float |
| --- | --- | --- | --- | --- |
| 211 | **Modelagem** | 2026-06-09 → 2026-05-29 (-11d) | 2026-06-09 → 2026-05-29 (-11d) | 1d → 2d |
| 212 | **"Controle de pagamento"** | 2026-06-09 → 2026-05-29 (-11d) | 2026-06-09 → 2026-05-29 (-11d) | 1d → 2d |
| 213 | Elaborar EL-UCD_012 – Diagrama de Caso de Uso de "Controle de pagamento" | 2026-06-09 → 2026-05-29 (-11d) | 2026-06-09 → 2026-05-29 (-11d) | 1d → 2d |
| 214 | Redigir EL-UCE_012 – Especificação de Caso de Uso de "Controle de pagamento" | 2026-06-09 → 2026-05-29 (-11d) | 2026-06-09 → 2026-05-29 (-11d) | 1d → 2d |
| 215 | Elaborar EL-CD_012 – Diagrama de Classes de "Controle de pagamento" | 2026-06-09 → 2026-05-29 (-11d) | 2026-06-09 → 2026-05-29 (-11d) | 1d → 2d |
| 216 | Elaborar EL-MER_012 – Modelo Entidade Relacionamento de "Controle de pagamento" | 2026-06-09 → 2026-05-29 (-11d) | 2026-06-09 → 2026-05-29 (-11d) | 1d → 2d |
| 217 | Gerar EL-Script_012 – Esquema/Script de "Controle de pagamento" | 2026-06-09 → 2026-05-29 (-11d) | 2026-06-09 → 2026-05-29 (-11d) | 1.5d → 2.5d |
| 218 | Elaborar EL-DBD_012 – Documentação de Banco de Dados de "Controle de pagamento" | 2026-06-09 → 2026-05-29 (-11d) | 2026-06-09 → 2026-05-29 (-11d) | 1.5d → 2.5d |
| 219 | **"Configuração de Percentuais e Repasse"** | 2026-06-09 → 2026-05-29 (-11d) | 2026-06-09 → 2026-05-29 (-11d) | 1d → 2d |
| 220 | Elaborar EL-UCD_013 – Diagrama de Caso de Uso de "Configuração de Percentuais e Repasse" | 2026-06-09 → 2026-05-29 (-11d) | 2026-06-09 → 2026-05-29 (-11d) | 1d → 2d |
| 221 | Redigir EL-UCE_013 – Especificação de Caso de Uso de "Configuração de Percentuais e Repasse" | 2026-06-09 → 2026-05-29 (-11d) | 2026-06-09 → 2026-05-29 (-11d) | 1d → 2d |
| 222 | Elaborar EL-CD_013 – Diagrama de Classes de "Configuração de Percentuais e Repasse" | 2026-06-09 → 2026-05-29 (-11d) | 2026-06-09 → 2026-05-29 (-11d) | 1d → 2d |
| 223 | Elaborar EL-MER_013 – Modelo Entidade Relacionamento de "Configuração de Percentuais e Repasse" | 2026-06-09 → 2026-05-29 (-11d) | 2026-06-09 → 2026-05-29 (-11d) | 1d → 2d |
| 224 | Gerar EL-Script_013 – Esquema/Script de "Configuração de Percentuais e Repasse" | 2026-06-09 → 2026-05-29 (-11d) | 2026-06-09 → 2026-05-29 (-11d) | 1.5d → 2.5d |
| 225 | Elaborar EL-DBD_013 – Documentação de Banco de Dados de "Configuração de Percentuais e Repasse" | 2026-06-09 → 2026-05-29 (-11d) | 2026-06-09 → 2026-05-29 (-11d) | 1.5d → 2.5d |
| 226 | **"Gestão de painel jurídico"** | 2026-06-09 → 2026-05-29 (-11d) | 2026-06-09 → 2026-05-29 (-11d) | 1d → 2d |
| 227 | Elaborar EL-UCD_014 – Diagrama de Caso de Uso de "Gestão de painel jurídico" | 2026-06-09 → 2026-05-29 (-11d) | 2026-06-09 → 2026-05-29 (-11d) | 1d → 2d |
| 228 | Redigir EL-UCE_014 – Especificação de Caso de Uso de "Gestão de painel jurídico" | 2026-06-09 → 2026-05-29 (-11d) | 2026-06-09 → 2026-05-29 (-11d) | 1d → 2d |
| 229 | Elaborar EL-CD_014 – Diagrama de Classes de "Gestão de painel jurídico" | 2026-06-09 → 2026-05-29 (-11d) | 2026-06-09 → 2026-05-29 (-11d) | 1d → 2d |
| 230 | Elaborar EL-MER_014 – Modelo Entidade Relacionamento de "Gestão de painel jurídico" | 2026-06-09 → 2026-05-29 (-11d) | 2026-06-09 → 2026-05-29 (-11d) | 1d → 2d |
| 231 | Gerar EL-Script_014 – Esquema/Script de "Gestão de painel jurídico" | 2026-06-09 → 2026-05-29 (-11d) | 2026-06-09 → 2026-05-29 (-11d) | 1.5d → 2.5d |
| 232 | Elaborar EL-DBD_014 – Documentação de Banco de Dados de "Gestão de painel jurídico" | 2026-06-09 → 2026-05-29 (-11d) | 2026-06-09 → 2026-05-29 (-11d) | 1.5d → 2.5d |
| 233 | **"Cadastro do documento do profissional"** | 2026-06-09 → 2026-05-29 (-11d) | 2026-06-09 → 2026-05-29 (-11d) | 1d → 2d |
| 234 | Elaborar EL-UCD_015 – Diagrama de Caso de Uso de "Cadastro do documento do profissional" | 2026-06-09 → 2026-05-29 (-11d) | 2026-06-09 → 2026-05-29 (-11d) | 1d → 2d |
| 235 | Redigir EL-UCE_015 – Especificação de Caso de Uso de "Cadastro do documento do profissional" | 2026-06-09 → 2026-05-29 (-11d) | 2026-06-09 → 2026-05-29 (-11d) | 1d → 2d |
| 236 | Elaborar EL-CD_015 – Diagrama de Classes de "Cadastro do documento do profissional" | 2026-06-09 → 2026-05-29 (-11d) | 2026-06-09 → 2026-05-29 (-11d) | 1d → 2d |
| 237 | Elaborar EL-MER_015 – Modelo Entidade Relacionamento de "Cadastro do documento do profissional" | 2026-06-09 → 2026-05-29 (-11d) | 2026-06-09 → 2026-05-29 (-11d) | 1d → 2d |
| 238 | Gerar EL-Script_015 – Esquema/Script de "Cadastro do documento do profissional" | 2026-06-09 → 2026-05-29 (-11d) | 2026-06-09 → 2026-05-29 (-11d) | 1.5d → 2.5d |
| 239 | Elaborar EL-DBD_015 – Documentação de Banco de Dados de "Cadastro do documento do profissional" | 2026-06-09 → 2026-05-29 (-11d) | 2026-06-09 → 2026-05-29 (-11d) | 1.5d → 2.5d |
| 240 | **"Gestão de relatórios financeiros"** | 2026-06-09 → 2026-05-29 (-11d) | 2026-06-09 → 2026-05-29 (-11d) | 1d → 2d |
| 241 | Elaborar EL-UCD_016 – Diagrama de Caso de Uso de "Gestão de relatórios financeiros" | 2026-06-09 → 2026-05-29 (-11d) | 2026-06-09 → 2026-05-29 (-11d) | 1d → 2d |
| 242 | Redigir EL-UCE_016 – Especificação de Caso de Uso de "Gestão de relatórios financeiros" | 2026-06-09 → 2026-05-29 (-11d) | 2026-06-09 → 2026-05-29 (-11d) | 1d → 2d |
| 243 | Elaborar EL-CD_016 – Diagrama de Classes de "Gestão de relatórios financeiros" | 2026-06-09 → 2026-05-29 (-11d) | 2026-06-09 → 2026-05-29 (-11d) | 1d → 2d |
| 244 | Elaborar EL-MER_016 – Modelo Entidade Relacionamento de "Gestão de relatórios financeiros" | 2026-06-09 → 2026-05-29 (-11d) | 2026-06-09 → 2026-05-29 (-11d) | 1d → 2d |
| 245 | Gerar EL-Script_016 – Esquema/Script de "Gestão de relatórios financeiros" | 2026-06-09 → 2026-05-29 (-11d) | 2026-06-09 → 2026-05-29 (-11d) | 1.5d → 2.5d |
| 246 | Elaborar EL-DBD_016 – Documentação de Banco de Dados de "Gestão de relatórios financeiros" | 2026-06-09 → 2026-05-29 (-11d) | 2026-06-09 → 2026-05-29 (-11d) | 1.5d → 2.5d |
| 247 | **Construção** | 2026-06-09 → 2026-05-29 (-11d) | 2026-06-10 → 2026-06-01 (-9d) | 0d → 1d |
| 248 | **"Controle de pagamento"** | 2026-06-09 → 2026-05-29 (-11d) | 2026-06-10 → 2026-06-01 (-9d) | 0d → 1d |
| 249 | Implementar EL-CMC_012 – Classes, Métodos e Componentes de "Controle de pagamento" | 2026-06-09 → 2026-05-29 (-11d) | 2026-06-10 → 2026-06-01 (-9d) | 0d → 1d |
| 250 | Implementar EL-FUX_012 – Front-UX de "Controle de pagamento" | 2026-06-09 → 2026-05-29 (-11d) | 2026-06-10 → 2026-06-01 (-9d) | 0d → 1d |
| 251 | Identificar EL-API_012 – APIs de "Controle de pagamento" | 2026-06-09 → 2026-05-29 (-11d) | 2026-06-09 → 2026-05-29 (-11d) | 1d → 2d |
| 252 | Criar EL-IBD_012 – Interface do Mapeamento de Banco de Dados de "Controle de pagamento" | 2026-06-09 → 2026-05-29 (-11d) | 2026-06-09 → 2026-05-29 (-11d) | 1d → 2d |
| 253 | Integrar EL-I_012 – "Controle de pagamento" | 2026-06-09 → 2026-05-29 (-11d) | 2026-06-09 → 2026-05-29 (-11d) | 1d → 2d |
| 254 | **"Configuração de Percentuais e Repasse"** | 2026-06-09 → 2026-05-29 (-11d) | 2026-06-10 → 2026-06-01 (-9d) | 0d → 1d |
| 255 | Implementar EL-CMC_013 – Classes, Métodos e Componentes de "Configuração de Percentuais e Repasse" | 2026-06-09 → 2026-05-29 (-11d) | 2026-06-10 → 2026-06-01 (-9d) | 0d → 1d |
| 256 | Implementar EL-FUX_013 – Front-UX de "Configuração de Percentuais e Repasse" | 2026-06-09 → 2026-05-29 (-11d) | 2026-06-10 → 2026-06-01 (-9d) | 0d → 1d |
| 257 | Identificar EL-API_013 – APIs de "Configuração de Percentuais e Repasse" | 2026-06-09 → 2026-05-29 (-11d) | 2026-06-09 → 2026-05-29 (-11d) | 1d → 2d |
| 258 | Criar EL-IBD_013 – Interface do Mapeamento de Banco de Dados de "Configuração de Percentuais e Repasse" | 2026-06-09 → 2026-05-29 (-11d) | 2026-06-09 → 2026-05-29 (-11d) | 1d → 2d |
| 259 | Integrar EL-I_013 – "Configuração de Percentuais e Repasse" | 2026-06-09 → 2026-05-29 (-11d) | 2026-06-09 → 2026-05-29 (-11d) | 1d → 2d |
| 260 | **"Gestão de painel jurídico"** | 2026-06-09 → 2026-05-29 (-11d) | 2026-06-10 → 2026-06-01 (-9d) | 0d → 1d |
| 261 | Implementar EL-CMC_014 – Classes, Métodos e Componentes de "Gestão de painel jurídico" | 2026-06-09 → 2026-05-29 (-11d) | 2026-06-10 → 2026-06-01 (-9d) | 0d → 1d |
| 262 | Implementar EL-FUX_014 – Front-UX de "Gestão de painel jurídico" | 2026-06-09 → 2026-05-29 (-11d) | 2026-06-10 → 2026-06-01 (-9d) | 0d → 1d |
| 263 | Identificar EL-API_014 – APIs de "Gestão de painel jurídico" | 2026-06-09 → 2026-05-29 (-11d) | 2026-06-09 → 2026-05-29 (-11d) | 1d → 2d |
| 264 | Criar EL-IBD_014 – Interface do Mapeamento de Banco de Dados de "Gestão de painel jurídico" | 2026-06-09 → 2026-05-29 (-11d) | 2026-06-09 → 2026-05-29 (-11d) | 1d → 2d |
| 265 | Integrar EL-I_014 – "Gestão de painel jurídico" | 2026-06-09 → 2026-05-29 (-11d) | 2026-06-09 → 2026-05-29 (-11d) | 1d → 2d |
| 266 | **"Cadastro do documento do profissional"** | 2026-06-09 → 2026-05-29 (-11d) | 2026-06-10 → 2026-06-01 (-9d) | 0d → 1d |
| 267 | Implementar EL-CMC_015 – Classes, Métodos e Componentes de "Cadastro do documento do profissional" | 2026-06-09 → 2026-05-29 (-11d) | 2026-06-10 → 2026-06-01 (-9d) | 0d → 1d |
| 268 | Implementar EL-FUX_015 – Front-UX de "Cadastro do documento do profissional" | 2026-06-09 → 2026-05-29 (-11d) | 2026-06-10 → 2026-06-01 (-9d) | 0d → 1d |
| 269 | Identificar EL-API_015 – APIs de "Cadastro do documento do profissional" | 2026-06-09 → 2026-05-29 (-11d) | 2026-06-09 → 2026-05-29 (-11d) | 1d → 2d |
| 270 | Criar EL-IBD_015 – Interface do Mapeamento de Banco de Dados de "Cadastro do documento do profissional" | 2026-06-09 → 2026-05-29 (-11d) | 2026-06-09 → 2026-05-29 (-11d) | 1d → 2d |
| 271 | Integrar EL-I_015 – "Cadastro do documento do profissional" | 2026-06-09 → 2026-05-29 (-11d) | 2026-06-09 → 2026-05-29 (-11d) | 1d → 2d |
| 272 | **"Gestão de relatórios financeiros"** | 2026-06-09 → 2026-05-29 (-11d) | 2026-06-10 → 2026-06-01 (-9d) | 0d → 1d |
| 273 | Implementar EL-CMC_016 – Classes, Métodos e Componentes de "Gestão de relatórios financeiros" | 2026-06-09 → 2026-05-29 (-11d) | 2026-06-10 → 2026-06-01 (-9d) | 0d → 1d |
| 274 | Implementar EL-FUX_016 – Front-UX de "Gestão de relatórios financeiros" | 2026-06-09 → 2026-05-29 (-11d) | 2026-06-10 → 2026-06-01 (-9d) | 0d → 1d |
| 275 | Identificar EL-API_016 – APIs de "Gestão de relatórios financeiros" | 2026-06-09 → 2026-05-29 (-11d) | 2026-06-09 → 2026-05-29 (-11d) | 1d → 2d |
| 276 | Criar EL-IBD_016 – Interface do Mapeamento de Banco de Dados de "Gestão de relatórios financeiros" | 2026-06-09 → 2026-05-29 (-11d) | 2026-06-09 → 2026-05-29 (-11d) | 1d → 2d |
| 277 | Integrar EL-I_016 – "Gestão de relatórios financeiros" | 2026-06-09 → 2026-05-29 (-11d) | 2026-06-09 → 2026-05-29 (-11d) | 1d → 2d |
| 278 | **Testes** | 2026-06-09 → 2026-05-29 (-11d) | 2026-06-09 → 2026-05-29 (-11d) | 1d → 2d |
| 279 | **"Controle de pagamento"** | 2026-06-09 → 2026-05-29 (-11d) | 2026-06-09 → 2026-05-29 (-11d) | 1d → 2d |
| 280 | Implementar EL-TC_012 – Casos de Teste de "Controle de pagamento" | 2026-06-09 → 2026-05-29 (-11d) | 2026-06-09 → 2026-05-29 (-11d) | 1d → 2d |

| ID | Task | Start | Finish | Total float |
| --- | --- | --- | --- | --- |
| 281 | Executar EL-T_012 – Testes de "Controle de pagamento" | 2026-06-09 → 2026-05-29 (-11d) | 2026-06-09 → 2026-05-29 (-11d) | 1d → 2d |
| 282 | Registrar EL-LT_012 – Logs de Teste de "Controle de pagamento" | 2026-06-09 → 2026-05-29 (-11d) | 2026-06-09 → 2026-05-29 (-11d) | 1.5d → 2.5d |
| 283 | Executar EL-TH_012 – Testes de Homologação de "Controle de pagamento" | 2026-06-09 → 2026-05-29 (-11d) | 2026-06-09 → 2026-05-29 (-11d) | 1d → 2d |
| 284 | **"Configuração de Percentuais e Repasse"** | 2026-06-09 → 2026-05-29 (-11d) | 2026-06-09 → 2026-05-29 (-11d) | 1d → 2d |
| 285 | Implementar EL-TC_013 – Casos de Teste de "Configuração de Percentuais e Repasse" | 2026-06-09 → 2026-05-29 (-11d) | 2026-06-09 → 2026-05-29 (-11d) | 1d → 2d |
| 286 | Executar EL-T_013 – Testes de "Configuração de Percentuais e Repasse" | 2026-06-09 → 2026-05-29 (-11d) | 2026-06-09 → 2026-05-29 (-11d) | 1d → 2d |
| 287 | Registrar EL-LT_013 – Logs de Teste de "Configuração de Percentuais e Repasse" | 2026-06-09 → 2026-05-29 (-11d) | 2026-06-09 → 2026-05-29 (-11d) | 1.5d → 2.5d |
| 288 | Executar EL-TH_013 – Testes de Homologação de "Configuração de Percentuais e Repasse" | 2026-06-09 → 2026-05-29 (-11d) | 2026-06-09 → 2026-05-29 (-11d) | 1d → 2d |
| 289 | **"Gestão de painel jurídico"** | 2026-06-09 → 2026-05-29 (-11d) | 2026-06-09 → 2026-05-29 (-11d) | 1d → 2d |
| 290 | Implementar EL-TC_014 – Casos de Teste de "Gestão de painel jurídico" | 2026-06-09 → 2026-05-29 (-11d) | 2026-06-09 → 2026-05-29 (-11d) | 1d → 2d |
| 291 | Executar EL-T_014 – Testes de "Gestão de painel jurídico" | 2026-06-09 → 2026-05-29 (-11d) | 2026-06-09 → 2026-05-29 (-11d) | 1d → 2d |
| 292 | Registrar EL-LT_014 – Logs de Teste de "Gestão de painel jurídico" | 2026-06-09 → 2026-05-29 (-11d) | 2026-06-09 → 2026-05-29 (-11d) | 1.5d → 2.5d |
| 293 | Executar EL-TH_014 – Testes de Homologação de "Gestão de painel jurídico" | 2026-06-09 → 2026-05-29 (-11d) | 2026-06-09 → 2026-05-29 (-11d) | 1d → 2d |
| 294 | **"Cadastro do documento do profissional"** | 2026-06-09 → 2026-05-29 (-11d) | 2026-06-09 → 2026-05-29 (-11d) | 1d → 2d |
| 295 | Implementar EL-TC_015 – Casos de Teste de "Cadastro do documento do profissional" | 2026-06-09 → 2026-05-29 (-11d) | 2026-06-09 → 2026-05-29 (-11d) | 1d → 2d |
| 296 | Executar EL-T_015 – Testes de "Cadastro do documento do profissional" | 2026-06-09 → 2026-05-29 (-11d) | 2026-06-09 → 2026-05-29 (-11d) | 1d → 2d |
| 297 | Registrar EL-LT_015 – Logs de Teste de "Cadastro do documento do profissional" | 2026-06-09 → 2026-05-29 (-11d) | 2026-06-09 → 2026-05-29 (-11d) | 1.5d → 2.5d |
| 298 | Executar EL-TH_015 – Testes de Homologação de "Cadastro do documento do profissional" | 2026-06-09 → 2026-05-29 (-11d) | 2026-06-09 → 2026-05-29 (-11d) | 1d → 2d |
| 299 | **"Gestão de relatórios financeiros"** | 2026-06-09 → 2026-05-29 (-11d) | 2026-06-09 → 2026-05-29 (-11d) | 1d → 2d |
| 300 | Implementar EL-TC_016 – Casos de Teste de "Gestão de relatórios financeiros" | 2026-06-09 → 2026-05-29 (-11d) | 2026-06-09 → 2026-05-29 (-11d) | 1d → 2d |
| 301 | Executar EL-T_016 – Testes de "Gestão de relatórios financeiros" | 2026-06-09 → 2026-05-29 (-11d) | 2026-06-09 → 2026-05-29 (-11d) | 1d → 2d |
| 302 | Registrar EL-LT_016 – Logs de Teste de "Gestão de relatórios financeiros" | 2026-06-09 → 2026-05-29 (-11d) | 2026-06-09 → 2026-05-29 (-11d) | 1.5d → 2.5d |
| 303 | Executar EL-TH_016 – Testes de Homologação de "Gestão de relatórios financeiros" | 2026-06-09 → 2026-05-29 (-11d) | 2026-06-09 → 2026-05-29 (-11d) | 1d → 2d |
| 304 | ★ Marco da Entrega da Iteração 03 | 2026-06-09 → 2026-05-29 (-11d) | 2026-06-09 → 2026-05-29 (-11d) | 2d → 3d |

## Version 3 (data date 2026-06-08, saved 2026-06-09, file Cronograma_V1.mpp)

Note of the change: Merge a26e98e6295125fc00b796a95f8d23998858f8b5 into 7d3e57d2ccf8c8a450d8a9a7f2fd930d07deae7a

Last finish 2026-06-02 → 2026-06-01 (-1d). Complete tasks 0 → 2.

Added:

| ID | Task | Duration | Start | Finish | Predecessors | Resources |
| --- | --- | --- | --- | --- | --- | --- |
| 78 | **Implantação** | 5.25h | 2026-04-29 09:00 | 2026-04-29 15:15 |  |  |
| 79 | **"Modelo de análise"** | 3h | 2026-04-29 11:15 | 2026-04-29 15:15 |  |  |
| 80 | Integração total EL-IT_013 - "Modelo de análise" | 3h | 2026-04-29 11:15 | 2026-04-29 15:15 | 77 | Integrador |
| 81 | **"Controle de acesso"** | 5h | 2026-04-29 09:00 | 2026-04-29 15:00 |  |  |
| 95 | Gerar EL-Script_017 - Esquema/Script de "Nível de acesso ao sistema" | 0.25h | 2026-05-14 11:30 | 2026-05-14 11:45 | 94 | Analista 01 |
| 102 | Gerar EL-Script_018 - Esquema/Script de "Cadastro de profissionais" | 0.25h | 2026-05-14 13:15 | 2026-05-14 13:30 | 101 | Analista 02 |
| 109 | Gerar EL-Script_019 - Esquema/Script de "Definição de taxa de serviço" | 0.25h | 2026-05-14 11:30 | 2026-05-14 11:45 | 108 | Analista 03 |
| 116 | Gerar EL-Script_020 - Esquema/Script de "Controle de assinatura de contrato" | 0.25h | 2026-05-14 11:30 | 2026-05-14 11:45 | 115 | Analista 01 |
| 123 | Gerar EL-Script_021 - Esquema/Script de "Proposta de contrato" | 0.25h | 2026-05-14 13:30 | 2026-05-14 13:45 | 122 | Analista 02 |
| 130 | Gerar EL-Script_022 - Esquema/Script de "Busca de profissionais" | 0.25h | 2026-05-14 11:30 | 2026-05-14 11:45 | 129 | Analista 03 |
| 131 | Elaborar EL-DBD_022 - Documentação de Banco de Dados de "Busca de profissionais" | 0.25h | 2026-05-14 11:45 | 2026-05-14 12:00 | 130 | Analista 03 |
| 137 | Gerar EL-Script_023 - Esquema/Script de "Gerenciamento de escala de trabalho" | 0.25h | 2026-05-14 13:00 | 2026-05-14 13:15 | 136 | Analista 01 |
| 143 | Identificar EL-API_024 - APIs de "Nível de acesso ao sistema" | 0.75h | 2026-05-14 17:45 | 2026-05-15 09:30 | 142 | Dev 01 |
| 149 | Identificar EL-API_025 - APIs de "Cadastro de profissionais" | 0.75h | 2026-05-14 13:00 | 2026-05-14 13:45 | 148 | Dev 02 |
| 155 | Identificar EL-API_026 - APIs de "Definição de taxa de serviço" | 0.25h | 2026-05-14 11:45 | 2026-05-14 12:00 | 154 | Dev 03 |
| 161 | Identificar EL-API_027 - APIs de "Controle de assinatura de contrato" | 0.75h | 2026-05-14 11:45 | 2026-05-14 13:30 | 160 | Dev 01 |
| 167 | Identificar EL-API_028 - APIs de "Proposta de contrato" | 0.75h | 2026-05-14 11:45 | 2026-05-14 13:30 | 166 | Dev 02 |
| 173 | Identificar EL-API_029 - APIs de "Busca de profissionais" | 0.75h | 2026-05-14 11:45 | 2026-05-14 13:30 | 172 | Dev 03 |
| 174 | Criar EL-IBD_029 - Interface do Mapeamento de Banco de Dados de "Busca de profissionais" | 0.75h | 2026-05-14 13:30 | 2026-05-14 14:15 | 173 | Dev 03 |
| 179 | Identificar EL-API_030 - APIs de "Gerenciamento de escala de trabalho" | 0.75h | 2026-05-14 11:45 | 2026-05-14 13:30 | 178 | Dev 01 |
| 184 | Implementar EL-TC_031 - Casos de Teste de "Nível de acesso ao sistema" | 0.75h | 2026-05-14 15:00 | 2026-05-14 15:45 | 181 | QA 01 |
| 189 | Implementar EL-TC_032 - Casos de Teste de "Cadastro de profissionais" | 0.75h | 2026-05-14 09:00 | 2026-05-14 09:45 |  | QA 02 |
| 194 | Implementar EL-TC_033 - Casos de Teste de "Definição de taxa de serviço" | 0.75h | 2026-05-14 09:00 | 2026-05-14 09:45 |  | QA 01 |
| 199 | Implementar EL-TC_034 - Casos de Teste de "Controle de assinatura de contrato" | 0.75h | 2026-05-14 09:00 | 2026-05-14 09:45 |  | QA 02 |
| 204 | Implementar EL-TC_035 - Casos de Teste de "Proposta de contrato" | 0.75h | 2026-05-14 09:00 | 2026-05-14 09:45 |  | QA 01 |
| 209 | Implementar EL-TC_036 - Casos de Teste de "Busca de profissionais" | 0.75h | 2026-05-14 09:00 | 2026-05-14 09:45 |  | QA 02 |
| 210 | Executar EL-T_036 - Testes de "Busca de profissionais" | 1.75h | 2026-05-14 09:45 | 2026-05-14 11:30 | 209 | QA 02 |
| 211 | Registrar EL-LT_036 - Logs de Teste de "Busca de profissionais" | 0.5h | 2026-05-14 11:30 | 2026-05-14 12:00 | 210 | QA 02 |
| 212 | Executar EL-TH_036 - Testes de Homologação de "Busca de profissionais" | 0.25h | 2026-05-14 13:00 | 2026-05-14 13:15 | 211 | QA 02 |
| 219 | **"Nível de acesso ao sistema"** | 2.25h | 2026-05-14 11:30 | 2026-05-14 14:45 |  |  |
| 226 | Integração total EL-IT_041 - "Controle de assinatura de contrato" | 2.25h | 2026-05-14 09:00 | 2026-05-14 11:15 |  | Integrador |
| 240 | Elaborar EL-MER_045 - Modelo Entidade Relacionamento de "Controle de pagamento" | 0.75h | 2026-05-29 13:00 | 2026-05-29 13:45 | 239 | Analista 01 |
| 247 | Elaborar EL-MER_046 - Modelo Entidade Relacionamento de "Configuração de Percentuais e Repasse" | 0.75h | 2026-05-29 13:15 | 2026-05-29 14:00 | 246 | Analista 02 |
| 248 | Gerar EL-Script_046 - Esquema/Script de "Configuração de Percentuais e Repasse" | 0.5h | 2026-05-29 14:00 | 2026-05-29 14:30 | 247 | Analista 02 |
| 254 | Elaborar EL-MER_047 - Modelo Entidade Relacionamento de "Gestão de painel jurídico" | 0.75h | 2026-05-29 13:15 | 2026-05-29 14:00 | 253 | Analista 03 |
| 260 | Elaborar EL-CD_048 - Diagrama de Classes de "Cadastro do documento do profissional" | 0.75h | 2026-05-29 11:30 | 2026-05-29 13:15 | 259 | Analista 01 |
| 266 | Redigir EL-UCE_049 - Especificação de Caso de Uso de "Gestão de relatórios financeiros" | 1.25h | 2026-05-29 11:15 | 2026-05-29 13:30 | 265 | Analista 02 |
| 279 | Implementar EL-CMC_051 - Classes, Métodos e Componentes de "Configuração de Percentuais e Repasse" | 2.5h | 2026-05-29 09:00 | 2026-05-29 11:30 |  | Dev 02 |
| 289 | Integração parcial EL-IP_052 - "Gestão de painel jurídico" | 0.5h | 2026-05-29 14:45 | 2026-05-29 15:15 | 288 | Dev 03 |
| 294 | Criar EL-IBD_053 - Interface do Mapeamento de Banco de Dados de "Cadastro do documento do profissional" | 0.75h | 2026-05-29 14:00 | 2026-05-29 14:45 | 293 | Dev 01 |
| 299 | Identificar EL-API_054 - APIs de "Gestão de relatórios financeiros" | 0.75h | 2026-05-29 13:45 | 2026-05-29 14:30 | 298 | Dev 02 |
| 304 | Implementar EL-TC_055 - Casos de Teste de "Controle de pagamento" | 1.5h | 2026-05-29 15:45 | 2026-05-29 17:15 | 301 | QA 01 |
| 305 | Executar EL-T_055 - Testes de "Controle de pagamento" | 1.5h | 2026-05-29 17:15 | 2026-06-01 09:45 | 304 | QA 01 |
| 306 | Registrar EL-LT_055 - Logs de Teste de "Controle de pagamento" | 1h | 2026-06-01 09:45 | 2026-06-01 10:45 | 305 | QA 01 |
| 307 | Executar EL-TH_055 - Testes de Homologação de "Controle de pagamento" | 1.75h | 2026-06-01 10:45 | 2026-06-01 13:30 | 306 | QA 01 |
| 309 | Implementar EL-TC_056 - Casos de Teste de "Configuração de Percentuais e Repasse" | 1.5h | 2026-05-29 09:00 | 2026-05-29 10:30 |  | QA 02 |
| 310 | Executar EL-T_056 - Testes de "Configuração de Percentuais e Repasse" | 1.5h | 2026-05-29 10:30 | 2026-05-29 12:00 | 309 | QA 02 |
| 311 | Registrar EL-LT_056 - Logs de Teste de "Configuração de Percentuais e Repasse" | 1h | 2026-05-29 13:00 | 2026-05-29 14:00 | 310 | QA 02 |
| 312 | Executar EL-TH_056 - Testes de Homologação de "Configuração de Percentuais e Repasse" | 0.75h | 2026-05-29 14:00 | 2026-05-29 14:45 | 311 | QA 02 |
| 314 | Implementar EL-TC_057 - Casos de Teste de "Gestão de painel jurídico" | 1.5h | 2026-05-29 09:00 | 2026-05-29 10:30 |  | QA 01 |
| 315 | Executar EL-T_057 - Testes de "Gestão de painel jurídico" | 1.5h | 2026-05-29 10:30 | 2026-05-29 12:00 | 314 | QA 01 |
| 316 | Registrar EL-LT_057 - Logs de Teste de "Gestão de painel jurídico" | 1h | 2026-05-29 13:00 | 2026-05-29 14:00 | 315 | QA 01 |
| 317 | Executar EL-TH_057 - Testes de Homologação de "Gestão de painel jurídico" | 0.75h | 2026-05-29 14:00 | 2026-05-29 14:45 | 316 | QA 01 |
| 319 | Implementar EL-TC_058 - Casos de Teste de "Cadastro do documento do profissional" | 1.5h | 2026-05-29 09:00 | 2026-05-29 10:30 |  | QA 02 |
| 320 | Executar EL-T_058 - Testes de "Cadastro do documento do profissional" | 1.5h | 2026-05-29 10:30 | 2026-05-29 12:00 | 319 | QA 02 |
| 321 | Registrar EL-LT_058 - Logs de Teste de "Cadastro do documento do profissional" | 1h | 2026-05-29 13:00 | 2026-05-29 14:00 | 320 | QA 02 |
| 322 | Executar EL-TH_058 - Testes de Homologação de "Cadastro do documento do profissional" | 0.75h | 2026-05-29 14:00 | 2026-05-29 14:45 | 321 | QA 02 |
| 324 | Implementar EL-TC_059 - Casos de Teste de "Gestão de relatórios financeiros" | 1.5h | 2026-05-29 09:00 | 2026-05-29 10:30 |  | QA 01 |
| 325 | Executar EL-T_059 - Testes de "Gestão de relatórios financeiros" | 1.5h | 2026-05-29 10:30 | 2026-05-29 12:00 | 324 | QA 01 |
| 326 | Registrar EL-LT_059 - Logs de Teste de "Gestão de relatórios financeiros" | 1h | 2026-05-29 13:00 | 2026-05-29 14:00 | 325 | QA 01 |
| 327 | Executar EL-TH_059 - Testes de Homologação de "Gestão de relatórios financeiros" | 1h | 2026-05-29 14:00 | 2026-05-29 15:00 | 326 | QA 01 |
| 328 | **Implantação** | 7h | 2026-05-29 09:00 | 2026-05-29 18:00 |  |  |
| 329 | **"Controle de pagamento"** | 2h | 2026-05-29 15:00 | 2026-05-29 18:00 |  |  |
| 330 | Integração total EL-IT_060 - "Controle de pagamento" | 3h | 2026-05-29 15:00 | 2026-05-29 18:00 | 327 | Integrador |
| 331 | **"Configuração de Percentuais e Repasse"** | 3.5h | 2026-05-29 09:00 | 2026-05-29 13:30 |  |  |
| 332 | Integração total EL-IT_061 - "Configuração de Percentuais e Repasse" | 3.5h | 2026-05-29 09:00 | 2026-05-29 13:30 |  | Integrador |
| 333 | **"Gestão de painel jurídico"** | 3.25h | 2026-05-29 09:00 | 2026-05-29 13:15 |  |  |
| 334 | Integração total EL-IT_062 - "Gestão de painel jurídico" | 3.25h | 2026-05-29 09:00 | 2026-05-29 13:15 |  | Integrador |
| 335 | **"Cadastro do documento do profissional"** | 3.25h | 2026-05-29 09:00 | 2026-05-29 13:15 |  |  |
| 336 | Integração total EL-IT_063 - "Cadastro do documento do profissional" | 3.25h | 2026-05-29 09:00 | 2026-05-29 13:15 |  | Integrador |
| 337 | **"Gestão de relatórios financeiros"** | 3h | 2026-05-29 09:00 | 2026-05-29 12:00 |  |  |
| 338 | Integração total EL-IT_064 - "Gestão de relatórios financeiros" | 3h | 2026-05-29 09:00 | 2026-05-29 12:00 |  | Integrador |

Removed: 87 Elaborar EL-DBD_005 – Documentação de Banco de Dados de "Nível de acesso ao sistema"; 89 Elaborar EL-UCD_006 – Diagrama de Caso de Uso de "Cadastro de profissionais"; 90 Redigir EL-UCE_006 – Especificação de Caso de Uso de "Cadastro de profissionais"; 97 Redigir EL-UCE_007 – Especificação de Caso de Uso de "Definição de taxa de serviço"; 104 Redigir EL-UCE_008 – Especificação de Caso de Uso de "Controle de assinatura de contrato"; 111 Redigir EL-UCE_009 – Especificação de Caso de Uso de "Proposta de contrato"; 118 Redigir EL-UCE_010 – Especificação de Caso de Uso de "Busca de profissionais"; 125 Redigir EL-UCE_011 – Especificação de Caso de Uso de "Gerenciamento de escala de trabalho"; 132 Implementar EL-CMC_005 – Classes, Métodos e Componentes de "Nível de acesso ao sistema"; 139 Implementar EL-FUX_006 – Front-UX de "Cadastro de profissionais"; 140 Identificar EL-API_006 – APIs de "Cadastro de profissionais"; 146 Identificar EL-API_007 – APIs de "Definição de taxa de serviço"; 152 Identificar EL-API_008 – APIs de "Controle de assinatura de contrato"; 158 Identificar EL-API_009 – APIs de "Proposta de contrato"; 164 Identificar EL-API_010 – APIs de "Busca de profissionais"; 170 Identificar EL-API_011 – APIs de "Gerenciamento de escala de trabalho"; 176 Executar EL-T_005 – Testes de "Nível de acesso ao sistema"; 182 Registrar EL-LT_006 – Logs de Teste de "Cadastro de profissionais"; 183 Executar EL-TH_006 – Testes de Homologação de "Cadastro de profissionais"; 188 Executar EL-TH_007 – Testes de Homologação de "Definição de taxa de serviço"; 193 Executar EL-TH_008 – Testes de Homologação de "Controle de assinatura de contrato"; 198 Executar EL-TH_009 – Testes de Homologação de "Proposta de contrato"; 203 Executar EL-TH_010 – Testes de Homologação de "Busca de profissionais"; 208 Executar EL-TH_011 – Testes de Homologação de "Gerenciamento de escala de trabalho"; 213 Elaborar EL-UCD_012 – Diagrama de Caso de Uso de "Controle de pagamento"; 234 Elaborar EL-UCD_015 – Diagrama de Caso de Uso de "Cadastro do documento do profissional"; 235 Redigir EL-UCE_015 – Especificação de Caso de Uso de "Cadastro do documento do profissional"; 236 Elaborar EL-CD_015 – Diagrama de Classes de "Cadastro do documento do profissional"; 243 Elaborar EL-CD_016 – Diagrama de Classes de "Gestão de relatórios financeiros"; 250 Implementar EL-FUX_012 – Front-UX de "Controle de pagamento"; 257 Identificar EL-API_013 – APIs de "Configuração de Percentuais e Repasse"; 264 Criar EL-IBD_014 – Interface do Mapeamento de Banco de Dados de "Gestão de painel jurídico"; 271 Integrar EL-I_015 – "Cadastro do documento do profissional"; 290 Implementar EL-TC_014 – Casos de Teste de "Gestão de painel jurídico"; 296 Executar EL-T_015 – Testes de "Cadastro do documento do profissional"; 302 Registrar EL-LT_016 – Logs de Teste de "Gestão de relatórios financeiros"; 303 Executar EL-TH_016 – Testes de Homologação de "Gestão de relatórios financeiros"

Changed:

| ID | Task | Start | Finish | Duration | Total float | Predecessors | Other |
| --- | --- | --- | --- | --- | --- | --- | --- |
| 1 | **Projeto Elora** | 2026-05-29 → 2026-04-29 09:00 A (-30d) | 2026-06-02 → 2026-06-01 13:30 (-1d) | 3d? → 187.5h |  |  | was named Elora |
| 2 | **Iteração 01** | 2026-05-29 → 2026-04-29 09:00 A (-30d) | 2026-06-02 → 2026-05-13 18:00 (-20d) | 3d? → 87h | 0d → 12.56d |  |  |
| 3 | **Modelagem** | 2026-05-29 → 2026-04-29 09:00 (-30d) | 2026-06-02 → 2026-04-29 16:45 (-34d) | 3d? → 6.75h | 0d → 21.34d |  |  |
| 4 | **"Modelo de análise"** | 2026-05-29 → 2026-04-29 09:00 (-30d) | 2026-06-02 → 2026-04-29 16:30 (-34d) | 3d? → 6.5h | 0d → 22.62d |  |  |
| 5 | Elaborar EL-UCD_001 - Diagrama de Caso de Uso de "Modelo de análise" | 2026-05-29 → 2026-04-29 09:00 (-30d) | 2026-05-29 → 2026-04-29 10:30 (-30d) | 1d? → 1.5h | 0d → 22.62d |  | was named Elaborar EL-UCD_001 – Diagrama de Caso de Uso de "Modelo de análise" |
| 6 | Redigir EL-UCE_001 - Especificação de Caso de Uso de "Modelo de análise" | 2026-05-29 → 2026-04-29 10:30 (-30d) | 2026-05-29 → 2026-04-29 12:00 (-30d) | 1d? → 1.5h | 0d → 22.5d | 5SS → 5 | was named Redigir EL-UCE_001 – Especificação de Caso de Uso de "Modelo de análise" |
| 7 | Elaborar EL-CD_001 - Diagrama de Classes de "Modelo de análise" | 2026-06-01 → 2026-04-29 13:00 (-33d) | 2026-06-01 → 2026-04-29 13:45 (-33d) | 1d? → 0.75h | 0d → 22.62d |  | was named Elaborar EL-CD_001 – Diagrama de Classes de "Modelo de análise"; resources Analista 03 → Analista 02 |
| 8 | Elaborar EL-MER_001 - Modelo Entidade Relacionamento de "Modelo de análise" | 2026-06-01 → 2026-04-29 13:45 (-33d) | 2026-06-01 → 2026-04-29 15:15 (-33d) | 1d? → 1.5h | 0d → 22.62d | 7SS → 7 | was named Elaborar EL-MER_001 – Modelo Entidade Relacionamento de "Modelo de análise"; resources Analista 02 → Analista 01 |
| 9 | Gerar EL-Script_001 - Esquema/Script de "Modelo de análise" | 2026-06-02 → 2026-04-29 15:15 (-34d) | 2026-06-02 → 2026-04-29 16:00 (-34d) | 0.5d? → 0.75h | 0d → 22.62d |  | was named Gerar EL-Script_001 – Esquema/Script de "Modelo de análise"; resources Analista 03 → Analista 01 |
| 10 | Elaborar EL-DBD_001 - Documentação de Banco de Dados de "Modelo de análise" | 2026-06-02 → 2026-04-29 16:00 (-34d) | 2026-06-02 → 2026-04-29 16:30 (-34d) | 0.5d? → 0.5h | 0d → 22.62d |  | was named Elaborar EL-DBD_001 – Documentação de Banco de Dados de "Modelo de análise"; resources Analista 03 → Analista 01 |
| 11 | **"Controle de acesso"** | 2026-05-29 → 2026-04-29 09:00 (-30d) | 2026-05-29 → 2026-04-29 15:45 (-30d) | 1d? → 5.75h | 2d → 22.72d |  |  |
| 12 | Elaborar EL-UCD_002 - Diagrama de Caso de Uso de "Controle de acesso" | 2026-05-29 → 2026-04-29 09:00 (-30d) | 2026-05-29 → 2026-04-29 10:30 (-30d) | 1d? → 1.5h | 2d → 22.69d |  | was named Elaborar EL-UCD_002 – Diagrama de Caso de Uso de "Controle de acesso"; resources none → Analista 02 |
| 13 | Redigir EL-UCE_002 - Especificação de Caso de Uso de "Controle de acesso" | 2026-05-29 → 2026-04-29 10:30 (-30d) | 2026-05-29 → 2026-04-29 12:00 (-30d) | 1d? → 1.5h | 2d → 22.69d | none → 12 | was named Redigir EL-UCE_002 – Especificação de Caso de Uso de "Controle de acesso"; resources Dev 01 → Analista 02 |
| 14 | Elaborar EL-CD_002 - Diagrama de Classes de "Controle de acesso" | 2026-05-29 → 2026-04-29 13:00 (-30d) | 2026-05-29 → 2026-04-29 13:45 (-30d) | 1d? → 0.75h | 2d → 22.72d | none → 13 | was named Elaborar EL-CD_002 – Diagrama de Classes de "Controle de acesso"; resources Dev 01 → Analista 02 |
| 15 | Elaborar EL-MER_002 - Modelo Entidade Relacionamento de "Controle de acesso" | 2026-05-29 → 2026-04-29 13:45 (-30d) | 2026-05-29 → 2026-04-29 14:30 (-30d) | 1d? → 0.75h | 2d → 22.72d | none → 14 | was named Elaborar EL-MER_002 – Modelo Entidade Relacionamento de "Controle de acesso"; resources Dev 01 → Analista 02 |
| 16 | Gerar EL-Script_002 - Esquema/Script de "Controle de acesso" | 2026-05-29 → 2026-04-29 14:30 (-30d) | 2026-05-29 → 2026-04-29 15:15 (-30d) | 0.5d? → 0.75h | 2.5d → 22.72d | none → 15 | was named Gerar EL-Script_002 – Esquema/Script de "Controle de acesso"; resources Dev 01 → Analista 02 |
| 17 | Elaborar EL-DBD_002 - Documentação de Banco de Dados de "Controle de acesso" | 2026-05-29 → 2026-04-29 15:15 (-30d) | 2026-05-29 → 2026-04-29 15:45 (-30d) | 0.5d? → 0.5h | 2.5d → 22.72d | none → 16 | was named Elaborar EL-DBD_002 – Documentação de Banco de Dados de "Controle de acesso"; resources Dev 01 → Analista 02 |
| 18 | **"Cadastro de usuário"** | 2026-05-29 → 2026-04-29 09:00 (-30d) | 2026-05-29 → 2026-04-29 16:15 (-30d) | 1d? → 6.25h | 2d → 22.66d |  |  |
| 19 | Elaborar EL-UCD_003 - Diagrama de Caso de Uso de "Cadastro de usuário" | 2026-05-29 → 2026-04-29 09:00 (-30d) | 2026-05-29 → 2026-04-29 11:00 (-30d) | 1d? → 2h | 2d → 22.62d |  | was named Elaborar EL-UCD_003 – Diagrama de Caso de Uso de "Cadastro de usuário"; resources Dev 01 → Analista 03 |
| 20 | Redigir EL-UCE_003 - Especificação de Caso de Uso de "Cadastro de usuário" | 2026-05-29 → 2026-04-29 11:00 (-30d) | 2026-05-29 → 2026-04-29 13:30 (-30d) | 1d? → 1.5h | 2d → 22.62d | none → 19 | was named Redigir EL-UCE_003 – Especificação de Caso de Uso de "Cadastro de usuário"; resources Dev 01 → Analista 03 |
| 21 | Elaborar EL-CD_003 - Diagrama de Classes de "Cadastro de usuário" | 2026-05-29 → 2026-04-29 13:30 (-30d) | 2026-05-29 → 2026-04-29 14:15 (-30d) | 1d? → 0.75h | 2d → 22.66d | none → 20 | was named Elaborar EL-CD_003 – Diagrama de Classes de "Cadastro de usuário"; resources Dev 01 → Analista 03 |
| 22 | Elaborar EL-MER_003 - Modelo Entidade Relacionamento de "Cadastro de usuário" | 2026-05-29 → 2026-04-29 14:15 (-30d) | 2026-05-29 → 2026-04-29 15:00 (-30d) | 1d? → 0.75h | 2d → 22.66d | none → 21 | was named Elaborar EL-MER_003 – Modelo Entidade Relacionamento de "Cadastro de usuário"; resources Dev 01 → Analista 03 |
| 23 | Gerar EL-Script_003 - Esquema/Script de "Cadastro de usuário" | 2026-05-29 → 2026-04-29 15:00 (-30d) | 2026-05-29 → 2026-04-29 15:45 (-30d) | 0.5d? → 0.75h | 2.5d → 22.66d | none → 22 | was named Gerar EL-Script_003 – Esquema/Script de "Cadastro de usuário"; resources Dev 01 → Analista 03 |
| 24 | Elaborar EL-DBD_003 - Documentação de Banco de Dados de "Cadastro de usuário" | 2026-05-29 → 2026-04-29 15:45 (-30d) | 2026-05-29 → 2026-04-29 16:15 (-30d) | 0.5d? → 0.5h | 2.5d → 22.66d | none → 23 | was named Elaborar EL-DBD_003 – Documentação de Banco de Dados de "Cadastro de usuário"; resources Dev 01 → Analista 03 |
| 25 | **"Gestão de pagamento"** | 2026-05-29 → 2026-04-29 09:00 (-30d) | 2026-05-29 → 2026-04-29 16:45 (-30d) | 1d? → 6.75h | 2d → 21.34d |  |  |
| 26 | Elaborar EL-UCD_004 - Diagrama de Caso de Uso de "Gestão de pagamento" | 2026-05-29 → 2026-04-29 09:00 (-30d) | 2026-05-29 → 2026-04-29 10:30 (-30d) | 1d? → 1.5h | 2d → 21.34d |  | was named Elaborar EL-UCD_004 – Diagrama de Caso de Uso de "Gestão de pagamento"; resources Dev 01 → Analista 01 |
| 27 | Redigir EL-UCE_004 - Especificação de Caso de Uso de "Gestão de pagamento" | 2026-05-29 → 2026-04-29 10:30 (-30d) | 2026-05-29 → 2026-04-29 12:00 (-30d) | 1d? → 1.5h | 2d → 21.34d | none → 26 | was named Redigir EL-UCE_004 – Especificação de Caso de Uso de "Gestão de pagamento"; resources Dev 01 → Analista 01 |
| 28 | Elaborar EL-CD_004 - Diagrama de Classes de "Gestão de pagamento" | 2026-05-29 → 2026-04-29 13:00 (-30d) | 2026-05-29 → 2026-04-29 13:45 (-30d) | 1d? → 0.75h | 2d → 21.34d | none → 27 | was named Elaborar EL-CD_004 – Diagrama de Classes de "Gestão de pagamento"; resources Dev 01 → Analista 01 |
| 29 | Elaborar EL-MER_004 - Modelo Entidade Relacionamento de "Gestão de pagamento" | 2026-05-29 → 2026-04-29 13:45 (-30d) | 2026-05-29 → 2026-04-29 14:30 (-30d) | 1d? → 0.75h | 2d → 21.31d | none → 28 | was named Elaborar EL-MER_004 – Modelo Entidade Relacionamento de "Gestão de pagamento"; resources Dev 01 → Analista 01 |
| 30 | Gerar EL-Script_004 - Esquema/Script de "Gestão de pagamento" | 2026-05-29 → 2026-04-29 14:30 (-30d) | 2026-05-29 → 2026-04-29 15:15 (-30d) | 0.5d? → 0.75h | 2.5d → 21.22d | none → 29 | was named Gerar EL-Script_004 – Esquema/Script de "Gestão de pagamento"; resources Dev 01 → Analista 01 |
| 31 | Elaborar EL-DBD_004 - Documentação de Banco de Dados de "Gestão de pagamento" | 2026-05-29 → 2026-04-29 15:15 (-30d) | 2026-05-29 → 2026-04-29 16:45 (-30d) | 0.5d? → 1.5h | 2.5d → 21.34d | none → 30 | was named Elaborar EL-DBD_004 – Documentação de Banco de Dados de "Gestão de pagamento"; resources Dev 01 → Analista 01 |
| 32 | **Construção** | 2026-05-29 → 2026-04-29 09:00 (-30d) | 2026-06-01 → 2026-05-01 09:45 (-31d) | 2d? → 16.75h | 1d → 21.34d |  |  |
| 33 | **"Modelo de análise"** | 2026-05-29 → 2026-04-29 16:45 (-30d) | 2026-06-01 → 2026-05-01 09:45 (-31d) | 2d? → 10h | 1d → 21.34d |  |  |
| 34 | Implementar EL-CMC_005 - Classes, Métodos e Componentes de "Modelo de análise" | 2026-05-29 → 2026-04-29 16:45 (-30d) | 2026-06-01 → 2026-04-30 10:45 (-32d) | 2d? → 3h | 1d → 21.34d | none → 31 | was named Implementar EL-CMC_001 – Classes, Métodos e Componentes de "Modelo de análise"; resources none → Dev 01 |
| 35 | Implementar EL-FUX_005 - Front-UX de "Modelo de análise" | 2026-05-29 → 2026-04-30 10:45 (-29d) | 2026-06-01 → 2026-04-30 14:45 (-32d) | 2d? → 3h | 1d → 21.28d | none → 34 | was named Implementar EL-FUX_001 – Front-UX de "Modelo de análise"; resources none → Dev 01 |
| 36 | Identificar EL-API_005 - APIs de "Modelo de análise" | 2026-05-29 → 2026-04-30 14:45 (-29d) | 2026-05-29 → 2026-04-30 16:15 (-29d) | 1d? → 1.5h | 2d → 21.28d | none → 35 | was named Identificar EL-API_001 – APIs de "Modelo de análise"; resources none → Dev 01 |
| 37 | Criar EL-IBD_005 - Interface do Mapeamento de Banco de Dados de "Modelo de análise" | 2026-05-29 → 2026-04-30 16:15 (-29d) | 2026-05-29 → 2026-04-30 17:45 (-29d) | 1d? → 1.5h | 2d → 21.34d | none → 36 | was named Criar EL-IBD_001 – Interface do Mapeamento de Banco de Dados de "Modelo de análise"; resources none → Dev 01 |
| 38 | Integração parcial EL-IP_005 - "Modelo de análise" | 2026-05-29 → 2026-04-30 17:45 (-29d) | 2026-05-29 → 2026-05-01 09:45 (-28d) | 1d? → 1h | 2d → 21.34d | none → 37 | was named Integrar EL-I_001 – "Modelo de análise"; resources none → Dev 01 |
| 39 | **"Controle de acesso"** | 2026-05-29 → 2026-04-29 09:00 (-30d) | 2026-06-01 → 2026-04-30 11:00 (-32d) | 2d? → 10h | 1d → 22.19d |  |  |
| 40 | Implementar EL-CMC_006 - Classes, Métodos e Componentes de "Controle de acesso" | 2026-05-29 → 2026-04-29 09:00 (-30d) | 2026-06-01 → 2026-04-29 13:15 (-33d) | 2d? → 3.25h | 1d → 22.19d |  | was named Implementar EL-CMC_002 – Classes, Métodos e Componentes de "Controle de acesso"; resources none → Dev 02 |
| 41 | Implementar EL-FUX_006 - Front-UX de "Controle de acesso" | 2026-05-29 → 2026-04-29 13:15 (-30d) | 2026-06-01 → 2026-04-29 16:00 (-33d) | 2d? → 2.75h | 1d → 22.12d | none → 40 | was named Implementar EL-FUX_002 – Front-UX de "Controle de acesso"; resources none → Dev 02 |
| 42 | Identificar EL-API_006 - APIs de "Controle de acesso" | 2026-05-29 → 2026-04-29 16:00 (-30d) | 2026-05-29 → 2026-04-29 17:30 (-30d) | 1d? → 1.5h | 2d → 22.12d | none → 41 | was named Identificar EL-API_002 – APIs de "Controle de acesso"; resources none → Dev 02 |
| 43 | Criar EL-IBD_006 - Interface do Mapeamento de Banco de Dados de "Controle de acesso" | 2026-05-29 → 2026-04-29 17:30 (-30d) | 2026-05-29 → 2026-04-30 10:00 (-29d) | 1d? → 1.5h | 2d → 22.19d | none → 42 | was named Criar EL-IBD_002 – Interface do Mapeamento de Banco de Dados de "Controle de acesso"; resources none → Dev 02 |
| 44 | Integração parcial EL-IP_006 - "Controle de acesso" | 2026-05-29 → 2026-04-30 10:00 (-29d) | 2026-05-29 → 2026-04-30 11:00 (-29d) | 1d? → 1h | 2d → 22.19d | none → 43 | was named Integrar EL-I_002 – "Controle de acesso"; resources none → Dev 02 |
| 45 | **"Cadastro de usuário"** | 2026-05-29 → 2026-04-29 09:00 (-30d) | 2026-06-01 → 2026-04-30 12:00 (-32d) | 2d? → 11h | 1d → 22.06d |  |  |
| 46 | Implementar EL-CMC_007 - Classes, Métodos e Componentes de "Cadastro de usuário" | 2026-05-29 → 2026-04-29 09:00 (-30d) | 2026-06-01 → 2026-04-29 14:15 (-33d) | 2d? → 4.25h | 1d → 22.06d |  | was named Implementar EL-CMC_003 – Classes, Métodos e Componentes de "Cadastro de usuário"; resources none → Dev 03 |
| 47 | Implementar EL-FUX_007 - Front-UX de "Cadastro de usuário" | 2026-05-29 → 2026-04-29 14:15 (-30d) | 2026-06-01 → 2026-04-29 17:00 (-33d) | 2d? → 2.75h | 1d → 22d | none → 46 | was named Implementar EL-FUX_003 – Front-UX de "Cadastro de usuário"; resources none → Dev 03 |
| 48 | Identificar EL-API_007 - APIs de "Cadastro de usuário" | 2026-05-29 → 2026-04-29 17:00 (-30d) | 2026-05-29 → 2026-04-29 18:00 (-30d) | 1d? → 1h | 2d → 22d | none → 47 | was named Identificar EL-API_003 – APIs de "Cadastro de usuário"; resources none → Dev 03 |
| 49 | Criar EL-IBD_007 - Interface do Mapeamento de Banco de Dados de "Cadastro de usuário" | 2026-05-29 → 2026-04-30 09:00 (-29d) | 2026-05-29 → 2026-04-30 11:00 (-29d) | 1d? → 2h | 2d → 22.06d | none → 48 | was named Criar EL-IBD_003 – Interface do Mapeamento de Banco de Dados de "Cadastro de usuário"; resources none → Dev 03 |
| 50 | Integração parcial EL-IP_007 - "Cadastro de usuário" | 2026-05-29 → 2026-04-30 11:00 (-29d) | 2026-05-29 → 2026-04-30 12:00 (-29d) | 1d? → 1h | 2d → 22.06d | none → 49 | was named Integrar EL-I_003 – "Cadastro de usuário"; resources none → Dev 03 |
| 51 | **"Gestão de pagamento"** | 2026-05-29 → 2026-04-29 09:00 (-30d) | 2026-06-01 → 2026-04-30 10:15 (-32d) | 2d? → 9.25h | 1d → 22d |  |  |
| 52 | Implementar EL-CMC_008 - Classes, Métodos e Componentes de "Gestão de pagamento" | 2026-05-29 → 2026-04-29 09:00 (-30d) | 2026-06-01 → 2026-04-29 13:15 (-33d) | 2d? → 3.25h | 1d → 22d |  | was named Implementar EL-CMC_004 – Classes, Métodos e Componentes de "Gestão de pagamento"; resources none → Dev 01 |
| 53 | Implementar EL-FUX_008 - Front-UX de "Gestão de pagamento" | 2026-05-29 → 2026-04-29 13:15 (-30d) | 2026-06-01 → 2026-04-29 15:00 (-33d) | 2d? → 1.75h | 1d → 22d | none → 52 | was named Implementar EL-FUX_004 – Front-UX de "Gestão de pagamento"; resources none → Dev 01 |
| 54 | Identificar EL-API_008 - APIs de "Gestão de pagamento" | 2026-05-29 → 2026-04-29 15:00 (-30d) | 2026-05-29 → 2026-04-29 17:30 (-30d) | 1d? → 2.5h | 2d → 22d | none → 53 | was named Identificar EL-API_004 – APIs de "Gestão de pagamento"; resources none → Dev 01 |
| 55 | Criar EL-IBD_008 - Interface do Mapeamento de Banco de Dados de "Gestão de pagamento" | 2026-05-29 → 2026-04-29 17:30 (-30d) | 2026-05-29 → 2026-04-30 10:00 (-29d) | 1d? → 1.5h | 2d → 22d | none → 54 | was named Criar EL-IBD_004 – Interface do Mapeamento de Banco de Dados de "Gestão de pagamento"; resources none → Dev 01 |
| 56 | Integração parcial EL-IP_008 - "Gestão de pagamento" | 2026-05-29 → 2026-04-30 10:00 (-29d) | 2026-05-29 → 2026-04-30 10:15 (-29d) | 1d? → 0.25h | 2d → 22d | none → 55 | was named Integrar EL-I_004 – "Gestão de pagamento"; resources none → Dev 01 |
| 57 | **Testes** | 2026-05-29 → 2026-04-29 09:00 (-30d) | 2026-05-29 → 2026-04-30 13:30 (-29d) | 1d? → 11.5h | 2d → 22d |  |  |
| 58 | **"Modelo de análise"** | 2026-05-29 → 2026-04-30 10:15 (-29d) | 2026-05-29 → 2026-04-30 13:30 (-29d) | 1d? → 2.25h | 2d → 22d |  |  |
| 59 | Implementar EL-TC_009 - Casos de Teste de "Modelo de análise" | 2026-05-29 → 2026-04-30 10:15 (-29d) | 2026-05-29 → 2026-04-30 11:00 (-29d) | 1d? → 0.75h | 2d → 22d | none → 56 | was named Implementar EL-TC_001 – Casos de Teste de "Modelo de análise"; resources none → QA 01 |
| 60 | Executar EL-T_009 - Testes de "Modelo de análise" | 2026-05-29 → 2026-04-30 11:00 (-29d) | 2026-05-29 → 2026-04-30 11:45 (-29d) | 1d? → 0.75h | 2d → 22d | none → 59 | was named Executar EL-T_001 – Testes de "Modelo de análise"; resources none → QA 01 |
| 61 | Registrar EL-LT_009 - Logs de Teste de "Modelo de análise" | 2026-05-29 → 2026-04-30 11:45 (-29d) | 2026-05-29 → 2026-04-30 13:15 (-29d) | 0.5d? → 0.5h | 2.5d → 22d | none → 60 | was named Registrar EL-LT_001 – Logs de Teste de "Modelo de análise"; resources none → QA 01 |
| 62 | Executar EL-TH_009 - Testes de Homologação de "Modelo de análise" | 2026-05-29 → 2026-04-30 13:15 (-29d) | 2026-05-29 → 2026-04-30 13:30 (-29d) | 1d? → 0.25h | 2d → 22d | none → 61 | was named Executar EL-TH_001 – Testes de Homologação de "Modelo de análise"; resources none → QA 01 |
| 63 | **"Controle de acesso"** | 2026-05-29 → 2026-04-29 09:00 (-30d) | 2026-05-29 → 2026-04-29 11:15 (-30d) | 1d? → 2.25h | 2d → 23.16d |  |  |
| 64 | Implementar EL-TC_010 - Casos de Teste de "Controle de acesso" | 2026-05-29 → 2026-04-29 09:00 (-30d) | 2026-05-29 → 2026-04-29 09:45 (-30d) | 1d? → 0.75h | 2d → 23.16d |  | was named Implementar EL-TC_002 – Casos de Teste de "Controle de acesso"; resources none → QA 02 |
| 65 | Executar EL-T_010 - Testes de "Controle de acesso" | 2026-05-29 → 2026-04-29 09:45 (-30d) | 2026-05-29 → 2026-04-29 10:30 (-30d) | 1d? → 0.75h | 2d → 23.16d | none → 64 | was named Executar EL-T_002 – Testes de "Controle de acesso"; resources none → QA 02 |
| 66 | Registrar EL-LT_010 - Logs de Teste de "Controle de acesso" | 2026-05-29 → 2026-04-29 10:30 (-30d) | 2026-05-29 → 2026-04-29 11:00 (-30d) | 0.5d? → 0.5h | 2.5d → 23.16d | none → 65 | was named Registrar EL-LT_002 – Logs de Teste de "Controle de acesso"; resources none → QA 02 |
| 67 | Executar EL-TH_010 - Testes de Homologação de "Controle de acesso" | 2026-05-29 → 2026-04-29 11:00 (-30d) | 2026-05-29 → 2026-04-29 11:15 (-30d) | 1d? → 0.25h | 2d → 23.16d | none → 66 | was named Executar EL-TH_002 – Testes de Homologação de "Controle de acesso"; resources none → QA 02 |
| 68 | **"Cadastro de usuário"** | 2026-05-29 → 2026-04-29 09:00 (-30d) | 2026-05-29 → 2026-04-29 12:00 (-30d) | 1d? → 3h | 2d → 23.06d |  |  |
| 69 | Implementar EL-TC_011 - Casos de Teste de "Cadastro de usuário" | 2026-05-29 → 2026-04-29 09:00 (-30d) | 2026-05-29 → 2026-04-29 10:30 (-30d) | 1d? → 1.5h | 2d → 23.06d |  | was named Implementar EL-TC_003 – Casos de Teste de "Cadastro de usuário"; resources none → QA 01 |
| 70 | Executar EL-T_011 - Testes de "Cadastro de usuário" | 2026-05-29 → 2026-04-29 10:30 (-30d) | 2026-05-29 → 2026-04-29 11:15 (-30d) | 1d? → 0.75h | 2d → 23.06d | none → 69 | was named Executar EL-T_003 – Testes de "Cadastro de usuário"; resources none → QA 01 |

| ID | Task | Start | Finish | Duration | Complete | Total float | Predecessors | Other |
| --- | --- | --- | --- | --- | --- | --- | --- | --- |
| 71 | Registrar EL-LT_011 - Logs de Teste de "Cadastro de usuário" | 2026-05-29 → 2026-04-29 11:15 (-30d) | 2026-05-29 → 2026-04-29 11:45 (-30d) | 0.5d? → 0.5h |  | 2.5d → 23.06d | none → 70 | was named Registrar EL-LT_003 – Logs de Teste de "Cadastro de usuário"; resources none → QA 01 |
| 72 | Executar EL-TH_011 - Testes de Homologação de "Cadastro de usuário" | 2026-05-29 → 2026-04-29 11:45 (-30d) | 2026-05-29 → 2026-04-29 12:00 (-30d) | 1d? → 0.25h |  | 2d → 23.06d | none → 71 | was named Executar EL-TH_003 – Testes de Homologação de "Cadastro de usuário"; resources none → QA 01 |
| 73 | **"Gestão de pagamento"** | 2026-05-29 → 2026-04-29 09:00 (-30d) | 2026-05-29 → 2026-04-29 11:15 (-30d) | 1d? → 2.25h |  | 2d → 22.78d |  |  |
| 74 | Implementar EL-TC_012 - Casos de Teste de "Gestão de pagamento" | 2026-05-29 → 2026-04-29 09:00 (-30d) | 2026-05-29 → 2026-04-29 09:45 (-30d) | 1d? → 0.75h |  | 2d → 22.78d |  | was named Implementar EL-TC_004 – Casos de Teste de "Gestão de pagamento"; resources none → QA 02 |
| 75 | Executar EL-T_012 - Testes de "Gestão de pagamento" | 2026-05-29 → 2026-04-29 09:45 (-30d) | 2026-05-29 → 2026-04-29 10:30 (-30d) | 1d? → 0.75h |  | 2d → 22.69d | none → 74 | was named Executar EL-T_004 – Testes de "Gestão de pagamento"; resources none → QA 02 |
| 76 | Registrar EL-LT_012 - Logs de Teste de "Gestão de pagamento" | 2026-05-29 → 2026-04-29 10:30 (-30d) | 2026-05-29 → 2026-04-29 11:00 (-30d) | 0.5d? → 0.5h |  | 2.5d → 22.69d | none → 75 | was named Registrar EL-LT_004 – Logs de Teste de "Gestão de pagamento"; resources none → QA 02 |
| 77 | Executar EL-TH_012 - Testes de Homologação de "Gestão de pagamento" | 2026-05-29 → 2026-04-29 11:00 (-30d) | 2026-05-29 → 2026-04-29 11:15 (-30d) | 1d? → 0.25h |  | 2d → 22.78d | none → 76 | was named Executar EL-TH_004 – Testes de Homologação de "Gestão de pagamento"; resources none → QA 02 |
| 82 | Integração total EL-IT_014 - "Controle de acesso" | 2026-05-29 → 2026-04-29 09:00 (-30d) | 2026-05-29 → 2026-04-29 15:00 (-30d) | 1d? → 5h |  | 2d → 22.81d |  | was named Elaborar EL-UCD_005 – Diagrama de Caso de Uso de "Nível de acesso ao sistema"; resources none → Integrador |
| 83 | **"Cadastro de usuário"** | 2026-05-29 → 2026-04-29 09:00 (-30d) | 2026-05-29 → 2026-04-29 12:00 (-30d) | 1d? → 3h |  | 2d → 23.06d |  | was named Redigir EL-UCE_005 – Especificação de Caso de Uso de "Nível de acesso ao sistema" |
| 84 | Integração total EL-IT_015 - "Cadastro de usuário" | 2026-05-29 → 2026-04-29 09:00 (-30d) | 2026-05-29 → 2026-04-29 12:00 (-30d) | 1d? → 3h |  | 2d → 23.06d |  | was named Elaborar EL-CD_005 – Diagrama de Classes de "Nível de acesso ao sistema"; resources none → Integrador |
| 85 | **"Gestão de pagamento"** | 2026-05-29 → 2026-04-29 09:00 (-30d) | 2026-05-29 → 2026-04-29 15:00 (-30d) | 1d? → 5h |  | 2d → 10.25d |  | was named Elaborar EL-MER_005 – Modelo Entidade Relacionamento de "Nível de acesso ao sistema" |
| 86 | Integração total EL-IT_016 - "Gestão de pagamento" | 2026-05-29 → 2026-04-29 09:00 (-30d) | 2026-05-29 → 2026-04-29 15:00 (-30d) | 0.5d? → 5h |  | 2.5d → 10.25d |  | was named Gerar EL-Script_005 – Esquema/Script de "Nível de acesso ao sistema"; resources none → Integrador |
| 87 | ★ Marco da Entrega da Iteração 01 | 2026-05-29 → 2026-05-13 18:00 A (-16d) | 2026-05-29 → 2026-05-13 18:00 A (-16d) | 0d? → 0h | 0% → 100% | 3d → none | none → 86 | resources none → Gerente de Projeto |
| 88 | **Iteração 02** | 2026-05-29 → 2026-05-14 09:00 A (-15d) | 2026-06-01 → 2026-05-28 18:00 (-4d) | 2d? → 87h |  | 1d → 1.56d | none → 87 |  |
| 89 | **Modelagem** | 2026-05-29 → 2026-05-14 09:00 (-15d) | 2026-05-29 → 2026-05-14 15:00 (-15d) | 1d? → 5h |  | 2d → 11.25d |  |  |
| 90 | **"Nível de acesso ao sistema"** | 2026-05-29 → 2026-05-14 09:00 (-15d) | 2026-05-29 → 2026-05-14 12:00 (-15d) | 1d? → 3h |  | 2d → 12.06d |  |  |
| 91 | Elaborar EL-UCD_017 - Diagrama de Caso de Uso de "Nível de acesso ao sistema" | 2026-05-29 → 2026-05-14 09:00 (-15d) | 2026-05-29 → 2026-05-14 09:45 (-15d) | 1d? → 0.75h |  | 2d → 12.06d |  | was named Elaborar EL-CD_006 – Diagrama de Classes de "Cadastro de profissionais"; resources none → Analista 01 |
| 92 | Redigir EL-UCE_017 - Especificação de Caso de Uso de "Nível de acesso ao sistema" | 2026-05-29 → 2026-05-14 09:45 (-15d) | 2026-05-29 → 2026-05-14 10:30 (-15d) | 1d? → 0.75h |  | 2d → 12.06d | none → 91 | was named Elaborar EL-MER_006 – Modelo Entidade Relacionamento de "Cadastro de profissionais"; resources none → Analista 01 |
| 93 | Elaborar EL-CD_017 - Diagrama de Classes de "Nível de acesso ao sistema" | 2026-05-29 → 2026-05-14 10:30 (-15d) | 2026-05-29 → 2026-05-14 11:00 (-15d) | 0.5d? → 0.5h |  | 2.5d → 12.06d | none → 92 | was named Gerar EL-Script_006 – Esquema/Script de "Cadastro de profissionais"; resources none → Analista 01 |
| 94 | Elaborar EL-MER_017 - Modelo Entidade Relacionamento de "Nível de acesso ao sistema" | 2026-05-29 → 2026-05-14 11:00 (-15d) | 2026-05-29 → 2026-05-14 11:30 (-15d) | 0.5d? → 0.5h |  | 2.5d → 12.06d | none → 93 | was named Elaborar EL-DBD_006 – Documentação de Banco de Dados de "Cadastro de profissionais"; resources none → Analista 01 |
| 96 | Elaborar EL-DBD_017 - Documentação de Banco de Dados de "Nível de acesso ao sistema" | 2026-05-29 → 2026-05-14 11:45 (-15d) | 2026-05-29 → 2026-05-14 12:00 (-15d) | 1d? → 0.25h |  | 2d → 12.06d | none → 95 | was named Elaborar EL-UCD_007 – Diagrama de Caso de Uso de "Definição de taxa de serviço"; resources none → Analista 01 |
| 97 | **"Cadastro de profissionais"** | 2026-05-29 → 2026-05-14 09:00 (-15d) | 2026-05-29 → 2026-05-14 13:45 (-15d) | 1d? → 3.75h |  | 2d → 11.88d |  |  |
| 98 | Elaborar EL-UCD_018 - Diagrama de Caso de Uso de "Cadastro de profissionais" | 2026-05-29 → 2026-05-14 09:00 (-15d) | 2026-05-29 → 2026-05-14 09:45 (-15d) | 1d? → 0.75h |  | 2d → 11.88d |  | was named Elaborar EL-CD_007 – Diagrama de Classes de "Definição de taxa de serviço"; resources none → Analista 02 |
| 99 | Redigir EL-UCE_018 - Especificação de Caso de Uso de "Cadastro de profissionais" | 2026-05-29 → 2026-05-14 09:45 (-15d) | 2026-05-29 → 2026-05-14 11:15 (-15d) | 1d? → 1.5h |  | 2d → 11.97d | none → 98 | was named Elaborar EL-MER_007 – Modelo Entidade Relacionamento de "Definição de taxa de serviço"; resources none → Analista 02 |
| 100 | Elaborar EL-CD_018 - Diagrama de Classes de "Cadastro de profissionais" | 2026-05-29 → 2026-05-14 11:15 (-15d) | 2026-05-29 → 2026-05-14 11:45 (-15d) | 0.5d? → 0.5h |  | 2.5d → 11.97d | none → 99 | was named Gerar EL-Script_007 – Esquema/Script de "Definição de taxa de serviço"; resources none → Analista 02 |
| 101 | Elaborar EL-MER_018 - Modelo Entidade Relacionamento de "Cadastro de profissionais" | 2026-05-29 → 2026-05-14 11:45 (-15d) | 2026-05-29 → 2026-05-14 13:15 (-15d) | 0.5d? → 0.5h |  | 2.5d → 11.97d | none → 100 | was named Elaborar EL-DBD_007 – Documentação de Banco de Dados de "Definição de taxa de serviço"; resources none → Analista 02 |
| 103 | Elaborar EL-DBD_018 - Documentação de Banco de Dados de "Cadastro de profissionais" | 2026-05-29 → 2026-05-14 13:30 (-15d) | 2026-05-29 → 2026-05-14 13:45 (-15d) | 1d? → 0.25h |  | 2d → 11.97d | none → 102 | was named Elaborar EL-UCD_008 – Diagrama de Caso de Uso de "Controle de assinatura de contrato"; resources none → Analista 02 |
| 104 | **"Definição de taxa de serviço"** | 2026-05-29 → 2026-05-14 09:00 (-15d) | 2026-05-29 → 2026-05-14 12:00 (-15d) | 1d? → 3h |  | 2d → 12.06d |  |  |
| 105 | Elaborar EL-UCD_019 - Diagrama de Caso de Uso de "Definição de taxa de serviço" | 2026-05-29 → 2026-05-14 09:00 (-15d) | 2026-05-29 → 2026-05-14 09:45 (-15d) | 1d? → 0.75h |  | 2d → 12.06d |  | was named Elaborar EL-CD_008 – Diagrama de Classes de "Controle de assinatura de contrato"; resources none → Analista 03 |
| 106 | Redigir EL-UCE_019 - Especificação de Caso de Uso de "Definição de taxa de serviço" | 2026-05-29 → 2026-05-14 09:45 (-15d) | 2026-05-29 → 2026-05-14 10:30 (-15d) | 1d? → 0.75h |  | 2d → 12.06d | none → 105 | was named Elaborar EL-MER_008 – Modelo Entidade Relacionamento de "Controle de assinatura de contrato"; resources none → Analista 03 |
| 107 | Elaborar EL-CD_019 - Diagrama de Classes de "Definição de taxa de serviço" | 2026-05-29 → 2026-05-14 10:30 (-15d) | 2026-05-29 → 2026-05-14 11:00 (-15d) | 0.5d? → 0.5h |  | 2.5d → 12.06d | none → 106 | was named Gerar EL-Script_008 – Esquema/Script de "Controle de assinatura de contrato"; resources none → Analista 03 |
| 108 | Elaborar EL-MER_019 - Modelo Entidade Relacionamento de "Definição de taxa de serviço" | 2026-05-29 → 2026-05-14 11:00 (-15d) | 2026-05-29 → 2026-05-14 11:30 (-15d) | 0.5d? → 0.5h |  | 2.5d → 12.06d | none → 107 | was named Elaborar EL-DBD_008 – Documentação de Banco de Dados de "Controle de assinatura de contrato"; resources none → Analista 03 |
| 110 | Elaborar EL-DBD_019 - Documentação de Banco de Dados de "Definição de taxa de serviço" | 2026-05-29 → 2026-05-14 11:45 (-15d) | 2026-05-29 → 2026-05-14 12:00 (-15d) | 1d? → 0.25h |  | 2d → 12.06d | none → 109 | was named Elaborar EL-UCD_009 – Diagrama de Caso de Uso de "Proposta de contrato"; resources none → Analista 03 |
| 111 | **"Controle de assinatura de contrato"** | 2026-05-29 → 2026-05-14 09:00 (-15d) | 2026-05-29 → 2026-05-14 12:00 (-15d) | 1d? → 3h |  | 2d → 12.06d |  |  |
| 112 | Elaborar EL-UCD_020 - Diagrama de Caso de Uso de "Controle de assinatura de contrato" | 2026-05-29 → 2026-05-14 09:00 (-15d) | 2026-05-29 → 2026-05-14 09:45 (-15d) | 1d? → 0.75h |  | 2d → 12.06d |  | was named Elaborar EL-CD_009 – Diagrama de Classes de "Proposta de contrato"; resources none → Analista 01 |
| 113 | Redigir EL-UCE_020 - Especificação de Caso de Uso de "Controle de assinatura de contrato" | 2026-05-29 → 2026-05-14 09:45 (-15d) | 2026-05-29 → 2026-05-14 10:30 (-15d) | 1d? → 0.75h |  | 2d → 12.06d | none → 112 | was named Elaborar EL-MER_009 – Modelo Entidade Relacionamento de "Proposta de contrato"; resources none → Analista 01 |
| 114 | Elaborar EL-CD_020 - Diagrama de Classes de "Controle de assinatura de contrato" | 2026-05-29 → 2026-05-14 10:30 (-15d) | 2026-05-29 → 2026-05-14 11:00 (-15d) | 0.5d? → 0.5h |  | 2.5d → 12.06d | none → 113 | was named Gerar EL-Script_009 – Esquema/Script de "Proposta de contrato"; resources none → Analista 01 |
| 115 | Elaborar EL-MER_020 - Modelo Entidade Relacionamento de "Controle de assinatura de contrato" | 2026-05-29 → 2026-05-14 11:00 (-15d) | 2026-05-29 → 2026-05-14 11:30 (-15d) | 0.5d? → 0.5h |  | 2.5d → 12.06d | none → 114 | was named Elaborar EL-DBD_009 – Documentação de Banco de Dados de "Proposta de contrato"; resources none → Analista 01 |
| 117 | Elaborar EL-DBD_020 - Documentação de Banco de Dados de "Controle de assinatura de contrato" | 2026-05-29 → 2026-05-14 11:45 (-15d) | 2026-05-29 → 2026-05-14 12:00 (-15d) | 1d? → 0.25h |  | 2d → 12.06d | none → 116 | was named Elaborar EL-UCD_010 – Diagrama de Caso de Uso de "Busca de profissionais"; resources none → Analista 01 |
| 118 | **"Proposta de contrato"** | 2026-05-29 → 2026-05-14 09:00 (-15d) | 2026-05-29 → 2026-05-14 14:00 (-15d) | 1d? → 4h |  | 2d → 11.88d |  |  |
| 119 | Elaborar EL-UCD_021 - Diagrama de Caso de Uso de "Proposta de contrato" | 2026-05-29 → 2026-05-14 09:00 (-15d) | 2026-05-29 → 2026-05-14 10:45 (-15d) | 1d? → 1.75h |  | 2d → 11.88d |  | was named Elaborar EL-CD_010 – Diagrama de Classes de "Busca de profissionais"; resources none → Analista 02 |
| 120 | Redigir EL-UCE_021 - Especificação de Caso de Uso de "Proposta de contrato" | 2026-05-29 → 2026-05-14 10:45 (-15d) | 2026-05-29 → 2026-05-14 11:30 (-15d) | 1d? → 0.75h |  | 2d → 11.94d | none → 119 | was named Elaborar EL-MER_010 – Modelo Entidade Relacionamento de "Busca de profissionais"; resources none → Analista 02 |
| 121 | Elaborar EL-CD_021 - Diagrama de Classes de "Proposta de contrato" | 2026-05-29 → 2026-05-14 11:30 (-15d) | 2026-05-29 → 2026-05-14 12:00 (-15d) | 0.5d? → 0.5h |  | 2.5d → 11.94d | none → 120 | was named Gerar EL-Script_010 – Esquema/Script de "Busca de profissionais"; resources none → Analista 02 |
| 122 | Elaborar EL-MER_021 - Modelo Entidade Relacionamento de "Proposta de contrato" | 2026-05-29 → 2026-05-14 13:00 (-15d) | 2026-05-29 → 2026-05-14 13:30 (-15d) | 0.5d? → 0.5h |  | 2.5d → 11.94d | none → 121 | was named Elaborar EL-DBD_010 – Documentação de Banco de Dados de "Busca de profissionais"; resources none → Analista 02 |
| 124 | Elaborar EL-DBD_021 - Documentação de Banco de Dados de "Proposta de contrato" | 2026-05-29 → 2026-05-14 13:45 (-15d) | 2026-05-29 → 2026-05-14 14:00 (-15d) | 1d? → 0.25h |  | 2d → 11.94d | none → 123 | was named Elaborar EL-UCD_011 – Diagrama de Caso de Uso de "Gerenciamento de escala de trabalho"; resources none → Analista 02 |
| 125 | **"Busca de profissionais"** | 2026-05-29 → 2026-05-14 09:00 (-15d) | 2026-05-29 → 2026-05-14 12:00 (-15d) | 1d? → 3h |  | 2d → 12.06d |  |  |
| 126 | Elaborar EL-UCD_022 - Diagrama de Caso de Uso de "Busca de profissionais" | 2026-05-29 → 2026-05-14 09:00 (-15d) | 2026-05-29 → 2026-05-14 09:45 (-15d) | 1d? → 0.75h |  | 2d → 12.06d |  | was named Elaborar EL-CD_011 – Diagrama de Classes de "Gerenciamento de escala de trabalho"; resources none → Analista 03 |
| 127 | Redigir EL-UCE_022 - Especificação de Caso de Uso de "Busca de profissionais" | 2026-05-29 → 2026-05-14 09:45 (-15d) | 2026-05-29 → 2026-05-14 10:30 (-15d) | 1d? → 0.75h |  | 2d → 12.06d | none → 126 | was named Elaborar EL-MER_011 – Modelo Entidade Relacionamento de "Gerenciamento de escala de trabalho"; resources none → Analista 03 |
| 128 | Elaborar EL-CD_022 - Diagrama de Classes de "Busca de profissionais" | 2026-05-29 → 2026-05-14 10:30 (-15d) | 2026-05-29 → 2026-05-14 11:00 (-15d) | 0.5d? → 0.5h |  | 2.5d → 12.06d | none → 127 | was named Gerar EL-Script_011 – Esquema/Script de "Gerenciamento de escala de trabalho"; resources none → Analista 03 |
| 129 | Elaborar EL-MER_022 - Modelo Entidade Relacionamento de "Busca de profissionais" | 2026-05-29 → 2026-05-14 11:00 (-15d) | 2026-05-29 → 2026-05-14 11:30 (-15d) | 0.5d? → 0.5h |  | 2.5d → 12.06d | none → 128 | was named Elaborar EL-DBD_011 – Documentação de Banco de Dados de "Gerenciamento de escala de trabalho"; resources none → Analista 03 |
| 132 | **"Gerenciamento de escala de trabalho"** | 2026-05-29 → 2026-05-14 09:00 (-15d) | 2026-05-29 → 2026-05-14 15:00 (-15d) | 1d? → 5h |  | 2d → 11.25d |  |  |
| 133 | Elaborar EL-UCD_023 - Diagrama de Caso de Uso de "Gerenciamento de escala de trabalho" | 2026-05-29 → 2026-05-14 09:00 (-15d) | 2026-06-01 → 2026-05-14 09:45 (-18d) | 2d? → 0.75h |  | 1d → 11.25d |  | was named Implementar EL-FUX_005 – Front-UX de "Nível de acesso ao sistema"; resources none → Analista 01 |
| 134 | Redigir EL-UCE_023 - Especificação de Caso de Uso de "Gerenciamento de escala de trabalho" | 2026-05-29 → 2026-05-14 09:45 (-15d) | 2026-05-29 → 2026-05-14 10:00 (-15d) | 1d? → 0.25h |  | 2d → 11.25d | none → 133 | was named Identificar EL-API_005 – APIs de "Nível de acesso ao sistema"; resources none → Analista 01 |
| 135 | Elaborar EL-CD_023 - Diagrama de Classes de "Gerenciamento de escala de trabalho" | 2026-05-29 → 2026-05-14 10:00 (-15d) | 2026-05-29 → 2026-05-14 10:30 (-15d) | 1d? → 0.5h |  | 2d → 11.25d | none → 134 | was named Criar EL-IBD_005 – Interface do Mapeamento de Banco de Dados de "Nível de acesso ao sistema"; resources none → Analista 01 |
| 136 | Elaborar EL-MER_023 - Modelo Entidade Relacionamento de "Gerenciamento de escala de trabalho" | 2026-05-29 → 2026-05-14 10:30 (-15d) | 2026-05-29 → 2026-05-14 12:00 (-15d) | 1d? → 1.5h |  | 2d → 11.25d | none → 135 | was named Integrar EL-I_005 – "Nível de acesso ao sistema"; resources none → Analista 01 |
| 138 | Elaborar EL-DBD_023 - Documentação de Banco de Dados de "Gerenciamento de escala de trabalho" | 2026-05-29 → 2026-05-14 13:15 (-15d) | 2026-06-01 → 2026-05-14 15:00 (-18d) | 2d? → 1.75h |  | 1d → 11.25d | none → 137 | was named Implementar EL-CMC_006 – Classes, Métodos e Componentes de "Cadastro de profissionais"; resources none → Analista 01 |
| 139 | **Construção** | 2026-05-29 → 2026-05-14 09:00 (-15d) | 2026-06-01 → 2026-05-15 10:30 (-17d) | 2d? → 9.5h |  | 1d → 11.25d |  |  |
| 140 | **"Nível de acesso ao sistema"** | 2026-05-29 → 2026-05-14 15:00 (-15d) | 2026-06-01 → 2026-05-15 10:30 (-17d) | 2d? → 4.5h |  | 1d → 11.25d |  |  |
| 141 | Implementar EL-CMC_024 - Classes, Métodos e Componentes de "Nível de acesso ao sistema" | 2026-05-29 → 2026-05-14 15:00 (-15d) | 2026-05-29 → 2026-05-14 16:30 (-15d) | 1d? → 1.5h |  | 2d → 11.25d | none → 138 | was named Criar EL-IBD_006 – Interface do Mapeamento de Banco de Dados de "Cadastro de profissionais"; resources none → Dev 01 |
| 142 | Implementar EL-FUX_024 - Front-UX de "Nível de acesso ao sistema" | 2026-05-29 → 2026-05-14 16:30 (-15d) | 2026-05-29 → 2026-05-14 17:45 (-15d) | 1d? → 1.25h |  | 2d → 11.25d | none → 141 | was named Integrar EL-I_006 – "Cadastro de profissionais"; resources none → Dev 01 |
| 144 | Criar EL-IBD_024 - Interface do Mapeamento de Banco de Dados de "Nível de acesso ao sistema" | 2026-05-29 → 2026-05-15 09:30 (-14d) | 2026-06-01 → 2026-05-15 10:15 (-17d) | 2d? → 0.75h |  | 1d → 11.25d | none → 143 | was named Implementar EL-CMC_007 – Classes, Métodos e Componentes de "Definição de taxa de serviço"; resources none → Dev 01 |
| 145 | Integração parcial EL-IP_024 - "Nível de acesso ao sistema" | 2026-05-29 → 2026-05-15 10:15 (-14d) | 2026-06-01 → 2026-05-15 10:30 (-17d) | 2d? → 0.25h |  | 1d → 11.25d | none → 144 | was named Implementar EL-FUX_007 – Front-UX de "Definição de taxa de serviço"; resources none → Dev 01 |
| 146 | **"Cadastro de profissionais"** | 2026-05-29 → 2026-05-14 09:00 (-15d) | 2026-06-01 → 2026-05-14 15:00 (-18d) | 2d? → 5h |  | 1d → 11.81d |  |  |
| 147 | Implementar EL-CMC_025 - Classes, Métodos e Componentes de "Cadastro de profissionais" | 2026-05-29 → 2026-05-14 09:00 (-15d) | 2026-05-29 → 2026-05-14 10:45 (-15d) | 1d? → 1.75h |  | 2d → 11.81d |  | was named Criar EL-IBD_007 – Interface do Mapeamento de Banco de Dados de "Definição de taxa de serviço"; resources none → Dev 02 |
| 148 | Implementar EL-FUX_025 - Front-UX de "Cadastro de profissionais" | 2026-05-29 → 2026-05-14 10:45 (-15d) | 2026-05-29 → 2026-05-14 12:00 (-15d) | 1d? → 1.25h |  | 2d → 11.81d | none → 147 | was named Integrar EL-I_007 – "Definição de taxa de serviço"; resources none → Dev 02 |
| 150 | Criar EL-IBD_025 - Interface do Mapeamento de Banco de Dados de "Cadastro de profissionais" | 2026-05-29 → 2026-05-14 13:45 (-15d) | 2026-06-01 → 2026-05-14 14:30 (-18d) | 2d? → 0.75h |  | 1d → 11.81d | none → 149 | was named Implementar EL-CMC_008 – Classes, Métodos e Componentes de "Controle de assinatura de contrato"; resources none → Dev 02 |
| 151 | Integração parcial EL-IP_025 - "Cadastro de profissionais" | 2026-05-29 → 2026-05-14 14:30 (-15d) | 2026-06-01 → 2026-05-14 15:00 (-18d) | 2d? → 0.5h |  | 1d → 11.81d | none → 150 | was named Implementar EL-FUX_008 – Front-UX de "Controle de assinatura de contrato"; resources none → Dev 02 |
| 152 | **"Definição de taxa de serviço"** | 2026-05-29 → 2026-05-14 09:00 (-15d) | 2026-06-01 → 2026-05-14 14:45 (-18d) | 2d? → 4.75h |  | 1d → 11.84d |  |  |
| 153 | Implementar EL-CMC_026 - Classes, Métodos e Componentes de "Definição de taxa de serviço" | 2026-05-29 → 2026-05-14 09:00 (-15d) | 2026-05-29 → 2026-05-14 10:30 (-15d) | 1d? → 1.5h |  | 2d → 11.84d |  | was named Criar EL-IBD_008 – Interface do Mapeamento de Banco de Dados de "Controle de assinatura de contrato"; resources none → Dev 03 |
| 154 | Implementar EL-FUX_026 - Front-UX de "Definição de taxa de serviço" | 2026-05-29 → 2026-05-14 10:30 (-15d) | 2026-05-29 → 2026-05-14 11:45 (-15d) | 1d? → 1.25h |  | 2d → 11.84d | none → 153 | was named Integrar EL-I_008 – "Controle de assinatura de contrato"; resources none → Dev 03 |

| ID | Task | Start | Finish | Duration | Complete | Total float | Predecessors | Other |
| --- | --- | --- | --- | --- | --- | --- | --- | --- |
| 156 | Criar EL-IBD_026 - Interface do Mapeamento de Banco de Dados de "Definição de taxa de serviço" | 2026-05-29 → 2026-05-14 13:00 (-15d) | 2026-06-01 → 2026-05-14 14:15 (-18d) | 2d? → 1.25h |  | 1d → 11.84d | none → 155 | was named Implementar EL-CMC_009 – Classes, Métodos e Componentes de "Proposta de contrato"; resources none → Dev 03 |
| 157 | Integração parcial EL-IP_026 - "Definição de taxa de serviço" | 2026-05-29 → 2026-05-14 14:15 (-15d) | 2026-06-01 → 2026-05-14 14:45 (-18d) | 2d? → 0.5h |  | 1d → 11.84d | none → 156 | was named Implementar EL-FUX_009 – Front-UX de "Proposta de contrato"; resources none → Dev 03 |
| 158 | **"Controle de assinatura de contrato"** | 2026-05-29 → 2026-05-14 09:00 (-15d) | 2026-06-01 → 2026-05-14 14:45 (-18d) | 2d? → 4.75h |  | 1d → 11.84d |  |  |
| 159 | Implementar EL-CMC_027 - Classes, Métodos e Componentes de "Controle de assinatura de contrato" | 2026-05-29 → 2026-05-14 09:00 (-15d) | 2026-05-29 → 2026-05-14 10:30 (-15d) | 1d? → 1.5h |  | 2d → 11.84d |  | was named Criar EL-IBD_009 – Interface do Mapeamento de Banco de Dados de "Proposta de contrato"; resources none → Dev 01 |
| 160 | Implementar EL-FUX_027 - Front-UX de "Controle de assinatura de contrato" | 2026-05-29 → 2026-05-14 10:30 (-15d) | 2026-05-29 → 2026-05-14 11:45 (-15d) | 1d? → 1.25h |  | 2d → 11.84d | none → 159 | was named Integrar EL-I_009 – "Proposta de contrato"; resources none → Dev 01 |
| 162 | Criar EL-IBD_027 - Interface do Mapeamento de Banco de Dados de "Controle de assinatura de contrato" | 2026-05-29 → 2026-05-14 13:30 (-15d) | 2026-06-01 → 2026-05-14 14:15 (-18d) | 2d? → 0.75h |  | 1d → 11.84d | none → 161 | was named Implementar EL-CMC_010 – Classes, Métodos e Componentes de "Busca de profissionais"; resources none → Dev 01 |
| 163 | Integração parcial EL-IP_027 - "Controle de assinatura de contrato" | 2026-05-29 → 2026-05-14 14:15 (-15d) | 2026-06-01 → 2026-05-14 14:45 (-18d) | 2d? → 0.5h |  | 1d → 11.84d | none → 162 | was named Implementar EL-FUX_010 – Front-UX de "Busca de profissionais"; resources none → Dev 01 |
| 164 | **"Proposta de contrato"** | 2026-05-29 → 2026-05-14 09:00 (-15d) | 2026-06-01 → 2026-05-14 14:45 (-18d) | 2d? → 4.75h |  | 1d → 11.84d |  |  |
| 165 | Implementar EL-CMC_028 - Classes, Métodos e Componentes de "Proposta de contrato" | 2026-05-29 → 2026-05-14 09:00 (-15d) | 2026-05-29 → 2026-05-14 10:30 (-15d) | 1d? → 1.5h |  | 2d → 11.84d |  | was named Criar EL-IBD_010 – Interface do Mapeamento de Banco de Dados de "Busca de profissionais"; resources none → Dev 02 |
| 166 | Implementar EL-FUX_028 - Front-UX de "Proposta de contrato" | 2026-05-29 → 2026-05-14 10:30 (-15d) | 2026-05-29 → 2026-05-14 11:45 (-15d) | 1d? → 1.25h |  | 2d → 11.84d | none → 165 | was named Integrar EL-I_010 – "Busca de profissionais"; resources none → Dev 02 |
| 168 | Criar EL-IBD_028 - Interface do Mapeamento de Banco de Dados de "Proposta de contrato" | 2026-05-29 → 2026-05-14 13:30 (-15d) | 2026-06-01 → 2026-05-14 14:15 (-18d) | 2d? → 0.75h |  | 1d → 11.84d | none → 167 | was named Implementar EL-CMC_011 – Classes, Métodos e Componentes de "Gerenciamento de escala de trabalho"; resources none → Dev 02 |
| 169 | Integração parcial EL-IP_028 - "Proposta de contrato" | 2026-05-29 → 2026-05-14 14:15 (-15d) | 2026-06-01 → 2026-05-14 14:45 (-18d) | 2d? → 0.5h |  | 1d → 11.84d | none → 168 | was named Implementar EL-FUX_011 – Front-UX de "Gerenciamento de escala de trabalho"; resources none → Dev 02 |
| 170 | **"Busca de profissionais"** | 2026-05-29 → 2026-05-14 09:00 (-15d) | 2026-06-01 → 2026-05-14 14:45 (-18d) | 2d? → 4.75h |  | 1d → 11.84d |  |  |
| 171 | Implementar EL-CMC_029 - Classes, Métodos e Componentes de "Busca de profissionais" | 2026-05-29 → 2026-05-14 09:00 (-15d) | 2026-05-29 → 2026-05-14 10:30 (-15d) | 1d? → 1.5h |  | 2d → 11.84d |  | was named Criar EL-IBD_011 – Interface do Mapeamento de Banco de Dados de "Gerenciamento de escala de trabalho"; resources none → Dev 03 |
| 172 | Implementar EL-FUX_029 - Front-UX de "Busca de profissionais" | 2026-05-29 → 2026-05-14 10:30 (-15d) | 2026-05-29 → 2026-05-14 11:45 (-15d) | 1d? → 1.25h |  | 2d → 11.84d | none → 171 | was named Integrar EL-I_011 – "Gerenciamento de escala de trabalho"; resources none → Dev 03 |
| 175 | Integração parcial EL-IP_029 - "Busca de profissionais" | 2026-05-29 → 2026-05-14 14:15 (-15d) | 2026-05-29 → 2026-05-14 14:45 (-15d) | 1d? → 0.5h |  | 2d → 11.84d | none → 174 | was named Implementar EL-TC_005 – Casos de Teste de "Nível de acesso ao sistema"; resources none → Dev 03 |
| 176 | **"Gerenciamento de escala de trabalho"** | 2026-05-29 → 2026-05-14 09:00 (-15d) | 2026-06-01 → 2026-05-14 15:00 (-18d) | 2d? → 5h |  | 1d → 11.53d |  |  |
| 177 | Implementar EL-CMC_030 - Classes, Métodos e Componentes de "Gerenciamento de escala de trabalho" | 2026-05-29 → 2026-05-14 09:00 (-15d) | 2026-05-29 → 2026-05-14 10:30 (-15d) | 0.5d? → 1.5h |  | 2.5d → 11.53d |  | was named Registrar EL-LT_005 – Logs de Teste de "Nível de acesso ao sistema"; resources none → Dev 01 |
| 178 | Implementar EL-FUX_030 - Front-UX de "Gerenciamento de escala de trabalho" | 2026-05-29 → 2026-05-14 10:30 (-15d) | 2026-05-29 → 2026-05-14 11:45 (-15d) | 1d? → 1.25h |  | 2d → 11.53d | none → 177 | was named Executar EL-TH_005 – Testes de Homologação de "Nível de acesso ao sistema"; resources none → Dev 01 |
| 180 | Criar EL-IBD_030 - Interface do Mapeamento de Banco de Dados de "Gerenciamento de escala de trabalho" | 2026-05-29 → 2026-05-14 13:30 (-15d) | 2026-05-29 → 2026-05-14 14:15 (-15d) | 1d? → 0.75h |  | 2d → 11.44d | none → 179 | was named Implementar EL-TC_006 – Casos de Teste de "Cadastro de profissionais"; resources none → Dev 01 |
| 181 | Integração parcial EL-IP_030 - "Gerenciamento de escala de trabalho" | 2026-05-29 → 2026-05-14 14:15 (-15d) | 2026-05-29 → 2026-05-14 15:00 (-15d) | 1d? → 0.75h |  | 2d → 11.53d | none → 180 | was named Executar EL-T_006 – Testes de "Cadastro de profissionais"; resources none → Dev 01 |
| 182 | **Testes** | 2026-05-29 → 2026-05-14 09:00 (-15d) | 2026-05-29 → 2026-05-14 17:15 (-15d) | 1d? → 7h |  | 2d → 11.56d |  |  |
| 183 | **"Nível de acesso ao sistema"** | 2026-05-29 → 2026-05-14 15:00 (-15d) | 2026-05-29 → 2026-05-14 17:15 (-15d) | 1d? → 2h |  | 2d → 11.53d |  |  |
| 185 | Executar EL-T_031 - Testes de "Nível de acesso ao sistema" | 2026-05-29 → 2026-05-14 15:45 (-15d) | 2026-05-29 → 2026-05-14 16:30 (-15d) | 1d? → 0.75h |  | 2d → 11.53d | none → 184 | was named Implementar EL-TC_007 – Casos de Teste de "Definição de taxa de serviço"; resources none → QA 01 |
| 186 | Registrar EL-LT_031 - Logs de Teste de "Nível de acesso ao sistema" | 2026-05-29 → 2026-05-14 16:30 (-15d) | 2026-05-29 → 2026-05-14 17:00 (-15d) | 1d? → 0.5h |  | 2d → 11.53d | none → 185 | was named Executar EL-T_007 – Testes de "Definição de taxa de serviço"; resources none → QA 01 |
| 187 | Executar EL-TH_031 - Testes de Homologação de "Nível de acesso ao sistema" | 2026-05-29 → 2026-05-14 17:00 (-15d) | 2026-05-29 → 2026-05-14 17:15 (-15d) | 0.5d? → 0.25h |  | 2.5d → 11.53d | none → 186 | was named Registrar EL-LT_007 – Logs de Teste de "Definição de taxa de serviço"; resources none → QA 01 |
| 188 | **"Cadastro de profissionais"** | 2026-05-29 → 2026-05-14 09:00 (-15d) | 2026-05-29 → 2026-05-14 12:00 (-15d) | 1d? → 3h |  | 2d → 12.06d |  |  |
| 190 | Executar EL-T_032 - Testes de "Cadastro de profissionais" | 2026-05-29 → 2026-05-14 09:45 (-15d) | 2026-05-29 → 2026-05-14 10:30 (-15d) | 1d? → 0.75h |  | 2d → 12.06d | none → 189 | was named Implementar EL-TC_008 – Casos de Teste de "Controle de assinatura de contrato"; resources none → QA 02 |
| 191 | Registrar EL-LT_032 - Logs de Teste de "Cadastro de profissionais" | 2026-05-29 → 2026-05-14 10:30 (-15d) | 2026-05-29 → 2026-05-14 11:45 (-15d) | 1d? → 1.25h |  | 2d → 12.06d | none → 190 | was named Executar EL-T_008 – Testes de "Controle de assinatura de contrato"; resources none → QA 02 |
| 192 | Executar EL-TH_032 - Testes de Homologação de "Cadastro de profissionais" | 2026-05-29 → 2026-05-14 11:45 (-15d) | 2026-05-29 → 2026-05-14 12:00 (-15d) | 0.5d? → 0.25h |  | 2.5d → 12.06d | none → 191 | was named Registrar EL-LT_008 – Logs de Teste de "Controle de assinatura de contrato"; resources none → QA 02 |
| 193 | **"Definição de taxa de serviço"** | 2026-05-29 → 2026-05-14 09:00 (-15d) | 2026-05-29 → 2026-05-14 11:15 (-15d) | 1d? → 2.25h |  | 2d → 12.16d |  |  |
| 195 | Executar EL-T_033 - Testes de "Definição de taxa de serviço" | 2026-05-29 → 2026-05-14 09:45 (-15d) | 2026-05-29 → 2026-05-14 10:30 (-15d) | 1d? → 0.75h |  | 2d → 12.16d | none → 194 | was named Implementar EL-TC_009 – Casos de Teste de "Proposta de contrato"; resources none → QA 01 |
| 196 | Registrar EL-LT_033 - Logs de Teste de "Definição de taxa de serviço" | 2026-05-29 → 2026-05-14 10:30 (-15d) | 2026-05-29 → 2026-05-14 11:00 (-15d) | 1d? → 0.5h |  | 2d → 12.16d | none → 195 | was named Executar EL-T_009 – Testes de "Proposta de contrato"; resources none → QA 01 |
| 197 | Executar EL-TH_033 - Testes de Homologação de "Definição de taxa de serviço" | 2026-05-29 → 2026-05-14 11:00 (-15d) | 2026-05-29 → 2026-05-14 11:15 (-15d) | 0.5d? → 0.25h |  | 2.5d → 12.16d | none → 196 | was named Registrar EL-LT_009 – Logs de Teste de "Proposta de contrato"; resources none → QA 01 |
| 198 | **"Controle de assinatura de contrato"** | 2026-05-29 → 2026-05-14 09:00 (-15d) | 2026-05-29 → 2026-05-14 11:15 (-15d) | 1d? → 2.25h |  | 2d → 12.16d |  |  |
| 200 | Executar EL-T_034 - Testes de "Controle de assinatura de contrato" | 2026-05-29 → 2026-05-14 09:45 (-15d) | 2026-05-29 → 2026-05-14 10:30 (-15d) | 1d? → 0.75h |  | 2d → 12.16d | none → 199 | was named Implementar EL-TC_010 – Casos de Teste de "Busca de profissionais"; resources none → QA 02 |
| 201 | Registrar EL-LT_034 - Logs de Teste de "Controle de assinatura de contrato" | 2026-05-29 → 2026-05-14 10:30 (-15d) | 2026-05-29 → 2026-05-14 11:00 (-15d) | 1d? → 0.5h |  | 2d → 12.16d | none → 200 | was named Executar EL-T_010 – Testes de "Busca de profissionais"; resources none → QA 02 |
| 202 | Executar EL-TH_034 - Testes de Homologação de "Controle de assinatura de contrato" | 2026-05-29 → 2026-05-14 11:00 (-15d) | 2026-05-29 → 2026-05-14 11:15 (-15d) | 0.5d? → 0.25h |  | 2.5d → 12.16d | none → 201 | was named Registrar EL-LT_010 – Logs de Teste de "Busca de profissionais"; resources none → QA 02 |
| 203 | **"Proposta de contrato"** | 2026-05-29 → 2026-05-14 09:00 (-15d) | 2026-05-29 → 2026-05-14 11:15 (-15d) | 1d? → 2.25h |  | 2d → 12.16d |  |  |
| 205 | Executar EL-T_035 - Testes de "Proposta de contrato" | 2026-05-29 → 2026-05-14 09:45 (-15d) | 2026-05-29 → 2026-05-14 10:30 (-15d) | 1d? → 0.75h |  | 2d → 12.16d | none → 204 | was named Implementar EL-TC_011 – Casos de Teste de "Gerenciamento de escala de trabalho"; resources none → QA 01 |
| 206 | Registrar EL-LT_035 - Logs de Teste de "Proposta de contrato" | 2026-05-29 → 2026-05-14 10:30 (-15d) | 2026-05-29 → 2026-05-14 11:00 (-15d) | 1d? → 0.5h |  | 2d → 12.16d | none → 205 | was named Executar EL-T_011 – Testes de "Gerenciamento de escala de trabalho"; resources none → QA 01 |
| 207 | Executar EL-TH_035 - Testes de Homologação de "Proposta de contrato" | 2026-05-29 → 2026-05-14 11:00 (-15d) | 2026-05-29 → 2026-05-14 11:15 (-15d) | 0.5d? → 0.25h |  | 2.5d → 12.16d | none → 206 | was named Registrar EL-LT_011 – Logs de Teste de "Gerenciamento de escala de trabalho"; resources none → QA 01 |
| 208 | **"Busca de profissionais"** | 2026-05-29 → 2026-05-14 09:00 (-15d) | 2026-05-29 → 2026-05-14 13:15 (-15d) | 1d? → 3.25h |  | 2d → 12.03d |  |  |
| 213 | **"Gerenciamento de escala de trabalho"** | 2026-05-29 → 2026-05-14 09:00 (-15d) | 2026-05-29 → 2026-05-14 11:30 (-15d) | 1d? → 2.5h |  | 2d → 11.84d |  |  |
| 214 | Implementar EL-TC_037 - Casos de Teste de "Gerenciamento de escala de trabalho" | 2026-05-29 → 2026-05-14 09:00 (-15d) | 2026-05-29 → 2026-05-14 09:45 (-15d) | 1d? → 0.75h |  | 2d → 11.78d |  | was named Redigir EL-UCE_012 – Especificação de Caso de Uso de "Controle de pagamento"; resources none → QA 01 |
| 215 | Executar EL-T_037 - Testes de "Gerenciamento de escala de trabalho" | 2026-05-29 → 2026-05-14 09:45 (-15d) | 2026-05-29 → 2026-05-14 10:30 (-15d) | 1d? → 0.75h |  | 2d → 11.78d | none → 214 | was named Elaborar EL-CD_012 – Diagrama de Classes de "Controle de pagamento"; resources none → QA 01 |
| 216 | Registrar EL-LT_037 - Logs de Teste de "Gerenciamento de escala de trabalho" | 2026-05-29 → 2026-05-14 10:30 (-15d) | 2026-05-29 → 2026-05-14 11:00 (-15d) | 1d? → 0.5h |  | 2d → 11.84d | none → 215 | was named Elaborar EL-MER_012 – Modelo Entidade Relacionamento de "Controle de pagamento"; resources none → QA 01 |
| 217 | Executar EL-TH_037 - Testes de Homologação de "Gerenciamento de escala de trabalho" | 2026-05-29 → 2026-05-14 11:00 (-15d) | 2026-05-29 → 2026-05-14 11:30 (-15d) | 0.5d? → 0.5h |  | 2.5d → 11.84d | none → 216 | was named Gerar EL-Script_012 – Esquema/Script de "Controle de pagamento"; resources none → QA 01 |
| 218 | **Implantação** | 2026-05-29 → 2026-05-14 09:00 (-15d) | 2026-05-29 → 2026-05-14 14:45 (-15d) | 0.5d? → 4.75h |  | 2.5d → 10.69d |  | was named Elaborar EL-DBD_012 – Documentação de Banco de Dados de "Controle de pagamento" |
| 220 | Integração total EL-IT_038 - "Nível de acesso ao sistema" | 2026-05-29 → 2026-05-14 11:30 (-15d) | 2026-05-29 → 2026-05-14 14:45 (-15d) | 1d? → 2.25h |  | 2d → 11.84d | none → 217 | was named Elaborar EL-UCD_013 – Diagrama de Caso de Uso de "Configuração de Percentuais e Repasse"; resources none → Integrador |
| 221 | **"Cadastro de profissionais"** | 2026-05-29 → 2026-05-14 09:00 (-15d) | 2026-05-29 → 2026-05-14 11:15 (-15d) | 1d? → 2.25h |  | 2d → 12.16d |  | was named Redigir EL-UCE_013 – Especificação de Caso de Uso de "Configuração de Percentuais e Repasse" |
| 222 | Integração total EL-IT_039 - "Cadastro de profissionais" | 2026-05-29 → 2026-05-14 09:00 (-15d) | 2026-05-29 → 2026-05-14 11:15 (-15d) | 1d? → 2.25h |  | 2d → 12.16d |  | was named Elaborar EL-CD_013 – Diagrama de Classes de "Configuração de Percentuais e Repasse"; resources none → Integrador |
| 223 | **"Definição de taxa de serviço"** | 2026-05-29 → 2026-05-14 09:00 (-15d) | 2026-05-29 → 2026-05-14 11:15 (-15d) | 1d? → 2.25h |  | 2d → 12.16d |  | was named Elaborar EL-MER_013 – Modelo Entidade Relacionamento de "Configuração de Percentuais e Repasse" |
| 224 | Integração total EL-IT_040 - "Definição de taxa de serviço" | 2026-05-29 → 2026-05-14 09:00 (-15d) | 2026-05-29 → 2026-05-14 11:15 (-15d) | 0.5d? → 2.25h |  | 2.5d → 12.16d |  | was named Gerar EL-Script_013 – Esquema/Script de "Configuração de Percentuais e Repasse"; resources none → Integrador |
| 225 | **"Controle de assinatura de contrato"** | 2026-05-29 → 2026-05-14 09:00 (-15d) | 2026-05-29 → 2026-05-14 11:15 (-15d) | 0.5d? → 2.25h |  | 2.5d → 12.16d |  | was named Elaborar EL-DBD_013 – Documentação de Banco de Dados de "Configuração de Percentuais e Repasse" |
| 227 | **"Proposta de contrato"** | 2026-05-29 → 2026-05-14 09:00 (-15d) | 2026-05-29 → 2026-05-14 11:00 (-15d) | 1d? → 2h |  | 2d → 12.19d |  | was named Elaborar EL-UCD_014 – Diagrama de Caso de Uso de "Gestão de painel jurídico" |
| 228 | Integração total EL-IT_042 - "Proposta de contrato" | 2026-05-29 → 2026-05-14 09:00 (-15d) | 2026-05-29 → 2026-05-14 11:00 (-15d) | 1d? → 2h |  | 2d → 12.19d |  | was named Redigir EL-UCE_014 – Especificação de Caso de Uso de "Gestão de painel jurídico"; resources none → Integrador |
| 229 | **"Busca de profissionais"** | 2026-05-29 → 2026-05-14 09:00 (-15d) | 2026-05-29 → 2026-05-14 11:30 (-15d) | 1d? → 2.5h |  | 2d → 12.12d |  | was named Elaborar EL-CD_014 – Diagrama de Classes de "Gestão de painel jurídico" |
| 230 | Integração total EL-IT_043 - "Busca de profissionais" | 2026-05-29 → 2026-05-14 09:00 (-15d) | 2026-05-29 → 2026-05-14 11:30 (-15d) | 1d? → 2.5h |  | 2d → 12.12d |  | was named Elaborar EL-MER_014 – Modelo Entidade Relacionamento de "Gestão de painel jurídico"; resources none → Integrador |
| 231 | **"Gerenciamento de escala de trabalho"** | 2026-05-29 → 2026-05-14 09:00 (-15d) | 2026-05-29 → 2026-05-14 11:30 (-15d) | 0.5d? → 2.5h |  | 2.5d → 10.56d |  | was named Gerar EL-Script_014 – Esquema/Script de "Gestão de painel jurídico" |
| 232 | Integração total EL-IT_044 - "Gerenciamento de escala de trabalho" | 2026-05-29 → 2026-05-14 09:00 (-15d) | 2026-05-29 → 2026-05-14 11:30 (-15d) | 0.5d? → 2.5h |  | 2.5d → 10.56d |  | was named Elaborar EL-DBD_014 – Documentação de Banco de Dados de "Gestão de painel jurídico"; resources none → Integrador |
| 233 | ★ Marco da Entrega da Iteração 02 | 2026-05-29 → 2026-05-28 18:00 A (-1d) | 2026-05-29 → 2026-05-28 18:00 A (-1d) | 0d? → 0h | 0% → 100% | 3d → none | none → 232 | resources none → Gerente de Projeto |
| 234 | **Iteração 03** | 2026-05-29 → 2026-05-29 09:00 | 2026-06-01 → 2026-06-01 13:30 | 2d? → 11.5h |  | 1d → 0d | none → 233 |  |
| 235 | **Modelagem** | 2026-05-29 → 2026-05-29 09:00 | 2026-05-29 → 2026-05-29 16:00 | 1d? → 6h |  | 2d → 0.06d |  |  |
| 236 | **"Controle de pagamento"** | 2026-05-29 → 2026-05-29 09:00 | 2026-05-29 → 2026-05-29 15:45 | 1d? → 5.75h |  | 2d → 0.72d |  |  |
| 237 | Elaborar EL-UCD_045 - Diagrama de Caso de Uso de "Controle de pagamento" | 2026-05-29 → 2026-05-29 09:00 | 2026-05-29 → 2026-05-29 10:15 | 1d? → 1.25h |  | 2d → 0.72d |  | was named Elaborar EL-MER_015 – Modelo Entidade Relacionamento de "Cadastro do documento do profissional"; resources none → Analista 01 |
| 238 | Redigir EL-UCE_045 - Especificação de Caso de Uso de "Controle de pagamento" | 2026-05-29 → 2026-05-29 10:15 | 2026-05-29 → 2026-05-29 11:30 | 0.5d? → 1.25h |  | 2.5d → 0.72d | none → 237 | was named Gerar EL-Script_015 – Esquema/Script de "Cadastro do documento do profissional"; resources none → Analista 01 |
| 239 | Elaborar EL-CD_045 - Diagrama de Classes de "Controle de pagamento" | 2026-05-29 → 2026-05-29 11:30 | 2026-05-29 → 2026-05-29 12:00 | 0.5d? → 0.5h |  | 2.5d → 0.72d | none → 238 | was named Elaborar EL-DBD_015 – Documentação de Banco de Dados de "Cadastro do documento do profissional"; resources none → Analista 01 |
| 241 | Gerar EL-Script_045 - Esquema/Script de "Controle de pagamento" | 2026-05-29 → 2026-05-29 13:45 | 2026-05-29 → 2026-05-29 15:15 | 1d? → 1.5h |  | 2d → 0.72d | none → 240 | was named Elaborar EL-UCD_016 – Diagrama de Caso de Uso de "Gestão de relatórios financeiros"; resources none → Analista 01 |
| 242 | Elaborar EL-DBD_045 - Documentação de Banco de Dados de "Controle de pagamento" | 2026-05-29 → 2026-05-29 15:15 | 2026-05-29 → 2026-05-29 15:45 | 1d? → 0.5h |  | 2d → 0.72d | none → 241 | was named Redigir EL-UCE_016 – Especificação de Caso de Uso de "Gestão de relatórios financeiros"; resources none → Analista 01 |

| ID | Task | Start | Finish | Duration | Total float | Predecessors | Other |
| --- | --- | --- | --- | --- | --- | --- | --- |
| 243 | **"Configuração de Percentuais e Repasse"** | 2026-05-29 → 2026-05-29 09:00 | 2026-05-29 → 2026-05-29 15:00 | 1d? → 5h | 2d → 0.81d |  |  |
| 244 | Elaborar EL-UCD_046 - Diagrama de Caso de Uso de "Configuração de Percentuais e Repasse" | 2026-05-29 → 2026-05-29 09:00 | 2026-05-29 → 2026-05-29 10:15 | 1d? → 1.25h | 2d → 0.72d |  | was named Elaborar EL-MER_016 – Modelo Entidade Relacionamento de "Gestão de relatórios financeiros"; resources none → Analista 02 |
| 245 | Redigir EL-UCE_046 - Especificação de Caso de Uso de "Configuração de Percentuais e Repasse" | 2026-05-29 → 2026-05-29 10:15 | 2026-05-29 → 2026-05-29 11:30 | 0.5d? → 1.25h | 2.5d → 0.72d | none → 244 | was named Gerar EL-Script_016 – Esquema/Script de "Gestão de relatórios financeiros"; resources none → Analista 02 |
| 246 | Elaborar EL-CD_046 - Diagrama de Classes de "Configuração de Percentuais e Repasse" | 2026-05-29 → 2026-05-29 11:30 | 2026-05-29 → 2026-05-29 13:15 | 0.5d? → 0.75h | 2.5d → 0.81d | none → 245 | was named Elaborar EL-DBD_016 – Documentação de Banco de Dados de "Gestão de relatórios financeiros"; resources none → Analista 02 |
| 249 | Elaborar EL-DBD_046 - Documentação de Banco de Dados de "Configuração de Percentuais e Repasse" | 2026-05-29 → 2026-05-29 14:30 | 2026-06-01 → 2026-05-29 15:00 (-3d) | 2d? → 0.5h | 1d → 0.81d | none → 248 | was named Implementar EL-CMC_012 – Classes, Métodos e Componentes de "Controle de pagamento"; resources none → Analista 02 |
| 250 | **"Gestão de painel jurídico"** | 2026-05-29 → 2026-05-29 09:00 | 2026-05-29 → 2026-05-29 15:00 | 1d? → 5h | 2d → 0.81d |  |  |
| 251 | Elaborar EL-UCD_047 - Diagrama de Caso de Uso de "Gestão de painel jurídico" | 2026-05-29 → 2026-05-29 09:00 | 2026-05-29 → 2026-05-29 10:00 | 1d? → 1h | 2d → 0.75d |  | was named Identificar EL-API_012 – APIs de "Controle de pagamento"; resources none → Analista 03 |
| 252 | Redigir EL-UCE_047 - Especificação de Caso de Uso de "Gestão de painel jurídico" | 2026-05-29 → 2026-05-29 10:00 | 2026-05-29 → 2026-05-29 11:30 | 1d? → 1.5h | 2d → 0.75d | none → 251 | was named Criar EL-IBD_012 – Interface do Mapeamento de Banco de Dados de "Controle de pagamento"; resources none → Analista 03 |
| 253 | Elaborar EL-CD_047 - Diagrama de Classes de "Gestão de painel jurídico" | 2026-05-29 → 2026-05-29 11:30 | 2026-05-29 → 2026-05-29 13:15 | 1d? → 0.75h | 2d → 0.81d | none → 252 | was named Integrar EL-I_012 – "Controle de pagamento"; resources none → Analista 03 |
| 255 | Gerar EL-Script_047 - Esquema/Script de "Gestão de painel jurídico" | 2026-05-29 → 2026-05-29 14:00 | 2026-06-01 → 2026-05-29 14:30 (-3d) | 2d? → 0.5h | 1d → 0.81d | none → 254 | was named Implementar EL-CMC_013 – Classes, Métodos e Componentes de "Configuração de Percentuais e Repasse"; resources none → Analista 03 |
| 256 | Elaborar EL-DBD_047 - Documentação de Banco de Dados de "Gestão de painel jurídico" | 2026-05-29 → 2026-05-29 14:30 | 2026-06-01 → 2026-05-29 15:00 (-3d) | 2d? → 0.5h | 1d → 0.81d | none → 255 | was named Implementar EL-FUX_013 – Front-UX de "Configuração de Percentuais e Repasse"; resources none → Analista 03 |
| 257 | **"Cadastro do documento do profissional"** | 2026-05-29 → 2026-05-29 09:00 | 2026-05-29 → 2026-05-29 15:00 | 1d? → 5h | 2d → 0.81d |  |  |
| 258 | Elaborar EL-UCD_048 - Diagrama de Caso de Uso de "Cadastro do documento do profissional" | 2026-05-29 → 2026-05-29 09:00 | 2026-05-29 → 2026-05-29 10:15 | 1d? → 1.25h | 2d → 0.72d |  | was named Criar EL-IBD_013 – Interface do Mapeamento de Banco de Dados de "Configuração de Percentuais e Repasse"; resources none → Analista 01 |
| 259 | Redigir EL-UCE_048 - Especificação de Caso de Uso de "Cadastro do documento do profissional" | 2026-05-29 → 2026-05-29 10:15 | 2026-05-29 → 2026-05-29 11:30 | 1d? → 1.25h | 2d → 0.72d | none → 258 | was named Integrar EL-I_013 – "Configuração de Percentuais e Repasse"; resources none → Analista 01 |
| 261 | Elaborar EL-MER_048 - Modelo Entidade Relacionamento de "Cadastro do documento do profissional" | 2026-05-29 → 2026-05-29 13:15 | 2026-06-01 → 2026-05-29 14:00 (-3d) | 2d? → 0.75h | 1d → 0.81d | none → 260 | was named Implementar EL-CMC_014 – Classes, Métodos e Componentes de "Gestão de painel jurídico"; resources none → Analista 01 |
| 262 | Gerar EL-Script_048 - Esquema/Script de "Cadastro do documento do profissional" | 2026-05-29 → 2026-05-29 14:00 | 2026-06-01 → 2026-05-29 14:30 (-3d) | 2d? → 0.5h | 1d → 0.81d | none → 261 | was named Implementar EL-FUX_014 – Front-UX de "Gestão de painel jurídico"; resources none → Analista 01 |
| 263 | Elaborar EL-DBD_048 - Documentação de Banco de Dados de "Cadastro do documento do profissional" | 2026-05-29 → 2026-05-29 14:30 | 2026-05-29 → 2026-05-29 15:00 | 1d? → 0.5h | 2d → 0.81d | none → 262 | was named Identificar EL-API_014 – APIs de "Gestão de painel jurídico"; resources none → Analista 01 |
| 264 | **"Gestão de relatórios financeiros"** | 2026-05-29 → 2026-05-29 09:00 | 2026-05-29 → 2026-05-29 16:00 | 1d? → 6h | 2d → 0.06d |  |  |
| 265 | Elaborar EL-UCD_049 - Diagrama de Caso de Uso de "Gestão de relatórios financeiros" | 2026-05-29 → 2026-05-29 09:00 | 2026-05-29 → 2026-05-29 11:15 | 1d? → 2.25h | 2d → 0.06d |  | was named Integrar EL-I_014 – "Gestão de painel jurídico"; resources none → Analista 02 |
| 267 | Elaborar EL-CD_049 - Diagrama de Classes de "Gestão de relatórios financeiros" | 2026-05-29 → 2026-05-29 13:30 | 2026-06-01 → 2026-05-29 14:15 (-3d) | 2d? → 0.75h | 1d → 0.06d | none → 266 | was named Implementar EL-CMC_015 – Classes, Métodos e Componentes de "Cadastro do documento do profissional"; resources none → Analista 02 |
| 268 | Elaborar EL-MER_049 - Modelo Entidade Relacionamento de "Gestão de relatórios financeiros" | 2026-05-29 → 2026-05-29 14:15 | 2026-06-01 → 2026-05-29 15:00 (-3d) | 2d? → 0.75h | 1d → 0.06d | none → 267 | was named Implementar EL-FUX_015 – Front-UX de "Cadastro do documento do profissional"; resources none → Analista 02 |
| 269 | Gerar EL-Script_049 - Esquema/Script de "Gestão de relatórios financeiros" | 2026-05-29 → 2026-05-29 15:00 | 2026-05-29 → 2026-05-29 15:30 | 1d? → 0.5h | 2d → 0.06d | none → 268 | was named Identificar EL-API_015 – APIs de "Cadastro do documento do profissional"; resources none → Analista 02 |
| 270 | Elaborar EL-DBD_049 - Documentação de Banco de Dados de "Gestão de relatórios financeiros" | 2026-05-29 → 2026-05-29 15:30 | 2026-05-29 → 2026-05-29 16:00 | 1d? → 0.5h | 2d → 0.06d | none → 269 | was named Criar EL-IBD_015 – Interface do Mapeamento de Banco de Dados de "Cadastro do documento do profissional"; resources none → Analista 02 |
| 271 | **Construção** | 2026-05-29 → 2026-05-29 09:00 | 2026-06-01 → 2026-06-01 12:00 | 2d? → 11h | 1d → 0d |  |  |
| 272 | **"Controle de pagamento"** | 2026-05-29 → 2026-05-29 16:00 | 2026-06-01 → 2026-06-01 12:00 | 2d? → 5h | 1d → 0.06d |  |  |
| 273 | Implementar EL-CMC_050 - Classes, Métodos e Componentes de "Controle de pagamento" | 2026-05-29 → 2026-05-29 16:00 | 2026-06-01 → 2026-05-29 17:45 (-3d) | 2d? → 1.75h | 1d → 0.06d | none → 270 | was named Implementar EL-CMC_016 – Classes, Métodos e Componentes de "Gestão de relatórios financeiros"; resources none → Dev 01 |
| 274 | Implementar EL-FUX_050 - Front-UX de "Controle de pagamento" | 2026-05-29 → 2026-05-29 17:45 | 2026-06-01 → 2026-06-01 10:15 | 2d? → 1.5h | 1d → 0.06d | none → 273 | was named Implementar EL-FUX_016 – Front-UX de "Gestão de relatórios financeiros"; resources none → Dev 01 |
| 275 | Identificar EL-API_050 - APIs de "Controle de pagamento" | 2026-05-29 → 2026-06-01 10:15 (+3d) | 2026-05-29 → 2026-06-01 11:00 (+3d) | 1d? → 0.75h | 2d → 0.06d | none → 274 | was named Identificar EL-API_016 – APIs de "Gestão de relatórios financeiros"; resources none → Dev 01 |
| 276 | Criar EL-IBD_050 - Interface do Mapeamento de Banco de Dados de "Controle de pagamento" | 2026-05-29 → 2026-06-01 11:00 (+3d) | 2026-05-29 → 2026-06-01 11:30 (+3d) | 1d? → 0.5h | 2d → 0.06d | none → 275 | was named Criar EL-IBD_016 – Interface do Mapeamento de Banco de Dados de "Gestão de relatórios financeiros"; resources none → Dev 01 |
| 277 | Integração parcial EL-IP_050 - "Controle de pagamento" | 2026-05-29 → 2026-06-01 11:30 (+3d) | 2026-05-29 → 2026-06-01 12:00 (+3d) | 1d? → 0.5h | 2d → 0.06d | none → 276 | was named Integrar EL-I_016 – "Gestão de relatórios financeiros"; resources none → Dev 01 |
| 278 | **"Configuração de Percentuais e Repasse"** | 2026-05-29 → 2026-05-29 09:00 | 2026-06-01 → 2026-05-29 16:00 (-3d) | 2d? → 6h | 1d → 0.69d |  |  |
| 280 | Implementar EL-FUX_051 - Front-UX de "Configuração de Percentuais e Repasse" | 2026-05-29 → 2026-05-29 11:30 | 2026-05-29 → 2026-05-29 14:00 | 1d? → 1.5h | 2d → 0.69d | none → 279 | was named Implementar EL-TC_012 – Casos de Teste de "Controle de pagamento"; resources none → Dev 02 |
| 281 | Identificar EL-API_051 - APIs de "Configuração de Percentuais e Repasse" | 2026-05-29 → 2026-05-29 14:00 | 2026-05-29 → 2026-05-29 14:45 | 1d? → 0.75h | 2d → 0.69d | none → 280 | was named Executar EL-T_012 – Testes de "Controle de pagamento"; resources none → Dev 02 |
| 282 | Criar EL-IBD_051 - Interface do Mapeamento de Banco de Dados de "Configuração de Percentuais e Repasse" | 2026-05-29 → 2026-05-29 14:45 | 2026-05-29 → 2026-05-29 15:30 | 0.5d? → 0.75h | 2.5d → 0.69d | none → 281 | was named Registrar EL-LT_012 – Logs de Teste de "Controle de pagamento"; resources none → Dev 02 |
| 283 | Integração parcial EL-IP_051 - "Configuração de Percentuais e Repasse" | 2026-05-29 → 2026-05-29 15:30 | 2026-05-29 → 2026-05-29 16:00 | 1d? → 0.5h | 2d → 0.69d | none → 282 | was named Executar EL-TH_012 – Testes de Homologação de "Controle de pagamento"; resources none → Dev 02 |
| 284 | **"Gestão de painel jurídico"** | 2026-05-29 → 2026-05-29 09:00 | 2026-06-01 → 2026-05-29 15:15 (-3d) | 2d? → 5.25h | 1d → 0.78d |  |  |
| 285 | Implementar EL-CMC_052 - Classes, Métodos e Componentes de "Gestão de painel jurídico" | 2026-05-29 → 2026-05-29 09:00 | 2026-05-29 → 2026-05-29 10:45 | 1d? → 1.75h | 2d → 0.66d |  | was named Implementar EL-TC_013 – Casos de Teste de "Configuração de Percentuais e Repasse"; resources none → Dev 03 |
| 286 | Implementar EL-FUX_052 - Front-UX de "Gestão de painel jurídico" | 2026-05-29 → 2026-05-29 10:45 | 2026-05-29 → 2026-05-29 13:15 | 1d? → 1.5h | 2d → 0.78d | none → 285 | was named Executar EL-T_013 – Testes de "Configuração de Percentuais e Repasse"; resources none → Dev 03 |
| 287 | Identificar EL-API_052 - APIs de "Gestão de painel jurídico" | 2026-05-29 → 2026-05-29 13:15 | 2026-05-29 → 2026-05-29 14:00 | 0.5d? → 0.75h | 2.5d → 0.78d | none → 286 | was named Registrar EL-LT_013 – Logs de Teste de "Configuração de Percentuais e Repasse"; resources none → Dev 03 |
| 288 | Criar EL-IBD_052 - Interface do Mapeamento de Banco de Dados de "Gestão de painel jurídico" | 2026-05-29 → 2026-05-29 14:00 | 2026-05-29 → 2026-05-29 14:45 | 1d? → 0.75h | 2d → 0.78d | none → 287 | was named Executar EL-TH_013 – Testes de Homologação de "Configuração de Percentuais e Repasse"; resources none → Dev 03 |
| 290 | **"Cadastro do documento do profissional"** | 2026-05-29 → 2026-05-29 09:00 | 2026-06-01 → 2026-05-29 15:15 (-3d) | 2d? → 5.25h | 1d → 0.78d |  |  |
| 291 | Implementar EL-CMC_053 - Classes, Métodos e Componentes de "Cadastro do documento do profissional" | 2026-05-29 → 2026-05-29 09:00 | 2026-05-29 → 2026-05-29 10:45 | 1d? → 1.75h | 2d → 0.66d |  | was named Executar EL-T_014 – Testes de "Gestão de painel jurídico"; resources none → Dev 01 |
| 292 | Implementar EL-FUX_053 - Front-UX de "Cadastro do documento do profissional" | 2026-05-29 → 2026-05-29 10:45 | 2026-05-29 → 2026-05-29 13:15 | 0.5d? → 1.5h | 2.5d → 0.78d | none → 291 | was named Registrar EL-LT_014 – Logs de Teste de "Gestão de painel jurídico"; resources none → Dev 01 |
| 293 | Identificar EL-API_053 - APIs de "Cadastro do documento do profissional" | 2026-05-29 → 2026-05-29 13:15 | 2026-05-29 → 2026-05-29 14:00 | 1d? → 0.75h | 2d → 0.78d | none → 292 | was named Executar EL-TH_014 – Testes de Homologação de "Gestão de painel jurídico"; resources none → Dev 01 |
| 295 | Integração parcial EL-IP_053 - "Cadastro do documento do profissional" | 2026-05-29 → 2026-05-29 14:45 | 2026-05-29 → 2026-05-29 15:15 | 1d? → 0.5h | 2d → 0.78d | none → 294 | was named Implementar EL-TC_015 – Casos de Teste de "Cadastro do documento do profissional"; resources none → Dev 01 |
| 296 | **"Gestão de relatórios financeiros"** | 2026-05-29 → 2026-05-29 09:00 | 2026-06-01 → 2026-05-29 15:45 (-3d) | 2d? → 5.75h | 1d → 0d |  |  |
| 297 | Implementar EL-CMC_054 - Classes, Métodos e Componentes de "Gestão de relatórios financeiros" | 2026-05-29 → 2026-05-29 09:00 | 2026-05-29 → 2026-05-29 11:15 | 0.5d? → 2.25h | 2.5d → 0d |  | was named Registrar EL-LT_015 – Logs de Teste de "Cadastro do documento do profissional"; resources none → Dev 02 |
| 298 | Implementar EL-FUX_054 - Front-UX de "Gestão de relatórios financeiros" | 2026-05-29 → 2026-05-29 11:15 | 2026-05-29 → 2026-05-29 13:45 | 1d? → 1.5h | 2d → 0d | none → 297 | was named Executar EL-TH_015 – Testes de Homologação de "Cadastro do documento do profissional"; resources none → Dev 02 |
| 300 | Criar EL-IBD_054 - Interface do Mapeamento de Banco de Dados de "Gestão de relatórios financeiros" | 2026-05-29 → 2026-05-29 14:30 | 2026-05-29 → 2026-05-29 15:15 | 1d? → 0.75h | 2d → 0d | none → 299 | was named Implementar EL-TC_016 – Casos de Teste de "Gestão de relatórios financeiros"; resources none → Dev 02 |
| 301 | Integração parcial EL-IP_054 - "Gestão de relatórios financeiros" | 2026-05-29 → 2026-05-29 15:15 | 2026-05-29 → 2026-05-29 15:45 | 1d? → 0.5h | 2d → 0d | none → 300 | was named Executar EL-T_016 – Testes de "Gestão de relatórios financeiros"; resources none → Dev 02 |
| 302 | **Testes** | 2026-05-29 → 2026-05-29 09:00 | 2026-05-29 → 2026-06-01 13:30 (+3d) | 1d? → 11.5h | 2d → 0d |  |  |
| 303 | **"Controle de pagamento"** | 2026-05-29 → 2026-05-29 15:45 | 2026-05-29 → 2026-06-01 13:30 (+3d) | 1d? → 5.75h | 2d → 0d |  |  |
| 308 | **"Configuração de Percentuais e Repasse"** | 2026-05-29 → 2026-05-29 09:00 | 2026-05-29 → 2026-05-29 14:45 | 1d? → 4.75h | 2d → 0.84d |  |  |
| 313 | **"Gestão de painel jurídico"** | 2026-05-29 → 2026-05-29 09:00 | 2026-05-29 → 2026-05-29 14:45 | 1d? → 4.75h | 2d → 0.84d |  |  |
| 318 | **"Cadastro do documento do profissional"** | 2026-05-29 → 2026-05-29 09:00 | 2026-05-29 → 2026-05-29 14:45 | 1d? → 4.75h | 2d → 0.84d |  |  |
| 323 | **"Gestão de relatórios financeiros"** | 2026-05-29 → 2026-05-29 09:00 | 2026-05-29 → 2026-05-29 15:00 | 1d? → 5h | 2d → 0.44d |  |  |
| 339 | ★ Marco da Entrega da Iteração 03 | 2026-05-29 → 2026-05-29 12:00 | 2026-05-29 → 2026-05-29 12:00 | 0d? → 0h | 3d → 1.06d | none → 338 | resources none → Gerente de Projeto |

## Version 4 (saved 2026-06-09, file Cronograma_Elora_WB(1).mpp)

Note of the change: Merge a26e98e6295125fc00b796a95f8d23998858f8b5 into 7d3e57d2ccf8c8a450d8a9a7f2fd930d07deae7a

Last finish 2026-06-01 → 2026-06-02 (+1d). Complete tasks 2 → 0.

Added:

| ID | Task | Duration | Start | Finish |
| --- | --- | --- | --- | --- |
| 87 | Elaborar EL-DBD_005 – Documentação de Banco de Dados de "Nível de acesso ao sistema" | 0.5d? | 2026-05-29 | 2026-05-29 |
| 89 | Elaborar EL-UCD_006 – Diagrama de Caso de Uso de "Cadastro de profissionais" | 1d? | 2026-05-29 | 2026-05-29 |
| 90 | Redigir EL-UCE_006 – Especificação de Caso de Uso de "Cadastro de profissionais" | 1d? | 2026-05-29 | 2026-05-29 |
| 97 | Redigir EL-UCE_007 – Especificação de Caso de Uso de "Definição de taxa de serviço" | 1d? | 2026-05-29 | 2026-05-29 |
| 104 | Redigir EL-UCE_008 – Especificação de Caso de Uso de "Controle de assinatura de contrato" | 1d? | 2026-05-29 | 2026-05-29 |
| 111 | Redigir EL-UCE_009 – Especificação de Caso de Uso de "Proposta de contrato" | 1d? | 2026-05-29 | 2026-05-29 |
| 118 | Redigir EL-UCE_010 – Especificação de Caso de Uso de "Busca de profissionais" | 1d? | 2026-05-29 | 2026-05-29 |
| 125 | Redigir EL-UCE_011 – Especificação de Caso de Uso de "Gerenciamento de escala de trabalho" | 1d? | 2026-05-29 | 2026-05-29 |
| 132 | Implementar EL-CMC_005 – Classes, Métodos e Componentes de "Nível de acesso ao sistema" | 2d? | 2026-05-29 | 2026-06-01 |
| 139 | Implementar EL-FUX_006 – Front-UX de "Cadastro de profissionais" | 2d? | 2026-05-29 | 2026-06-01 |
| 140 | Identificar EL-API_006 – APIs de "Cadastro de profissionais" | 1d? | 2026-05-29 | 2026-05-29 |
| 146 | Identificar EL-API_007 – APIs de "Definição de taxa de serviço" | 1d? | 2026-05-29 | 2026-05-29 |
| 152 | Identificar EL-API_008 – APIs de "Controle de assinatura de contrato" | 1d? | 2026-05-29 | 2026-05-29 |
| 158 | Identificar EL-API_009 – APIs de "Proposta de contrato" | 1d? | 2026-05-29 | 2026-05-29 |
| 164 | Identificar EL-API_010 – APIs de "Busca de profissionais" | 1d? | 2026-05-29 | 2026-05-29 |
| 170 | Identificar EL-API_011 – APIs de "Gerenciamento de escala de trabalho" | 1d? | 2026-05-29 | 2026-05-29 |
| 176 | Executar EL-T_005 – Testes de "Nível de acesso ao sistema" | 1d? | 2026-05-29 | 2026-05-29 |
| 182 | Registrar EL-LT_006 – Logs de Teste de "Cadastro de profissionais" | 0.5d? | 2026-05-29 | 2026-05-29 |
| 183 | Executar EL-TH_006 – Testes de Homologação de "Cadastro de profissionais" | 1d? | 2026-05-29 | 2026-05-29 |
| 188 | Executar EL-TH_007 – Testes de Homologação de "Definição de taxa de serviço" | 1d? | 2026-05-29 | 2026-05-29 |
| 193 | Executar EL-TH_008 – Testes de Homologação de "Controle de assinatura de contrato" | 1d? | 2026-05-29 | 2026-05-29 |
| 198 | Executar EL-TH_009 – Testes de Homologação de "Proposta de contrato" | 1d? | 2026-05-29 | 2026-05-29 |
| 203 | Executar EL-TH_010 – Testes de Homologação de "Busca de profissionais" | 1d? | 2026-05-29 | 2026-05-29 |
| 208 | Executar EL-TH_011 – Testes de Homologação de "Gerenciamento de escala de trabalho" | 1d? | 2026-05-29 | 2026-05-29 |
| 213 | Elaborar EL-UCD_012 – Diagrama de Caso de Uso de "Controle de pagamento" | 1d? | 2026-05-29 | 2026-05-29 |
| 234 | Elaborar EL-UCD_015 – Diagrama de Caso de Uso de "Cadastro do documento do profissional" | 1d? | 2026-05-29 | 2026-05-29 |
| 235 | Redigir EL-UCE_015 – Especificação de Caso de Uso de "Cadastro do documento do profissional" | 1d? | 2026-05-29 | 2026-05-29 |
| 236 | Elaborar EL-CD_015 – Diagrama de Classes de "Cadastro do documento do profissional" | 1d? | 2026-05-29 | 2026-05-29 |
| 243 | Elaborar EL-CD_016 – Diagrama de Classes de "Gestão de relatórios financeiros" | 1d? | 2026-05-29 | 2026-05-29 |
| 250 | Implementar EL-FUX_012 – Front-UX de "Controle de pagamento" | 2d? | 2026-05-29 | 2026-06-01 |
| 257 | Identificar EL-API_013 – APIs de "Configuração de Percentuais e Repasse" | 1d? | 2026-05-29 | 2026-05-29 |
| 264 | Criar EL-IBD_014 – Interface do Mapeamento de Banco de Dados de "Gestão de painel jurídico" | 1d? | 2026-05-29 | 2026-05-29 |
| 271 | Integrar EL-I_015 – "Cadastro do documento do profissional" | 1d? | 2026-05-29 | 2026-05-29 |
| 290 | Implementar EL-TC_014 – Casos de Teste de "Gestão de painel jurídico" | 1d? | 2026-05-29 | 2026-05-29 |
| 296 | Executar EL-T_015 – Testes de "Cadastro do documento do profissional" | 1d? | 2026-05-29 | 2026-05-29 |
| 302 | Registrar EL-LT_016 – Logs de Teste de "Gestão de relatórios financeiros" | 0.5d? | 2026-05-29 | 2026-05-29 |
| 303 | Executar EL-TH_016 – Testes de Homologação de "Gestão de relatórios financeiros" | 1d? | 2026-05-29 | 2026-05-29 |

Removed: 78 Implantação; 79 "Modelo de análise"; 80 Integração total EL-IT_013 - "Modelo de análise"; 81 "Controle de acesso"; 95 Gerar EL-Script_017 - Esquema/Script de "Nível de acesso ao sistema"; 102 Gerar EL-Script_018 - Esquema/Script de "Cadastro de profissionais"; 109 Gerar EL-Script_019 - Esquema/Script de "Definição de taxa de serviço"; 116 Gerar EL-Script_020 - Esquema/Script de "Controle de assinatura de contrato"; 123 Gerar EL-Script_021 - Esquema/Script de "Proposta de contrato"; 130 Gerar EL-Script_022 - Esquema/Script de "Busca de profissionais"; 131 Elaborar EL-DBD_022 - Documentação de Banco de Dados de "Busca de profissionais"; 137 Gerar EL-Script_023 - Esquema/Script de "Gerenciamento de escala de trabalho"; 143 Identificar EL-API_024 - APIs de "Nível de acesso ao sistema"; 149 Identificar EL-API_025 - APIs de "Cadastro de profissionais"; 155 Identificar EL-API_026 - APIs de "Definição de taxa de serviço"; 161 Identificar EL-API_027 - APIs de "Controle de assinatura de contrato"; 167 Identificar EL-API_028 - APIs de "Proposta de contrato"; 173 Identificar EL-API_029 - APIs de "Busca de profissionais"; 174 Criar EL-IBD_029 - Interface do Mapeamento de Banco de Dados de "Busca de profissionais"; 179 Identificar EL-API_030 - APIs de "Gerenciamento de escala de trabalho"; 184 Implementar EL-TC_031 - Casos de Teste de "Nível de acesso ao sistema"; 189 Implementar EL-TC_032 - Casos de Teste de "Cadastro de profissionais"; 194 Implementar EL-TC_033 - Casos de Teste de "Definição de taxa de serviço"; 199 Implementar EL-TC_034 - Casos de Teste de "Controle de assinatura de contrato"; 204 Implementar EL-TC_035 - Casos de Teste de "Proposta de contrato"; 209 Implementar EL-TC_036 - Casos de Teste de "Busca de profissionais"; 210 Executar EL-T_036 - Testes de "Busca de profissionais"; 211 Registrar EL-LT_036 - Logs de Teste de "Busca de profissionais"; 212 Executar EL-TH_036 - Testes de Homologação de "Busca de profissionais"; 219 "Nível de acesso ao sistema"; 226 Integração total EL-IT_041 - "Controle de assinatura de contrato"; 240 Elaborar EL-MER_045 - Modelo Entidade Relacionamento de "Controle de pagamento"; 247 Elaborar EL-MER_046 - Modelo Entidade Relacionamento de "Configuração de Percentuais e Repasse"; 248 Gerar EL-Script_046 - Esquema/Script de "Configuração de Percentuais e Repasse"; 254 Elaborar EL-MER_047 - Modelo Entidade Relacionamento de "Gestão de painel jurídico"; 260 Elaborar EL-CD_048 - Diagrama de Classes de "Cadastro do documento do profissional"; 266 Redigir EL-UCE_049 - Especificação de Caso de Uso de "Gestão de relatórios financeiros"; 279 Implementar EL-CMC_051 - Classes, Métodos e Componentes de "Configuração de Percentuais e Repasse"; 289 Integração parcial EL-IP_052 - "Gestão de painel jurídico"; 294 Criar EL-IBD_053 - Interface do Mapeamento de Banco de Dados de "Cadastro do documento do profissional"; 299 Identificar EL-API_054 - APIs de "Gestão de relatórios financeiros"; 304 Implementar EL-TC_055 - Casos de Teste de "Controle de pagamento"; 305 Executar EL-T_055 - Testes de "Controle de pagamento"; 306 Registrar EL-LT_055 - Logs de Teste de "Controle de pagamento"; 307 Executar EL-TH_055 - Testes de Homologação de "Controle de pagamento"; 309 Implementar EL-TC_056 - Casos de Teste de "Configuração de Percentuais e Repasse"; 310 Executar EL-T_056 - Testes de "Configuração de Percentuais e Repasse"; 311 Registrar EL-LT_056 - Logs de Teste de "Configuração de Percentuais e Repasse"; 312 Executar EL-TH_056 - Testes de Homologação de "Configuração de Percentuais e Repasse"; 314 Implementar EL-TC_057 - Casos de Teste de "Gestão de painel jurídico"; 315 Executar EL-T_057 - Testes de "Gestão de painel jurídico"; 316 Registrar EL-LT_057 - Logs de Teste de "Gestão de painel jurídico"; 317 Executar EL-TH_057 - Testes de Homologação de "Gestão de painel jurídico"; 319 Implementar EL-TC_058 - Casos de Teste de "Cadastro do documento do profissional"; 320 Executar EL-T_058 - Testes de "Cadastro do documento do profissional"; 321 Registrar EL-LT_058 - Logs de Teste de "Cadastro do documento do profissional"; 322 Executar EL-TH_058 - Testes de Homologação de "Cadastro do documento do profissional"; 324 Implementar EL-TC_059 - Casos de Teste de "Gestão de relatórios financeiros"; 325 Executar EL-T_059 - Testes de "Gestão de relatórios financeiros"; 326 Registrar EL-LT_059 - Logs de Teste de "Gestão de relatórios financeiros"; 327 Executar EL-TH_059 - Testes de Homologação de "Gestão de relatórios financeiros"; 328 Implantação; 329 "Controle de pagamento"; 330 Integração total EL-IT_060 - "Controle de pagamento"; 331 "Configuração de Percentuais e Repasse"; 332 Integração total EL-IT_061 - "Configuração de Percentuais e Repasse"; 333 "Gestão de painel jurídico"; 334 Integração total EL-IT_062 - "Gestão de painel jurídico"; 335 "Cadastro do documento do profissional"; 336 Integração total EL-IT_063 - "Cadastro do documento do profissional"; 337 "Gestão de relatórios financeiros"; 338 Integração total EL-IT_064 - "Gestão de relatórios financeiros"

Changed:

| ID | Task | Start | Finish | Duration | Total float | Predecessors | Other |
| --- | --- | --- | --- | --- | --- | --- | --- |
| 1 | **Elora** | 2026-04-29 09:00 A → 2026-05-29 (+30d) | 2026-06-01 13:30 → 2026-06-02 (+1d) | 187.5h → 2.75d? |  |  | was named Projeto Elora |
| 2 | **Iteração 01** | 2026-04-29 09:00 A → 2026-05-29 (+30d) | 2026-05-13 18:00 → 2026-06-02 (+20d) | 87h → 2.75d? | 12.56d → 0d |  |  |
| 3 | **Modelagem** | 2026-04-29 09:00 → 2026-05-29 (+30d) | 2026-04-29 16:45 → 2026-06-02 (+34d) | 6.75h → 2.75d? | 21.34d → 0d |  |  |
| 4 | **"Modelo de análise"** | 2026-04-29 09:00 → 2026-05-29 (+30d) | 2026-04-29 16:30 → 2026-06-02 (+34d) | 6.5h → 2.75d? | 22.62d → 0d |  |  |
| 5 | Elaborar EL-UCD_001 – Diagrama de Caso de Uso de "Modelo de análise" | 2026-04-29 09:00 → 2026-05-29 (+30d) | 2026-04-29 10:30 → 2026-05-29 (+30d) | 1.5h → 1d? | 22.62d → 0d |  | was named Elaborar EL-UCD_001 - Diagrama de Caso de Uso de "Modelo de análise"; resources Analista 01 → A/Laisa |
| 6 | Redigir EL-UCE_001 – Especificação de Caso de Uso de "Modelo de análise" | 2026-04-29 10:30 → 2026-05-29 (+30d) | 2026-04-29 12:00 → 2026-05-29 (+30d) | 1.5h → 1d? | 22.5d → 0d | 5 → 5SS | was named Redigir EL-UCE_001 - Especificação de Caso de Uso de "Modelo de análise"; resources Analista 02 → A/Fernanda |
| 7 | Elaborar EL-CD_001 – Diagrama de Classes de "Modelo de análise" | 2026-04-29 13:00 → 2026-06-01 (+33d) | 2026-04-29 13:45 → 2026-06-01 (+33d) | 0.75h → 0.5d? | 22.62d → 0d |  | was named Elaborar EL-CD_001 - Diagrama de Classes de "Modelo de análise"; resources Analista 02 → A/Carlos; A/Fernanda |
| 8 | Elaborar EL-MER_001 – Modelo Entidade Relacionamento de "Modelo de análise" | 2026-04-29 13:45 → 2026-06-01 (+33d) | 2026-04-29 15:15 → 2026-06-01 (+33d) | 1.5h → 1d? | 22.62d → 0d | 7 → 7SS | was named Elaborar EL-MER_001 - Modelo Entidade Relacionamento de "Modelo de análise"; resources Analista 01 → A/Laisa |
| 9 | Gerar EL-Script_001 – Esquema/Script de "Modelo de análise" | 2026-04-29 15:15 → 2026-06-02 (+34d) | 2026-04-29 16:00 → 2026-06-02 (+34d) | 0.75h → 0.5d? | 22.62d → 0d |  | was named Gerar EL-Script_001 - Esquema/Script de "Modelo de análise"; resources Analista 01 → A/Carlos |
| 10 | Elaborar EL-DBD_001 – Documentação de Banco de Dados de "Modelo de análise" | 2026-04-29 16:00 → 2026-06-02 (+34d) | 2026-04-29 16:30 → 2026-06-02 (+34d) | 0.5h → 0.25d? | 22.62d → 0d |  | was named Elaborar EL-DBD_001 - Documentação de Banco de Dados de "Modelo de análise"; resources Analista 01 → A/Laisa; A/Fernanda |
| 11 | **"Controle de acesso"** | 2026-04-29 09:00 → 2026-05-29 (+30d) | 2026-04-29 15:45 → 2026-05-29 (+30d) | 5.75h → 1d? | 22.72d → 1.75d |  |  |
| 12 | Elaborar EL-UCD_002 – Diagrama de Caso de Uso de "Controle de acesso" | 2026-04-29 09:00 → 2026-05-29 (+30d) | 2026-04-29 10:30 → 2026-05-29 (+30d) | 1.5h → 0d? | 22.69d → 2.75d |  | was named Elaborar EL-UCD_002 - Diagrama de Caso de Uso de "Controle de acesso"; resources Analista 02 → A/Fernanda |
| 13 | Redigir EL-UCE_002 – Especificação de Caso de Uso de "Controle de acesso" | 2026-04-29 10:30 → 2026-05-29 (+30d) | 2026-04-29 12:00 → 2026-05-29 (+30d) | 1.5h → 1d? | 22.69d → 1.75d | 12 → none | was named Redigir EL-UCE_002 - Especificação de Caso de Uso de "Controle de acesso"; resources Analista 02 → A/Carlos |
| 14 | Elaborar EL-CD_002 – Diagrama de Classes de "Controle de acesso" | 2026-04-29 13:00 → 2026-05-29 (+30d) | 2026-04-29 13:45 → 2026-05-29 (+30d) | 0.75h → 0.5d? | 22.72d → 2.25d | 13 → none | was named Elaborar EL-CD_002 - Diagrama de Classes de "Controle de acesso"; resources Analista 02 → A/Carlos; A/Laisa |
| 15 | Elaborar EL-MER_002 – Modelo Entidade Relacionamento de "Controle de acesso" | 2026-04-29 13:45 → 2026-05-29 (+30d) | 2026-04-29 14:30 → 2026-05-29 (+30d) | 0.75h → 1d? | 22.72d → 1.75d | 14 → none | was named Elaborar EL-MER_002 - Modelo Entidade Relacionamento de "Controle de acesso"; resources Analista 02 → A/Fernanda |
| 16 | Gerar EL-Script_002 – Esquema/Script de "Controle de acesso" | 2026-04-29 14:30 → 2026-05-29 (+30d) | 2026-04-29 15:15 → 2026-05-29 (+30d) | 0.75h → 0.5d? | 22.72d → 2.25d | 15 → none | was named Gerar EL-Script_002 - Esquema/Script de "Controle de acesso"; resources Analista 02 → A/Laisa |
| 17 | Elaborar EL-DBD_002 – Documentação de Banco de Dados de "Controle de acesso" | 2026-04-29 15:15 → 2026-05-29 (+30d) | 2026-04-29 15:45 → 2026-05-29 (+30d) | 0.5h → 0.25d? | 22.72d → 2.5d | 16 → none | was named Elaborar EL-DBD_002 - Documentação de Banco de Dados de "Controle de acesso"; resources Analista 02 → A/Fernanda; A/Carlos |
| 18 | **"Cadastro de usuário"** | 2026-04-29 09:00 → 2026-05-29 (+30d) | 2026-04-29 16:15 → 2026-05-29 (+30d) | 6.25h → 0d? | 22.66d → 2.75d |  |  |
| 19 | Elaborar EL-UCD_003 – Diagrama de Caso de Uso de "Cadastro de usuário" | 2026-04-29 09:00 → 2026-05-29 (+30d) | 2026-04-29 11:00 → 2026-05-29 (+30d) | 2h → 0d? | 22.62d → 2.75d |  | was named Elaborar EL-UCD_003 - Diagrama de Caso de Uso de "Cadastro de usuário"; resources Analista 03 → A/Carlos |
| 20 | Redigir EL-UCE_003 – Especificação de Caso de Uso de "Cadastro de usuário" | 2026-04-29 11:00 → 2026-05-29 (+30d) | 2026-04-29 13:30 → 2026-05-29 (+30d) | 1.5h → 0d? | 22.62d → 2.75d | 19 → none | was named Redigir EL-UCE_003 - Especificação de Caso de Uso de "Cadastro de usuário"; resources Analista 03 → A/Laisa |
| 21 | Elaborar EL-CD_003 – Diagrama de Classes de "Cadastro de usuário" | 2026-04-29 13:30 → 2026-05-29 (+30d) | 2026-04-29 14:15 → 2026-05-29 (+30d) | 0.75h → 0d? | 22.66d → 2.75d | 20 → none | was named Elaborar EL-CD_003 - Diagrama de Classes de "Cadastro de usuário"; resources Analista 03 → A/Laisa; A/Fernanda |
| 22 | Elaborar EL-MER_003 – Modelo Entidade Relacionamento de "Cadastro de usuário" | 2026-04-29 14:15 → 2026-05-29 (+30d) | 2026-04-29 15:00 → 2026-05-29 (+30d) | 0.75h → 0d? | 22.66d → 2.75d | 21 → none | was named Elaborar EL-MER_003 - Modelo Entidade Relacionamento de "Cadastro de usuário"; resources Analista 03 → A/Carlos |
| 23 | Gerar EL-Script_003 – Esquema/Script de "Cadastro de usuário" | 2026-04-29 15:00 → 2026-05-29 (+30d) | 2026-04-29 15:45 → 2026-05-29 (+30d) | 0.75h → 0d? | 22.66d → 2.75d | 22 → none | was named Gerar EL-Script_003 - Esquema/Script de "Cadastro de usuário"; resources Analista 03 → A/Fernanda |
| 24 | Elaborar EL-DBD_003 – Documentação de Banco de Dados de "Cadastro de usuário" | 2026-04-29 15:45 → 2026-05-29 (+30d) | 2026-04-29 16:15 → 2026-05-29 (+30d) | 0.5h → 0d? | 22.66d → 2.75d | 23 → none | was named Elaborar EL-DBD_003 - Documentação de Banco de Dados de "Cadastro de usuário"; resources Analista 03 → A/Carlos; A/Laisa |
| 25 | **"Gestão de pagamento"** | 2026-04-29 09:00 → 2026-05-29 (+30d) | 2026-04-29 16:45 → 2026-05-29 (+30d) | 6.75h → 0d? | 21.34d → 2.75d |  |  |
| 26 | Elaborar EL-UCD_004 – Diagrama de Caso de Uso de "Gestão de pagamento" | 2026-04-29 09:00 → 2026-05-29 (+30d) | 2026-04-29 10:30 → 2026-05-29 (+30d) | 1.5h → 0d? | 21.34d → 2.75d |  | was named Elaborar EL-UCD_004 - Diagrama de Caso de Uso de "Gestão de pagamento"; resources Analista 01 → A/Laisa |
| 27 | Redigir EL-UCE_004 – Especificação de Caso de Uso de "Gestão de pagamento" | 2026-04-29 10:30 → 2026-05-29 (+30d) | 2026-04-29 12:00 → 2026-05-29 (+30d) | 1.5h → 0d? | 21.34d → 2.75d | 26 → none | was named Redigir EL-UCE_004 - Especificação de Caso de Uso de "Gestão de pagamento"; resources Analista 01 → A/Fernanda |
| 28 | Elaborar EL-CD_004 – Diagrama de Classes de "Gestão de pagamento" | 2026-04-29 13:00 → 2026-05-29 (+30d) | 2026-04-29 13:45 → 2026-05-29 (+30d) | 0.75h → 0d? | 21.34d → 2.75d | 27 → none | was named Elaborar EL-CD_004 - Diagrama de Classes de "Gestão de pagamento"; resources Analista 01 → A/Fernanda; A/Carlos |
| 29 | Elaborar EL-MER_004 – Modelo Entidade Relacionamento de "Gestão de pagamento" | 2026-04-29 13:45 → 2026-05-29 (+30d) | 2026-04-29 14:30 → 2026-05-29 (+30d) | 0.75h → 0d? | 21.31d → 2.75d | 28 → none | was named Elaborar EL-MER_004 - Modelo Entidade Relacionamento de "Gestão de pagamento"; resources Analista 01 → A/Laisa |
| 30 | Gerar EL-Script_004 – Esquema/Script de "Gestão de pagamento" | 2026-04-29 14:30 → 2026-05-29 (+30d) | 2026-04-29 15:15 → 2026-05-29 (+30d) | 0.75h → 0d? | 21.22d → 2.75d | 29 → none | was named Gerar EL-Script_004 - Esquema/Script de "Gestão de pagamento"; resources Analista 01 → A/Carlos |
| 31 | Elaborar EL-DBD_004 – Documentação de Banco de Dados de "Gestão de pagamento" | 2026-04-29 15:15 → 2026-05-29 (+30d) | 2026-04-29 16:45 → 2026-05-29 (+30d) | 1.5h → 0d? | 21.34d → 2.75d | 30 → none | was named Elaborar EL-DBD_004 - Documentação de Banco de Dados de "Gestão de pagamento"; resources Analista 01 → A/Laisa; A/Fernanda |
| 32 | **Construção** | 2026-04-29 09:00 → 2026-05-29 (+30d) | 2026-05-01 09:45 → 2026-05-29 (+28d) | 16.75h → 0d? | 21.34d → 2.75d |  |  |
| 33 | **"Modelo de análise"** | 2026-04-29 16:45 → 2026-05-29 (+30d) | 2026-05-01 09:45 → 2026-05-29 (+28d) | 10h → 0d? | 21.34d → 2.75d |  |  |
| 34 | Implementar EL-CMC_001 – Classes, Métodos e Componentes de "Modelo de análise" | 2026-04-29 16:45 → 2026-05-29 (+30d) | 2026-04-30 10:45 → 2026-05-29 (+29d) | 3h → 0d? | 21.34d → 2.75d | 31 → none | was named Implementar EL-CMC_005 - Classes, Métodos e Componentes de "Modelo de análise"; resources Dev 01 → A/Laisa; DEV/Heitor |
| 35 | Implementar EL-FUX_001 – Front-UX de "Modelo de análise" | 2026-04-30 10:45 → 2026-05-29 (+29d) | 2026-04-30 14:45 → 2026-05-29 (+29d) | 3h → 0d? | 21.28d → 2.75d | 34 → none | was named Implementar EL-FUX_005 - Front-UX de "Modelo de análise"; resources Dev 01 → DEV/Mariana |
| 36 | Identificar EL-API_001 – APIs de "Modelo de análise" | 2026-04-30 14:45 → 2026-05-29 (+29d) | 2026-04-30 16:15 → 2026-05-29 (+29d) | 1.5h → 0d? | 21.28d → 2.75d | 35 → none | was named Identificar EL-API_005 - APIs de "Modelo de análise"; resources Dev 01 → DEV/Heitor |
| 37 | Criar EL-IBD_001 – Interface do Mapeamento de Banco de Dados de "Modelo de análise" | 2026-04-30 16:15 → 2026-05-29 (+29d) | 2026-04-30 17:45 → 2026-05-29 (+29d) | 1.5h → 0d? | 21.34d → 2.75d | 36 → none | was named Criar EL-IBD_005 - Interface do Mapeamento de Banco de Dados de "Modelo de análise"; resources Dev 01 → DEV/Heitor |
| 38 | Integrar EL-I_001 – "Modelo de análise" | 2026-04-30 17:45 → 2026-05-29 (+29d) | 2026-05-01 09:45 → 2026-05-29 (+28d) | 1h → 0d? | 21.34d → 2.75d | 37 → none | was named Integração parcial EL-IP_005 - "Modelo de análise"; resources Dev 01 → DEV/Heitor; I/Paulo |
| 39 | **"Controle de acesso"** | 2026-04-29 09:00 → 2026-05-29 (+30d) | 2026-04-30 11:00 → 2026-05-29 (+29d) | 10h → 0d? | 22.19d → 2.75d |  |  |
| 40 | Implementar EL-CMC_002 – Classes, Métodos e Componentes de "Controle de acesso" | 2026-04-29 09:00 → 2026-05-29 (+30d) | 2026-04-29 13:15 → 2026-05-29 (+30d) | 3.25h → 0d? | 22.19d → 2.75d |  | was named Implementar EL-CMC_006 - Classes, Métodos e Componentes de "Controle de acesso"; resources Dev 02 → A/Fernanda; DEV/Lucas |
| 41 | Implementar EL-FUX_002 – Front-UX de "Controle de acesso" | 2026-04-29 13:15 → 2026-05-29 (+30d) | 2026-04-29 16:00 → 2026-05-29 (+30d) | 2.75h → 0d? | 22.12d → 2.75d | 40 → none | was named Implementar EL-FUX_006 - Front-UX de "Controle de acesso"; resources Dev 02 → DEV/Lucas |
| 42 | Identificar EL-API_002 – APIs de "Controle de acesso" | 2026-04-29 16:00 → 2026-05-29 (+30d) | 2026-04-29 17:30 → 2026-05-29 (+30d) | 1.5h → 0d? | 22.12d → 2.75d | 41 → none | was named Identificar EL-API_006 - APIs de "Controle de acesso"; resources Dev 02 → DEV/Lucas |
| 43 | Criar EL-IBD_002 – Interface do Mapeamento de Banco de Dados de "Controle de acesso" | 2026-04-29 17:30 → 2026-05-29 (+30d) | 2026-04-30 10:00 → 2026-05-29 (+29d) | 1.5h → 0d? | 22.19d → 2.75d | 42 → none | was named Criar EL-IBD_006 - Interface do Mapeamento de Banco de Dados de "Controle de acesso"; resources Dev 02 → DEV/Mariana; DEV/Lucas |
| 44 | Integrar EL-I_002 – "Controle de acesso" | 2026-04-30 10:00 → 2026-05-29 (+29d) | 2026-04-30 11:00 → 2026-05-29 (+29d) | 1h → 0d? | 22.19d → 2.75d | 43 → none | was named Integração parcial EL-IP_006 - "Controle de acesso"; resources Dev 02 → DEV/Lucas; I/Paulo |
| 45 | **"Cadastro de usuário"** | 2026-04-29 09:00 → 2026-05-29 (+30d) | 2026-04-30 12:00 → 2026-05-29 (+29d) | 11h → 0d? | 22.06d → 2.75d |  |  |
| 46 | Implementar EL-CMC_003 – Classes, Métodos e Componentes de "Cadastro de usuário" | 2026-04-29 09:00 → 2026-05-29 (+30d) | 2026-04-29 14:15 → 2026-05-29 (+30d) | 4.25h → 0d? | 22.06d → 2.75d |  | was named Implementar EL-CMC_007 - Classes, Métodos e Componentes de "Cadastro de usuário"; resources Dev 03 → A/Laisa; DEV/Heitor |
| 47 | Implementar EL-FUX_003 – Front-UX de "Cadastro de usuário" | 2026-04-29 14:15 → 2026-05-29 (+30d) | 2026-04-29 17:00 → 2026-05-29 (+30d) | 2.75h → 0d? | 22d → 2.75d | 46 → none | was named Implementar EL-FUX_007 - Front-UX de "Cadastro de usuário"; resources Dev 03 → DEV/Mariana |
| 48 | Identificar EL-API_003 – APIs de "Cadastro de usuário" | 2026-04-29 17:00 → 2026-05-29 (+30d) | 2026-04-29 18:00 → 2026-05-29 (+30d) | 1h → 0d? | 22d → 2.75d | 47 → none | was named Identificar EL-API_007 - APIs de "Cadastro de usuário"; resources Dev 03 → DEV/Heitor |
| 49 | Criar EL-IBD_003 – Interface do Mapeamento de Banco de Dados de "Cadastro de usuário" | 2026-04-30 09:00 → 2026-05-29 (+29d) | 2026-04-30 11:00 → 2026-05-29 (+29d) | 2h → 0d? | 22.06d → 2.75d | 48 → none | was named Criar EL-IBD_007 - Interface do Mapeamento de Banco de Dados de "Cadastro de usuário"; resources Dev 03 → DEV/Heitor |
| 50 | Integrar EL-I_003 – "Cadastro de usuário" | 2026-04-30 11:00 → 2026-05-29 (+29d) | 2026-04-30 12:00 → 2026-05-29 (+29d) | 1h → 0d? | 22.06d → 2.75d | 49 → none | was named Integração parcial EL-IP_007 - "Cadastro de usuário"; resources Dev 03 → DEV/Heitor; I/Paulo |
| 51 | **"Gestão de pagamento"** | 2026-04-29 09:00 → 2026-05-29 (+30d) | 2026-04-30 10:15 → 2026-05-29 (+29d) | 9.25h → 0d? | 22d → 2.75d |  |  |
| 52 | Implementar EL-CMC_004 – Classes, Métodos e Componentes de "Gestão de pagamento" | 2026-04-29 09:00 → 2026-05-29 (+30d) | 2026-04-29 13:15 → 2026-05-29 (+30d) | 3.25h → 0d? | 22d → 2.75d |  | was named Implementar EL-CMC_008 - Classes, Métodos e Componentes de "Gestão de pagamento"; resources Dev 01 → A/Fernanda; DEV/Lucas |
| 53 | Implementar EL-FUX_004 – Front-UX de "Gestão de pagamento" | 2026-04-29 13:15 → 2026-05-29 (+30d) | 2026-04-29 15:00 → 2026-05-29 (+30d) | 1.75h → 0d? | 22d → 2.75d | 52 → none | was named Implementar EL-FUX_008 - Front-UX de "Gestão de pagamento"; resources Dev 01 → DEV/Lucas |
| 54 | Identificar EL-API_004 – APIs de "Gestão de pagamento" | 2026-04-29 15:00 → 2026-05-29 (+30d) | 2026-04-29 17:30 → 2026-05-29 (+30d) | 2.5h → 0d? | 22d → 2.75d | 53 → none | was named Identificar EL-API_008 - APIs de "Gestão de pagamento"; resources Dev 01 → DEV/Lucas |
| 55 | Criar EL-IBD_004 – Interface do Mapeamento de Banco de Dados de "Gestão de pagamento" | 2026-04-29 17:30 → 2026-05-29 (+30d) | 2026-04-30 10:00 → 2026-05-29 (+29d) | 1.5h → 0d? | 22d → 2.75d | 54 → none | was named Criar EL-IBD_008 - Interface do Mapeamento de Banco de Dados de "Gestão de pagamento"; resources Dev 01 → DEV/Mariana; DEV/Lucas |
| 56 | Integrar EL-I_004 – "Gestão de pagamento" | 2026-04-30 10:00 → 2026-05-29 (+29d) | 2026-04-30 10:15 → 2026-05-29 (+29d) | 0.25h → 0d? | 22d → 2.75d | 55 → none | was named Integração parcial EL-IP_008 - "Gestão de pagamento"; resources Dev 01 → DEV/Lucas; I/Paulo |
| 57 | **Testes** | 2026-04-29 09:00 → 2026-05-29 (+30d) | 2026-04-30 13:30 → 2026-05-29 (+29d) | 11.5h → 0d? | 22d → 2.75d |  |  |
| 58 | **"Modelo de análise"** | 2026-04-30 10:15 → 2026-05-29 (+29d) | 2026-04-30 13:30 → 2026-05-29 (+29d) | 2.25h → 0d? | 22d → 2.75d |  |  |
| 59 | Implementar EL-TC_001 – Casos de Teste de "Modelo de análise" | 2026-04-30 10:15 → 2026-05-29 (+29d) | 2026-04-30 11:00 → 2026-05-29 (+29d) | 0.75h → 0d? | 22d → 2.75d | 56 → none | was named Implementar EL-TC_009 - Casos de Teste de "Modelo de análise"; resources QA 01 → QA/Rogério |
| 60 | Executar EL-T_001 – Testes de "Modelo de análise" | 2026-04-30 11:00 → 2026-05-29 (+29d) | 2026-04-30 11:45 → 2026-05-29 (+29d) | 0.75h → 0d? | 22d → 2.75d | 59 → none | was named Executar EL-T_009 - Testes de "Modelo de análise"; resources QA 01 → QA/Rogério |
| 61 | Registrar EL-LT_001 – Logs de Teste de "Modelo de análise" | 2026-04-30 11:45 → 2026-05-29 (+29d) | 2026-04-30 13:15 → 2026-05-29 (+29d) | 0.5h → 0d? | 22d → 2.75d | 60 → none | was named Registrar EL-LT_009 - Logs de Teste de "Modelo de análise"; resources QA 01 → A/Carlos |
| 62 | Executar EL-TH_001 – Testes de Homologação de "Modelo de análise" | 2026-04-30 13:15 → 2026-05-29 (+29d) | 2026-04-30 13:30 → 2026-05-29 (+29d) | 0.25h → 0d? | 22d → 2.75d | 61 → none | was named Executar EL-TH_009 - Testes de Homologação de "Modelo de análise"; resources QA 01 → QA/Rogério; A/Carlos |
| 63 | **"Controle de acesso"** | 2026-04-29 09:00 → 2026-05-29 (+30d) | 2026-04-29 11:15 → 2026-05-29 (+30d) | 2.25h → 0d? | 23.16d → 2.75d |  |  |
| 64 | Implementar EL-TC_002 – Casos de Teste de "Controle de acesso" | 2026-04-29 09:00 → 2026-05-29 (+30d) | 2026-04-29 09:45 → 2026-05-29 (+30d) | 0.75h → 0d? | 23.16d → 2.75d |  | was named Implementar EL-TC_010 - Casos de Teste de "Controle de acesso"; resources QA 02 → QA/Beatriz |
| 65 | Executar EL-T_002 – Testes de "Controle de acesso" | 2026-04-29 09:45 → 2026-05-29 (+30d) | 2026-04-29 10:30 → 2026-05-29 (+30d) | 0.75h → 0d? | 23.16d → 2.75d | 64 → none | was named Executar EL-T_010 - Testes de "Controle de acesso"; resources QA 02 → QA/Beatriz |
| 66 | Registrar EL-LT_002 – Logs de Teste de "Controle de acesso" | 2026-04-29 10:30 → 2026-05-29 (+30d) | 2026-04-29 11:00 → 2026-05-29 (+30d) | 0.5h → 0d? | 23.16d → 2.75d | 65 → none | was named Registrar EL-LT_010 - Logs de Teste de "Controle de acesso"; resources QA 02 → A/Laisa |
| 67 | Executar EL-TH_002 – Testes de Homologação de "Controle de acesso" | 2026-04-29 11:00 → 2026-05-29 (+30d) | 2026-04-29 11:15 → 2026-05-29 (+30d) | 0.25h → 0d? | 23.16d → 2.75d | 66 → none | was named Executar EL-TH_010 - Testes de Homologação de "Controle de acesso"; resources QA 02 → QA/Beatriz; A/Laisa |
| 68 | **"Cadastro de usuário"** | 2026-04-29 09:00 → 2026-05-29 (+30d) | 2026-04-29 12:00 → 2026-05-29 (+30d) | 3h → 0d? | 23.06d → 2.75d |  |  |
| 69 | Implementar EL-TC_003 – Casos de Teste de "Cadastro de usuário" | 2026-04-29 09:00 → 2026-05-29 (+30d) | 2026-04-29 10:30 → 2026-05-29 (+30d) | 1.5h → 0d? | 23.06d → 2.75d |  | was named Implementar EL-TC_011 - Casos de Teste de "Cadastro de usuário"; resources QA 01 → QA/Rogério |
| 70 | Executar EL-T_003 – Testes de "Cadastro de usuário" | 2026-04-29 10:30 → 2026-05-29 (+30d) | 2026-04-29 11:15 → 2026-05-29 (+30d) | 0.75h → 0d? | 23.06d → 2.75d | 69 → none | was named Executar EL-T_011 - Testes de "Cadastro de usuário"; resources QA 01 → QA/Rogério |

| ID | Task | Start | Finish | Duration | Complete | Total float | Predecessors | Other |
| --- | --- | --- | --- | --- | --- | --- | --- | --- |
| 71 | Registrar EL-LT_003 – Logs de Teste de "Cadastro de usuário" | 2026-04-29 11:15 → 2026-05-29 (+30d) | 2026-04-29 11:45 → 2026-05-29 (+30d) | 0.5h → 0d? |  | 23.06d → 2.75d | 70 → none | was named Registrar EL-LT_011 - Logs de Teste de "Cadastro de usuário"; resources QA 01 → A/Fernanda |
| 72 | Executar EL-TH_003 – Testes de Homologação de "Cadastro de usuário" | 2026-04-29 11:45 → 2026-05-29 (+30d) | 2026-04-29 12:00 → 2026-05-29 (+30d) | 0.25h → 0d? |  | 23.06d → 2.75d | 71 → none | was named Executar EL-TH_011 - Testes de Homologação de "Cadastro de usuário"; resources QA 01 → QA/Rogério; A/Fernanda |
| 73 | **"Gestão de pagamento"** | 2026-04-29 09:00 → 2026-05-29 (+30d) | 2026-04-29 11:15 → 2026-05-29 (+30d) | 2.25h → 0d? |  | 22.78d → 2.75d |  |  |
| 74 | Implementar EL-TC_004 – Casos de Teste de "Gestão de pagamento" | 2026-04-29 09:00 → 2026-05-29 (+30d) | 2026-04-29 09:45 → 2026-05-29 (+30d) | 0.75h → 0d? |  | 22.78d → 2.75d |  | was named Implementar EL-TC_012 - Casos de Teste de "Gestão de pagamento"; resources QA 02 → QA/Beatriz |
| 75 | Executar EL-T_004 – Testes de "Gestão de pagamento" | 2026-04-29 09:45 → 2026-05-29 (+30d) | 2026-04-29 10:30 → 2026-05-29 (+30d) | 0.75h → 0d? |  | 22.69d → 2.75d | 74 → none | was named Executar EL-T_012 - Testes de "Gestão de pagamento"; resources QA 02 → QA/Beatriz |
| 76 | Registrar EL-LT_004 – Logs de Teste de "Gestão de pagamento" | 2026-04-29 10:30 → 2026-05-29 (+30d) | 2026-04-29 11:00 → 2026-05-29 (+30d) | 0.5h → 0d? |  | 22.69d → 2.75d | 75 → none | was named Registrar EL-LT_012 - Logs de Teste de "Gestão de pagamento"; resources QA 02 → A/Carlos |
| 77 | Executar EL-TH_004 – Testes de Homologação de "Gestão de pagamento" | 2026-04-29 11:00 → 2026-05-29 (+30d) | 2026-04-29 11:15 → 2026-05-29 (+30d) | 0.25h → 0d? |  | 22.78d → 2.75d | 76 → none | was named Executar EL-TH_012 - Testes de Homologação de "Gestão de pagamento"; resources QA 02 → QA/Beatriz; A/Carlos |
| 78 | ★ Marco da Entrega da Iteração 01 | 2026-05-13 18:00 A → 2026-05-29 (+16d) | 2026-05-13 18:00 A → 2026-05-29 (+16d) | 0h → 0d | 100% → 0% | none → 2.75d | 86 → none | resources Gerente de Projeto → none |
| 79 | **Iteração 02** | 2026-05-14 09:00 A → 2026-05-29 (+15d) | 2026-05-28 18:00 → 2026-06-01 (+4d) | 87h → 2d? |  | 1.56d → 0.75d | 78 → none |  |
| 80 | **Modelagem** | 2026-05-14 09:00 → 2026-05-29 (+15d) | 2026-05-14 15:00 → 2026-05-29 (+15d) | 5h → 1d? |  | 11.25d → 1.75d |  |  |
| 81 | **"Nível de acesso ao sistema"** | 2026-05-14 09:00 → 2026-05-29 (+15d) | 2026-05-14 12:00 → 2026-05-29 (+15d) | 3h → 1d? |  | 12.06d → 1.75d |  | resources none → A/Laisa |
| 82 | Elaborar EL-UCD_005 – Diagrama de Caso de Uso de "Nível de acesso ao sistema" | 2026-04-29 09:00 → 2026-05-29 (+30d) | 2026-04-29 15:00 → 2026-05-29 (+30d) | 5h → 1d? |  | 22.81d → 1.75d |  | was named Integração total EL-IT_014 - "Controle de acesso"; resources Integrador → A/Fernanda |
| 83 | Redigir EL-UCE_005 – Especificação de Caso de Uso de "Nível de acesso ao sistema" | 2026-04-29 09:00 → 2026-05-29 (+30d) | 2026-04-29 12:00 → 2026-05-29 (+30d) | 3h → 0.5d? |  | 23.06d → 2.25d |  | was named "Cadastro de usuário"; resources none → A/Carlos; A/Fernanda |
| 84 | Elaborar EL-CD_005 – Diagrama de Classes de "Nível de acesso ao sistema" | 2026-04-29 09:00 → 2026-05-29 (+30d) | 2026-04-29 12:00 → 2026-05-29 (+30d) | 3h → 1d? |  | 23.06d → 1.75d |  | was named Integração total EL-IT_015 - "Cadastro de usuário"; resources Integrador → A/Laisa |
| 85 | Elaborar EL-MER_005 – Modelo Entidade Relacionamento de "Nível de acesso ao sistema" | 2026-04-29 09:00 → 2026-05-29 (+30d) | 2026-04-29 15:00 → 2026-05-29 (+30d) | 5h → 1d? |  | 10.25d → 1.75d |  | was named "Gestão de pagamento"; resources none → A/Carlos |
| 86 | Gerar EL-Script_005 – Esquema/Script de "Nível de acesso ao sistema" | 2026-04-29 09:00 → 2026-05-29 (+30d) | 2026-04-29 15:00 → 2026-05-29 (+30d) | 5h → 0.25d? |  | 10.25d → 2.5d |  | was named Integração total EL-IT_016 - "Gestão de pagamento"; resources Integrador → A/Laisa; A/Fernanda |
| 88 | **"Cadastro de profissionais"** | 2026-05-14 09:00 → 2026-05-29 (+15d) | 2026-05-14 13:45 → 2026-05-29 (+15d) | 3.75h → 1d? |  | 11.88d → 1.75d |  |  |
| 91 | Elaborar EL-CD_006 – Diagrama de Classes de "Cadastro de profissionais" | 2026-05-14 09:00 → 2026-05-29 (+15d) | 2026-05-14 09:45 → 2026-05-29 (+15d) | 0.75h → 1d? |  | 12.06d → 1.75d |  | was named Elaborar EL-UCD_017 - Diagrama de Caso de Uso de "Nível de acesso ao sistema"; resources Analista 01 → none |
| 92 | Elaborar EL-MER_006 – Modelo Entidade Relacionamento de "Cadastro de profissionais" | 2026-05-14 09:45 → 2026-05-29 (+15d) | 2026-05-14 10:30 → 2026-05-29 (+15d) | 0.75h → 1d? |  | 12.06d → 1.75d | 91 → none | was named Redigir EL-UCE_017 - Especificação de Caso de Uso de "Nível de acesso ao sistema"; resources Analista 01 → none |
| 93 | Gerar EL-Script_006 – Esquema/Script de "Cadastro de profissionais" | 2026-05-14 10:30 → 2026-05-29 (+15d) | 2026-05-14 11:00 → 2026-05-29 (+15d) | 0.5h → 0.5d? |  | 12.06d → 2.25d | 92 → none | was named Elaborar EL-CD_017 - Diagrama de Classes de "Nível de acesso ao sistema"; resources Analista 01 → none |
| 94 | Elaborar EL-DBD_006 – Documentação de Banco de Dados de "Cadastro de profissionais" | 2026-05-14 11:00 → 2026-05-29 (+15d) | 2026-05-14 11:30 → 2026-05-29 (+15d) | 0.5h → 0.5d? |  | 12.06d → 2.25d | 93 → none | was named Elaborar EL-MER_017 - Modelo Entidade Relacionamento de "Nível de acesso ao sistema"; resources Analista 01 → none |
| 95 | **"Definição de taxa de serviço"** | 2026-05-14 09:00 → 2026-05-29 (+15d) | 2026-05-14 12:00 → 2026-05-29 (+15d) | 3h → 1d? |  | 12.06d → 1.75d |  |  |
| 96 | Elaborar EL-UCD_007 – Diagrama de Caso de Uso de "Definição de taxa de serviço" | 2026-05-14 11:45 → 2026-05-29 (+15d) | 2026-05-14 12:00 → 2026-05-29 (+15d) | 0.25h → 1d? |  | 12.06d → 1.75d | Gerar EL-Script_017 - Esquema/Script de "Nível de acesso ao sistema" → none | was named Elaborar EL-DBD_017 - Documentação de Banco de Dados de "Nível de acesso ao sistema"; resources Analista 01 → none |
| 98 | Elaborar EL-CD_007 – Diagrama de Classes de "Definição de taxa de serviço" | 2026-05-14 09:00 → 2026-05-29 (+15d) | 2026-05-14 09:45 → 2026-05-29 (+15d) | 0.75h → 1d? |  | 11.88d → 1.75d |  | was named Elaborar EL-UCD_018 - Diagrama de Caso de Uso de "Cadastro de profissionais"; resources Analista 02 → none |
| 99 | Elaborar EL-MER_007 – Modelo Entidade Relacionamento de "Definição de taxa de serviço" | 2026-05-14 09:45 → 2026-05-29 (+15d) | 2026-05-14 11:15 → 2026-05-29 (+15d) | 1.5h → 1d? |  | 11.97d → 1.75d | 98 → none | was named Redigir EL-UCE_018 - Especificação de Caso de Uso de "Cadastro de profissionais"; resources Analista 02 → none |
| 100 | Gerar EL-Script_007 – Esquema/Script de "Definição de taxa de serviço" | 2026-05-14 11:15 → 2026-05-29 (+15d) | 2026-05-14 11:45 → 2026-05-29 (+15d) | 0.5h → 0.5d? |  | 11.97d → 2.25d | 99 → none | was named Elaborar EL-CD_018 - Diagrama de Classes de "Cadastro de profissionais"; resources Analista 02 → none |
| 101 | Elaborar EL-DBD_007 – Documentação de Banco de Dados de "Definição de taxa de serviço" | 2026-05-14 11:45 → 2026-05-29 (+15d) | 2026-05-14 13:15 → 2026-05-29 (+15d) | 0.5h → 0.5d? |  | 11.97d → 2.25d | 100 → none | was named Elaborar EL-MER_018 - Modelo Entidade Relacionamento de "Cadastro de profissionais"; resources Analista 02 → none |
| 102 | **"Controle de assinatura de contrato"** | 2026-05-14 09:00 → 2026-05-29 (+15d) | 2026-05-14 12:00 → 2026-05-29 (+15d) | 3h → 1d? |  | 12.06d → 1.75d |  |  |
| 103 | Elaborar EL-UCD_008 – Diagrama de Caso de Uso de "Controle de assinatura de contrato" | 2026-05-14 13:30 → 2026-05-29 (+15d) | 2026-05-14 13:45 → 2026-05-29 (+15d) | 0.25h → 1d? |  | 11.97d → 1.75d | Gerar EL-Script_018 - Esquema/Script de "Cadastro de profissionais" → none | was named Elaborar EL-DBD_018 - Documentação de Banco de Dados de "Cadastro de profissionais"; resources Analista 02 → none |
| 105 | Elaborar EL-CD_008 – Diagrama de Classes de "Controle de assinatura de contrato" | 2026-05-14 09:00 → 2026-05-29 (+15d) | 2026-05-14 09:45 → 2026-05-29 (+15d) | 0.75h → 1d? |  | 12.06d → 1.75d |  | was named Elaborar EL-UCD_019 - Diagrama de Caso de Uso de "Definição de taxa de serviço"; resources Analista 03 → none |
| 106 | Elaborar EL-MER_008 – Modelo Entidade Relacionamento de "Controle de assinatura de contrato" | 2026-05-14 09:45 → 2026-05-29 (+15d) | 2026-05-14 10:30 → 2026-05-29 (+15d) | 0.75h → 1d? |  | 12.06d → 1.75d | 105 → none | was named Redigir EL-UCE_019 - Especificação de Caso de Uso de "Definição de taxa de serviço"; resources Analista 03 → none |
| 107 | Gerar EL-Script_008 – Esquema/Script de "Controle de assinatura de contrato" | 2026-05-14 10:30 → 2026-05-29 (+15d) | 2026-05-14 11:00 → 2026-05-29 (+15d) | 0.5h → 0.5d? |  | 12.06d → 2.25d | 106 → none | was named Elaborar EL-CD_019 - Diagrama de Classes de "Definição de taxa de serviço"; resources Analista 03 → none |
| 108 | Elaborar EL-DBD_008 – Documentação de Banco de Dados de "Controle de assinatura de contrato" | 2026-05-14 11:00 → 2026-05-29 (+15d) | 2026-05-14 11:30 → 2026-05-29 (+15d) | 0.5h → 0.5d? |  | 12.06d → 2.25d | 107 → none | was named Elaborar EL-MER_019 - Modelo Entidade Relacionamento de "Definição de taxa de serviço"; resources Analista 03 → none |
| 109 | **"Proposta de contrato"** | 2026-05-14 09:00 → 2026-05-29 (+15d) | 2026-05-14 14:00 → 2026-05-29 (+15d) | 4h → 1d? |  | 11.88d → 1.75d |  |  |
| 110 | Elaborar EL-UCD_009 – Diagrama de Caso de Uso de "Proposta de contrato" | 2026-05-14 11:45 → 2026-05-29 (+15d) | 2026-05-14 12:00 → 2026-05-29 (+15d) | 0.25h → 1d? |  | 12.06d → 1.75d | Gerar EL-Script_019 - Esquema/Script de "Definição de taxa de serviço" → none | was named Elaborar EL-DBD_019 - Documentação de Banco de Dados de "Definição de taxa de serviço"; resources Analista 03 → none |
| 112 | Elaborar EL-CD_009 – Diagrama de Classes de "Proposta de contrato" | 2026-05-14 09:00 → 2026-05-29 (+15d) | 2026-05-14 09:45 → 2026-05-29 (+15d) | 0.75h → 1d? |  | 12.06d → 1.75d |  | was named Elaborar EL-UCD_020 - Diagrama de Caso de Uso de "Controle de assinatura de contrato"; resources Analista 01 → none |
| 113 | Elaborar EL-MER_009 – Modelo Entidade Relacionamento de "Proposta de contrato" | 2026-05-14 09:45 → 2026-05-29 (+15d) | 2026-05-14 10:30 → 2026-05-29 (+15d) | 0.75h → 1d? |  | 12.06d → 1.75d | 112 → none | was named Redigir EL-UCE_020 - Especificação de Caso de Uso de "Controle de assinatura de contrato"; resources Analista 01 → none |
| 114 | Gerar EL-Script_009 – Esquema/Script de "Proposta de contrato" | 2026-05-14 10:30 → 2026-05-29 (+15d) | 2026-05-14 11:00 → 2026-05-29 (+15d) | 0.5h → 0.5d? |  | 12.06d → 2.25d | 113 → none | was named Elaborar EL-CD_020 - Diagrama de Classes de "Controle de assinatura de contrato"; resources Analista 01 → none |
| 115 | Elaborar EL-DBD_009 – Documentação de Banco de Dados de "Proposta de contrato" | 2026-05-14 11:00 → 2026-05-29 (+15d) | 2026-05-14 11:30 → 2026-05-29 (+15d) | 0.5h → 0.5d? |  | 12.06d → 2.25d | 114 → none | was named Elaborar EL-MER_020 - Modelo Entidade Relacionamento de "Controle de assinatura de contrato"; resources Analista 01 → none |
| 116 | **"Busca de profissionais"** | 2026-05-14 09:00 → 2026-05-29 (+15d) | 2026-05-14 12:00 → 2026-05-29 (+15d) | 3h → 1d? |  | 12.06d → 1.75d |  |  |
| 117 | Elaborar EL-UCD_010 – Diagrama de Caso de Uso de "Busca de profissionais" | 2026-05-14 11:45 → 2026-05-29 (+15d) | 2026-05-14 12:00 → 2026-05-29 (+15d) | 0.25h → 1d? |  | 12.06d → 1.75d | Gerar EL-Script_020 - Esquema/Script de "Controle de assinatura de contrato" → none | was named Elaborar EL-DBD_020 - Documentação de Banco de Dados de "Controle de assinatura de contrato"; resources Analista 01 → none |
| 119 | Elaborar EL-CD_010 – Diagrama de Classes de "Busca de profissionais" | 2026-05-14 09:00 → 2026-05-29 (+15d) | 2026-05-14 10:45 → 2026-05-29 (+15d) | 1.75h → 1d? |  | 11.88d → 1.75d |  | was named Elaborar EL-UCD_021 - Diagrama de Caso de Uso de "Proposta de contrato"; resources Analista 02 → none |
| 120 | Elaborar EL-MER_010 – Modelo Entidade Relacionamento de "Busca de profissionais" | 2026-05-14 10:45 → 2026-05-29 (+15d) | 2026-05-14 11:30 → 2026-05-29 (+15d) | 0.75h → 1d? |  | 11.94d → 1.75d | 119 → none | was named Redigir EL-UCE_021 - Especificação de Caso de Uso de "Proposta de contrato"; resources Analista 02 → none |
| 121 | Gerar EL-Script_010 – Esquema/Script de "Busca de profissionais" | 2026-05-14 11:30 → 2026-05-29 (+15d) | 2026-05-14 12:00 → 2026-05-29 (+15d) | 0.5h → 0.5d? |  | 11.94d → 2.25d | 120 → none | was named Elaborar EL-CD_021 - Diagrama de Classes de "Proposta de contrato"; resources Analista 02 → none |
| 122 | Elaborar EL-DBD_010 – Documentação de Banco de Dados de "Busca de profissionais" | 2026-05-14 13:00 → 2026-05-29 (+15d) | 2026-05-14 13:30 → 2026-05-29 (+15d) | 0.5h → 0.5d? |  | 11.94d → 2.25d | 121 → none | was named Elaborar EL-MER_021 - Modelo Entidade Relacionamento de "Proposta de contrato"; resources Analista 02 → none |
| 123 | **"Gerenciamento de escala de trabalho"** | 2026-05-14 09:00 → 2026-05-29 (+15d) | 2026-05-14 15:00 → 2026-05-29 (+15d) | 5h → 1d? |  | 11.25d → 1.75d |  |  |
| 124 | Elaborar EL-UCD_011 – Diagrama de Caso de Uso de "Gerenciamento de escala de trabalho" | 2026-05-14 13:45 → 2026-05-29 (+15d) | 2026-05-14 14:00 → 2026-05-29 (+15d) | 0.25h → 1d? |  | 11.94d → 1.75d | Gerar EL-Script_021 - Esquema/Script de "Proposta de contrato" → none | was named Elaborar EL-DBD_021 - Documentação de Banco de Dados de "Proposta de contrato"; resources Analista 02 → none |
| 126 | Elaborar EL-CD_011 – Diagrama de Classes de "Gerenciamento de escala de trabalho" | 2026-05-14 09:00 → 2026-05-29 (+15d) | 2026-05-14 09:45 → 2026-05-29 (+15d) | 0.75h → 1d? |  | 12.06d → 1.75d |  | was named Elaborar EL-UCD_022 - Diagrama de Caso de Uso de "Busca de profissionais"; resources Analista 03 → none |
| 127 | Elaborar EL-MER_011 – Modelo Entidade Relacionamento de "Gerenciamento de escala de trabalho" | 2026-05-14 09:45 → 2026-05-29 (+15d) | 2026-05-14 10:30 → 2026-05-29 (+15d) | 0.75h → 1d? |  | 12.06d → 1.75d | 126 → none | was named Redigir EL-UCE_022 - Especificação de Caso de Uso de "Busca de profissionais"; resources Analista 03 → none |
| 128 | Gerar EL-Script_011 – Esquema/Script de "Gerenciamento de escala de trabalho" | 2026-05-14 10:30 → 2026-05-29 (+15d) | 2026-05-14 11:00 → 2026-05-29 (+15d) | 0.5h → 0.5d? |  | 12.06d → 2.25d | 127 → none | was named Elaborar EL-CD_022 - Diagrama de Classes de "Busca de profissionais"; resources Analista 03 → none |
| 129 | Elaborar EL-DBD_011 – Documentação de Banco de Dados de "Gerenciamento de escala de trabalho" | 2026-05-14 11:00 → 2026-05-29 (+15d) | 2026-05-14 11:30 → 2026-05-29 (+15d) | 0.5h → 0.5d? |  | 12.06d → 2.25d | 128 → none | was named Elaborar EL-MER_022 - Modelo Entidade Relacionamento de "Busca de profissionais"; resources Analista 03 → none |
| 130 | **Construção** | 2026-05-14 09:00 → 2026-05-29 (+15d) | 2026-05-15 10:30 → 2026-06-01 (+17d) | 9.5h → 2d? |  | 11.25d → 0.75d |  |  |
| 131 | **"Nível de acesso ao sistema"** | 2026-05-14 15:00 → 2026-05-29 (+15d) | 2026-05-15 10:30 → 2026-06-01 (+17d) | 4.5h → 2d? |  | 11.25d → 0.75d |  |  |
| 133 | Implementar EL-FUX_005 – Front-UX de "Nível de acesso ao sistema" | 2026-05-14 09:00 → 2026-05-29 (+15d) | 2026-05-14 09:45 → 2026-06-01 (+18d) | 0.75h → 2d? |  | 11.25d → 0.75d |  | was named Elaborar EL-UCD_023 - Diagrama de Caso de Uso de "Gerenciamento de escala de trabalho"; resources Analista 01 → none |
| 134 | Identificar EL-API_005 – APIs de "Nível de acesso ao sistema" | 2026-05-14 09:45 → 2026-05-29 (+15d) | 2026-05-14 10:00 → 2026-05-29 (+15d) | 0.25h → 1d? |  | 11.25d → 1.75d | 133 → none | was named Redigir EL-UCE_023 - Especificação de Caso de Uso de "Gerenciamento de escala de trabalho"; resources Analista 01 → none |
| 135 | Criar EL-IBD_005 – Interface do Mapeamento de Banco de Dados de "Nível de acesso ao sistema" | 2026-05-14 10:00 → 2026-05-29 (+15d) | 2026-05-14 10:30 → 2026-05-29 (+15d) | 0.5h → 1d? |  | 11.25d → 1.75d | 134 → none | was named Elaborar EL-CD_023 - Diagrama de Classes de "Gerenciamento de escala de trabalho"; resources Analista 01 → none |
| 136 | Integrar EL-I_005 – "Nível de acesso ao sistema" | 2026-05-14 10:30 → 2026-05-29 (+15d) | 2026-05-14 12:00 → 2026-05-29 (+15d) | 1.5h → 1d? |  | 11.25d → 1.75d | 135 → none | was named Elaborar EL-MER_023 - Modelo Entidade Relacionamento de "Gerenciamento de escala de trabalho"; resources Analista 01 → none |
| 137 | **"Cadastro de profissionais"** | 2026-05-14 09:00 → 2026-05-29 (+15d) | 2026-05-14 15:00 → 2026-06-01 (+18d) | 5h → 2d? |  | 11.81d → 0.75d |  |  |
| 138 | Implementar EL-CMC_006 – Classes, Métodos e Componentes de "Cadastro de profissionais" | 2026-05-14 13:15 → 2026-05-29 (+15d) | 2026-05-14 15:00 → 2026-06-01 (+18d) | 1.75h → 2d? |  | 11.25d → 0.75d | Gerar EL-Script_023 - Esquema/Script de "Gerenciamento de escala de trabalho" → none | was named Elaborar EL-DBD_023 - Documentação de Banco de Dados de "Gerenciamento de escala de trabalho"; resources Analista 01 → none |
| 141 | Criar EL-IBD_006 – Interface do Mapeamento de Banco de Dados de "Cadastro de profissionais" | 2026-05-14 15:00 → 2026-05-29 (+15d) | 2026-05-14 16:30 → 2026-05-29 (+15d) | 1.5h → 1d? |  | 11.25d → 1.75d | 138 → none | was named Implementar EL-CMC_024 - Classes, Métodos e Componentes de "Nível de acesso ao sistema"; resources Dev 01 → none |
| 142 | Integrar EL-I_006 – "Cadastro de profissionais" | 2026-05-14 16:30 → 2026-05-29 (+15d) | 2026-05-14 17:45 → 2026-05-29 (+15d) | 1.25h → 1d? |  | 11.25d → 1.75d | 141 → none | was named Implementar EL-FUX_024 - Front-UX de "Nível de acesso ao sistema"; resources Dev 01 → none |
| 143 | **"Definição de taxa de serviço"** | 2026-05-14 09:00 → 2026-05-29 (+15d) | 2026-05-14 14:45 → 2026-06-01 (+18d) | 4.75h → 2d? |  | 11.84d → 0.75d |  |  |
| 144 | Implementar EL-CMC_007 – Classes, Métodos e Componentes de "Definição de taxa de serviço" | 2026-05-15 09:30 → 2026-05-29 (+14d) | 2026-05-15 10:15 → 2026-06-01 (+17d) | 0.75h → 2d? |  | 11.25d → 0.75d | Identificar EL-API_024 - APIs de "Nível de acesso ao sistema" → none | was named Criar EL-IBD_024 - Interface do Mapeamento de Banco de Dados de "Nível de acesso ao sistema"; resources Dev 01 → none |
| 145 | Implementar EL-FUX_007 – Front-UX de "Definição de taxa de serviço" | 2026-05-15 10:15 → 2026-05-29 (+14d) | 2026-05-15 10:30 → 2026-06-01 (+17d) | 0.25h → 2d? |  | 11.25d → 0.75d | 144 → none | was named Integração parcial EL-IP_024 - "Nível de acesso ao sistema"; resources Dev 01 → none |
| 147 | Criar EL-IBD_007 – Interface do Mapeamento de Banco de Dados de "Definição de taxa de serviço" | 2026-05-14 09:00 → 2026-05-29 (+15d) | 2026-05-14 10:45 → 2026-05-29 (+15d) | 1.75h → 1d? |  | 11.81d → 1.75d |  | was named Implementar EL-CMC_025 - Classes, Métodos e Componentes de "Cadastro de profissionais"; resources Dev 02 → none |
| 148 | Integrar EL-I_007 – "Definição de taxa de serviço" | 2026-05-14 10:45 → 2026-05-29 (+15d) | 2026-05-14 12:00 → 2026-05-29 (+15d) | 1.25h → 1d? |  | 11.81d → 1.75d | 147 → none | was named Implementar EL-FUX_025 - Front-UX de "Cadastro de profissionais"; resources Dev 02 → none |
| 149 | **"Controle de assinatura de contrato"** | 2026-05-14 09:00 → 2026-05-29 (+15d) | 2026-05-14 14:45 → 2026-06-01 (+18d) | 4.75h → 2d? |  | 11.84d → 0.75d |  |  |
| 150 | Implementar EL-CMC_008 – Classes, Métodos e Componentes de "Controle de assinatura de contrato" | 2026-05-14 13:45 → 2026-05-29 (+15d) | 2026-05-14 14:30 → 2026-06-01 (+18d) | 0.75h → 2d? |  | 11.81d → 0.75d | Identificar EL-API_025 - APIs de "Cadastro de profissionais" → none | was named Criar EL-IBD_025 - Interface do Mapeamento de Banco de Dados de "Cadastro de profissionais"; resources Dev 02 → none |
| 151 | Implementar EL-FUX_008 – Front-UX de "Controle de assinatura de contrato" | 2026-05-14 14:30 → 2026-05-29 (+15d) | 2026-05-14 15:00 → 2026-06-01 (+18d) | 0.5h → 2d? |  | 11.81d → 0.75d | 150 → none | was named Integração parcial EL-IP_025 - "Cadastro de profissionais"; resources Dev 02 → none |
| 153 | Criar EL-IBD_008 – Interface do Mapeamento de Banco de Dados de "Controle de assinatura de contrato" | 2026-05-14 09:00 → 2026-05-29 (+15d) | 2026-05-14 10:30 → 2026-05-29 (+15d) | 1.5h → 1d? |  | 11.84d → 1.75d |  | was named Implementar EL-CMC_026 - Classes, Métodos e Componentes de "Definição de taxa de serviço"; resources Dev 03 → none |

| ID | Task | Start | Finish | Duration | Complete | Total float | Predecessors | Other |
| --- | --- | --- | --- | --- | --- | --- | --- | --- |
| 154 | Integrar EL-I_008 – "Controle de assinatura de contrato" | 2026-05-14 10:30 → 2026-05-29 (+15d) | 2026-05-14 11:45 → 2026-05-29 (+15d) | 1.25h → 1d? |  | 11.84d → 1.75d | 153 → none | was named Implementar EL-FUX_026 - Front-UX de "Definição de taxa de serviço"; resources Dev 03 → none |
| 155 | **"Proposta de contrato"** | 2026-05-14 09:00 → 2026-05-29 (+15d) | 2026-05-14 14:45 → 2026-06-01 (+18d) | 4.75h → 2d? |  | 11.84d → 0.75d |  |  |
| 156 | Implementar EL-CMC_009 – Classes, Métodos e Componentes de "Proposta de contrato" | 2026-05-14 13:00 → 2026-05-29 (+15d) | 2026-05-14 14:15 → 2026-06-01 (+18d) | 1.25h → 2d? |  | 11.84d → 0.75d | Identificar EL-API_026 - APIs de "Definição de taxa de serviço" → none | was named Criar EL-IBD_026 - Interface do Mapeamento de Banco de Dados de "Definição de taxa de serviço"; resources Dev 03 → none |
| 157 | Implementar EL-FUX_009 – Front-UX de "Proposta de contrato" | 2026-05-14 14:15 → 2026-05-29 (+15d) | 2026-05-14 14:45 → 2026-06-01 (+18d) | 0.5h → 2d? |  | 11.84d → 0.75d | 156 → none | was named Integração parcial EL-IP_026 - "Definição de taxa de serviço"; resources Dev 03 → none |
| 159 | Criar EL-IBD_009 – Interface do Mapeamento de Banco de Dados de "Proposta de contrato" | 2026-05-14 09:00 → 2026-05-29 (+15d) | 2026-05-14 10:30 → 2026-05-29 (+15d) | 1.5h → 1d? |  | 11.84d → 1.75d |  | was named Implementar EL-CMC_027 - Classes, Métodos e Componentes de "Controle de assinatura de contrato"; resources Dev 01 → none |
| 160 | Integrar EL-I_009 – "Proposta de contrato" | 2026-05-14 10:30 → 2026-05-29 (+15d) | 2026-05-14 11:45 → 2026-05-29 (+15d) | 1.25h → 1d? |  | 11.84d → 1.75d | 159 → none | was named Implementar EL-FUX_027 - Front-UX de "Controle de assinatura de contrato"; resources Dev 01 → none |
| 161 | **"Busca de profissionais"** | 2026-05-14 09:00 → 2026-05-29 (+15d) | 2026-05-14 14:45 → 2026-06-01 (+18d) | 4.75h → 2d? |  | 11.84d → 0.75d |  |  |
| 162 | Implementar EL-CMC_010 – Classes, Métodos e Componentes de "Busca de profissionais" | 2026-05-14 13:30 → 2026-05-29 (+15d) | 2026-05-14 14:15 → 2026-06-01 (+18d) | 0.75h → 2d? |  | 11.84d → 0.75d | Identificar EL-API_027 - APIs de "Controle de assinatura de contrato" → none | was named Criar EL-IBD_027 - Interface do Mapeamento de Banco de Dados de "Controle de assinatura de contrato"; resources Dev 01 → none |
| 163 | Implementar EL-FUX_010 – Front-UX de "Busca de profissionais" | 2026-05-14 14:15 → 2026-05-29 (+15d) | 2026-05-14 14:45 → 2026-06-01 (+18d) | 0.5h → 2d? |  | 11.84d → 0.75d | 162 → none | was named Integração parcial EL-IP_027 - "Controle de assinatura de contrato"; resources Dev 01 → none |
| 165 | Criar EL-IBD_010 – Interface do Mapeamento de Banco de Dados de "Busca de profissionais" | 2026-05-14 09:00 → 2026-05-29 (+15d) | 2026-05-14 10:30 → 2026-05-29 (+15d) | 1.5h → 1d? |  | 11.84d → 1.75d |  | was named Implementar EL-CMC_028 - Classes, Métodos e Componentes de "Proposta de contrato"; resources Dev 02 → none |
| 166 | Integrar EL-I_010 – "Busca de profissionais" | 2026-05-14 10:30 → 2026-05-29 (+15d) | 2026-05-14 11:45 → 2026-05-29 (+15d) | 1.25h → 1d? |  | 11.84d → 1.75d | 165 → none | was named Implementar EL-FUX_028 - Front-UX de "Proposta de contrato"; resources Dev 02 → none |
| 167 | **"Gerenciamento de escala de trabalho"** | 2026-05-14 09:00 → 2026-05-29 (+15d) | 2026-05-14 15:00 → 2026-06-01 (+18d) | 5h → 2d? |  | 11.53d → 0.75d |  |  |
| 168 | Implementar EL-CMC_011 – Classes, Métodos e Componentes de "Gerenciamento de escala de trabalho" | 2026-05-14 13:30 → 2026-05-29 (+15d) | 2026-05-14 14:15 → 2026-06-01 (+18d) | 0.75h → 2d? |  | 11.84d → 0.75d | Identificar EL-API_028 - APIs de "Proposta de contrato" → none | was named Criar EL-IBD_028 - Interface do Mapeamento de Banco de Dados de "Proposta de contrato"; resources Dev 02 → none |
| 169 | Implementar EL-FUX_011 – Front-UX de "Gerenciamento de escala de trabalho" | 2026-05-14 14:15 → 2026-05-29 (+15d) | 2026-05-14 14:45 → 2026-06-01 (+18d) | 0.5h → 2d? |  | 11.84d → 0.75d | 168 → none | was named Integração parcial EL-IP_028 - "Proposta de contrato"; resources Dev 02 → none |
| 171 | Criar EL-IBD_011 – Interface do Mapeamento de Banco de Dados de "Gerenciamento de escala de trabalho" | 2026-05-14 09:00 → 2026-05-29 (+15d) | 2026-05-14 10:30 → 2026-05-29 (+15d) | 1.5h → 1d? |  | 11.84d → 1.75d |  | was named Implementar EL-CMC_029 - Classes, Métodos e Componentes de "Busca de profissionais"; resources Dev 03 → none |
| 172 | Integrar EL-I_011 – "Gerenciamento de escala de trabalho" | 2026-05-14 10:30 → 2026-05-29 (+15d) | 2026-05-14 11:45 → 2026-05-29 (+15d) | 1.25h → 1d? |  | 11.84d → 1.75d | 171 → none | was named Implementar EL-FUX_029 - Front-UX de "Busca de profissionais"; resources Dev 03 → none |
| 173 | **Testes** | 2026-05-14 09:00 → 2026-05-29 (+15d) | 2026-05-14 17:15 → 2026-05-29 (+15d) | 7h → 1d? |  | 11.56d → 1.75d |  |  |
| 174 | **"Nível de acesso ao sistema"** | 2026-05-14 15:00 → 2026-05-29 (+15d) | 2026-05-14 17:15 → 2026-05-29 (+15d) | 2h → 1d? |  | 11.53d → 1.75d |  |  |
| 175 | Implementar EL-TC_005 – Casos de Teste de "Nível de acesso ao sistema" | 2026-05-14 14:15 → 2026-05-29 (+15d) | 2026-05-14 14:45 → 2026-05-29 (+15d) | 0.5h → 1d? |  | 11.84d → 1.75d | Criar EL-IBD_029 - Interface do Mapeamento de Banco de Dados de "Busca de profissionais" → none | was named Integração parcial EL-IP_029 - "Busca de profissionais"; resources Dev 03 → none |
| 177 | Registrar EL-LT_005 – Logs de Teste de "Nível de acesso ao sistema" | 2026-05-14 09:00 → 2026-05-29 (+15d) | 2026-05-14 10:30 → 2026-05-29 (+15d) | 1.5h → 0.5d? |  | 11.53d → 2.25d |  | was named Implementar EL-CMC_030 - Classes, Métodos e Componentes de "Gerenciamento de escala de trabalho"; resources Dev 01 → none |
| 178 | Executar EL-TH_005 – Testes de Homologação de "Nível de acesso ao sistema" | 2026-05-14 10:30 → 2026-05-29 (+15d) | 2026-05-14 11:45 → 2026-05-29 (+15d) | 1.25h → 1d? |  | 11.53d → 1.75d | 177 → none | was named Implementar EL-FUX_030 - Front-UX de "Gerenciamento de escala de trabalho"; resources Dev 01 → none |
| 179 | **"Cadastro de profissionais"** | 2026-05-14 09:00 → 2026-05-29 (+15d) | 2026-05-14 12:00 → 2026-05-29 (+15d) | 3h → 1d? |  | 12.06d → 1.75d |  |  |
| 180 | Implementar EL-TC_006 – Casos de Teste de "Cadastro de profissionais" | 2026-05-14 13:30 → 2026-05-29 (+15d) | 2026-05-14 14:15 → 2026-05-29 (+15d) | 0.75h → 1d? |  | 11.44d → 1.75d | Identificar EL-API_030 - APIs de "Gerenciamento de escala de trabalho" → none | was named Criar EL-IBD_030 - Interface do Mapeamento de Banco de Dados de "Gerenciamento de escala de trabalho"; resources Dev 01 → none |
| 181 | Executar EL-T_006 – Testes de "Cadastro de profissionais" | 2026-05-14 14:15 → 2026-05-29 (+15d) | 2026-05-14 15:00 → 2026-05-29 (+15d) | 0.75h → 1d? |  | 11.53d → 1.75d | 180 → none | was named Integração parcial EL-IP_030 - "Gerenciamento de escala de trabalho"; resources Dev 01 → none |
| 184 | **"Definição de taxa de serviço"** | 2026-05-14 09:00 → 2026-05-29 (+15d) | 2026-05-14 11:15 → 2026-05-29 (+15d) | 2.25h → 1d? |  | 12.16d → 1.75d |  |  |
| 185 | Implementar EL-TC_007 – Casos de Teste de "Definição de taxa de serviço" | 2026-05-14 15:45 → 2026-05-29 (+15d) | 2026-05-14 16:30 → 2026-05-29 (+15d) | 0.75h → 1d? |  | 11.53d → 1.75d | Implementar EL-TC_031 - Casos de Teste de "Nível de acesso ao sistema" → none | was named Executar EL-T_031 - Testes de "Nível de acesso ao sistema"; resources QA 01 → none |
| 186 | Executar EL-T_007 – Testes de "Definição de taxa de serviço" | 2026-05-14 16:30 → 2026-05-29 (+15d) | 2026-05-14 17:00 → 2026-05-29 (+15d) | 0.5h → 1d? |  | 11.53d → 1.75d | 185 → none | was named Registrar EL-LT_031 - Logs de Teste de "Nível de acesso ao sistema"; resources QA 01 → none |
| 187 | Registrar EL-LT_007 – Logs de Teste de "Definição de taxa de serviço" | 2026-05-14 17:00 → 2026-05-29 (+15d) | 2026-05-14 17:15 → 2026-05-29 (+15d) | 0.25h → 0.5d? |  | 11.53d → 2.25d | 186 → none | was named Executar EL-TH_031 - Testes de Homologação de "Nível de acesso ao sistema"; resources QA 01 → none |
| 189 | **"Controle de assinatura de contrato"** | 2026-05-14 09:00 → 2026-05-29 (+15d) | 2026-05-14 11:15 → 2026-05-29 (+15d) | 2.25h → 1d? |  | 12.16d → 1.75d |  |  |
| 190 | Implementar EL-TC_008 – Casos de Teste de "Controle de assinatura de contrato" | 2026-05-14 09:45 → 2026-05-29 (+15d) | 2026-05-14 10:30 → 2026-05-29 (+15d) | 0.75h → 1d? |  | 12.06d → 1.75d | Implementar EL-TC_032 - Casos de Teste de "Cadastro de profissionais" → none | was named Executar EL-T_032 - Testes de "Cadastro de profissionais"; resources QA 02 → none |
| 191 | Executar EL-T_008 – Testes de "Controle de assinatura de contrato" | 2026-05-14 10:30 → 2026-05-29 (+15d) | 2026-05-14 11:45 → 2026-05-29 (+15d) | 1.25h → 1d? |  | 12.06d → 1.75d | 190 → none | was named Registrar EL-LT_032 - Logs de Teste de "Cadastro de profissionais"; resources QA 02 → none |
| 192 | Registrar EL-LT_008 – Logs de Teste de "Controle de assinatura de contrato" | 2026-05-14 11:45 → 2026-05-29 (+15d) | 2026-05-14 12:00 → 2026-05-29 (+15d) | 0.25h → 0.5d? |  | 12.06d → 2.25d | 191 → none | was named Executar EL-TH_032 - Testes de Homologação de "Cadastro de profissionais"; resources QA 02 → none |
| 194 | **"Proposta de contrato"** | 2026-05-14 09:00 → 2026-05-29 (+15d) | 2026-05-14 11:15 → 2026-05-29 (+15d) | 2.25h → 1d? |  | 12.16d → 1.75d |  |  |
| 195 | Implementar EL-TC_009 – Casos de Teste de "Proposta de contrato" | 2026-05-14 09:45 → 2026-05-29 (+15d) | 2026-05-14 10:30 → 2026-05-29 (+15d) | 0.75h → 1d? |  | 12.16d → 1.75d | Implementar EL-TC_033 - Casos de Teste de "Definição de taxa de serviço" → none | was named Executar EL-T_033 - Testes de "Definição de taxa de serviço"; resources QA 01 → none |
| 196 | Executar EL-T_009 – Testes de "Proposta de contrato" | 2026-05-14 10:30 → 2026-05-29 (+15d) | 2026-05-14 11:00 → 2026-05-29 (+15d) | 0.5h → 1d? |  | 12.16d → 1.75d | 195 → none | was named Registrar EL-LT_033 - Logs de Teste de "Definição de taxa de serviço"; resources QA 01 → none |
| 197 | Registrar EL-LT_009 – Logs de Teste de "Proposta de contrato" | 2026-05-14 11:00 → 2026-05-29 (+15d) | 2026-05-14 11:15 → 2026-05-29 (+15d) | 0.25h → 0.5d? |  | 12.16d → 2.25d | 196 → none | was named Executar EL-TH_033 - Testes de Homologação de "Definição de taxa de serviço"; resources QA 01 → none |
| 199 | **"Busca de profissionais"** | 2026-05-14 09:00 → 2026-05-29 (+15d) | 2026-05-14 13:15 → 2026-05-29 (+15d) | 3.25h → 1d? |  | 12.03d → 1.75d |  |  |
| 200 | Implementar EL-TC_010 – Casos de Teste de "Busca de profissionais" | 2026-05-14 09:45 → 2026-05-29 (+15d) | 2026-05-14 10:30 → 2026-05-29 (+15d) | 0.75h → 1d? |  | 12.16d → 1.75d | Implementar EL-TC_034 - Casos de Teste de "Controle de assinatura de contrato" → none | was named Executar EL-T_034 - Testes de "Controle de assinatura de contrato"; resources QA 02 → none |
| 201 | Executar EL-T_010 – Testes de "Busca de profissionais" | 2026-05-14 10:30 → 2026-05-29 (+15d) | 2026-05-14 11:00 → 2026-05-29 (+15d) | 0.5h → 1d? |  | 12.16d → 1.75d | 200 → none | was named Registrar EL-LT_034 - Logs de Teste de "Controle de assinatura de contrato"; resources QA 02 → none |
| 202 | Registrar EL-LT_010 – Logs de Teste de "Busca de profissionais" | 2026-05-14 11:00 → 2026-05-29 (+15d) | 2026-05-14 11:15 → 2026-05-29 (+15d) | 0.25h → 0.5d? |  | 12.16d → 2.25d | 201 → none | was named Executar EL-TH_034 - Testes de Homologação de "Controle de assinatura de contrato"; resources QA 02 → none |
| 204 | **"Gerenciamento de escala de trabalho"** | 2026-05-14 09:00 → 2026-05-29 (+15d) | 2026-05-14 11:30 → 2026-05-29 (+15d) | 2.5h → 1d? |  | 11.84d → 1.75d |  |  |
| 205 | Implementar EL-TC_011 – Casos de Teste de "Gerenciamento de escala de trabalho" | 2026-05-14 09:45 → 2026-05-29 (+15d) | 2026-05-14 10:30 → 2026-05-29 (+15d) | 0.75h → 1d? |  | 12.16d → 1.75d | Implementar EL-TC_035 - Casos de Teste de "Proposta de contrato" → none | was named Executar EL-T_035 - Testes de "Proposta de contrato"; resources QA 01 → none |
| 206 | Executar EL-T_011 – Testes de "Gerenciamento de escala de trabalho" | 2026-05-14 10:30 → 2026-05-29 (+15d) | 2026-05-14 11:00 → 2026-05-29 (+15d) | 0.5h → 1d? |  | 12.16d → 1.75d | 205 → none | was named Registrar EL-LT_035 - Logs de Teste de "Proposta de contrato"; resources QA 01 → none |
| 207 | Registrar EL-LT_011 – Logs de Teste de "Gerenciamento de escala de trabalho" | 2026-05-14 11:00 → 2026-05-29 (+15d) | 2026-05-14 11:15 → 2026-05-29 (+15d) | 0.25h → 0.5d? |  | 12.16d → 2.25d | 206 → none | was named Executar EL-TH_035 - Testes de Homologação de "Proposta de contrato"; resources QA 01 → none |
| 209 | ★ Marco da Entrega da Iteração 02 | 2026-05-28 18:00 A → 2026-05-29 (+1d) | 2026-05-28 18:00 A → 2026-05-29 (+1d) | 0h → 0d | 100% → 0% | none → 2.75d | 232 → none | resources Gerente de Projeto → none |
| 210 | **Iteração 03** | 2026-05-29 09:00 → 2026-05-29 | 2026-06-01 13:30 → 2026-06-01 | 11.5h → 2d? |  | 0d → 0.75d | 209 → none |  |
| 211 | **Modelagem** | 2026-05-29 09:00 → 2026-05-29 | 2026-05-29 16:00 → 2026-05-29 | 6h → 1d? |  | 0.06d → 1.75d |  |  |
| 212 | **"Controle de pagamento"** | 2026-05-29 09:00 → 2026-05-29 | 2026-05-29 15:45 → 2026-05-29 | 5.75h → 1d? |  | 0.72d → 1.75d |  |  |
| 214 | Redigir EL-UCE_012 – Especificação de Caso de Uso de "Controle de pagamento" | 2026-05-14 09:00 → 2026-05-29 (+15d) | 2026-05-14 09:45 → 2026-05-29 (+15d) | 0.75h → 1d? |  | 11.78d → 1.75d |  | was named Implementar EL-TC_037 - Casos de Teste de "Gerenciamento de escala de trabalho"; resources QA 01 → none |
| 215 | Elaborar EL-CD_012 – Diagrama de Classes de "Controle de pagamento" | 2026-05-14 09:45 → 2026-05-29 (+15d) | 2026-05-14 10:30 → 2026-05-29 (+15d) | 0.75h → 1d? |  | 11.78d → 1.75d | 214 → none | was named Executar EL-T_037 - Testes de "Gerenciamento de escala de trabalho"; resources QA 01 → none |
| 216 | Elaborar EL-MER_012 – Modelo Entidade Relacionamento de "Controle de pagamento" | 2026-05-14 10:30 → 2026-05-29 (+15d) | 2026-05-14 11:00 → 2026-05-29 (+15d) | 0.5h → 1d? |  | 11.84d → 1.75d | 215 → none | was named Registrar EL-LT_037 - Logs de Teste de "Gerenciamento de escala de trabalho"; resources QA 01 → none |
| 217 | Gerar EL-Script_012 – Esquema/Script de "Controle de pagamento" | 2026-05-14 11:00 → 2026-05-29 (+15d) | 2026-05-14 11:30 → 2026-05-29 (+15d) | 0.5h → 0.5d? |  | 11.84d → 2.25d | 216 → none | was named Executar EL-TH_037 - Testes de Homologação de "Gerenciamento de escala de trabalho"; resources QA 01 → none |
| 218 | Elaborar EL-DBD_012 – Documentação de Banco de Dados de "Controle de pagamento" | 2026-05-14 09:00 → 2026-05-29 (+15d) | 2026-05-14 14:45 → 2026-05-29 (+15d) | 4.75h → 0.5d? |  | 10.69d → 2.25d |  | was named Implantação |
| 219 | **"Configuração de Percentuais e Repasse"** | 2026-05-29 09:00 → 2026-05-29 | 2026-05-29 15:00 → 2026-05-29 | 5h → 1d? |  | 0.81d → 1.75d |  |  |
| 220 | Elaborar EL-UCD_013 – Diagrama de Caso de Uso de "Configuração de Percentuais e Repasse" | 2026-05-14 11:30 → 2026-05-29 (+15d) | 2026-05-14 14:45 → 2026-05-29 (+15d) | 2.25h → 1d? |  | 11.84d → 1.75d | 217 → none | was named Integração total EL-IT_038 - "Nível de acesso ao sistema"; resources Integrador → none |
| 221 | Redigir EL-UCE_013 – Especificação de Caso de Uso de "Configuração de Percentuais e Repasse" | 2026-05-14 09:00 → 2026-05-29 (+15d) | 2026-05-14 11:15 → 2026-05-29 (+15d) | 2.25h → 1d? |  | 12.16d → 1.75d |  | was named "Cadastro de profissionais" |
| 222 | Elaborar EL-CD_013 – Diagrama de Classes de "Configuração de Percentuais e Repasse" | 2026-05-14 09:00 → 2026-05-29 (+15d) | 2026-05-14 11:15 → 2026-05-29 (+15d) | 2.25h → 1d? |  | 12.16d → 1.75d |  | was named Integração total EL-IT_039 - "Cadastro de profissionais"; resources Integrador → none |
| 223 | Elaborar EL-MER_013 – Modelo Entidade Relacionamento de "Configuração de Percentuais e Repasse" | 2026-05-14 09:00 → 2026-05-29 (+15d) | 2026-05-14 11:15 → 2026-05-29 (+15d) | 2.25h → 1d? |  | 12.16d → 1.75d |  | was named "Definição de taxa de serviço" |
| 224 | Gerar EL-Script_013 – Esquema/Script de "Configuração de Percentuais e Repasse" | 2026-05-14 09:00 → 2026-05-29 (+15d) | 2026-05-14 11:15 → 2026-05-29 (+15d) | 2.25h → 0.5d? |  | 12.16d → 2.25d |  | was named Integração total EL-IT_040 - "Definição de taxa de serviço"; resources Integrador → none |
| 225 | Elaborar EL-DBD_013 – Documentação de Banco de Dados de "Configuração de Percentuais e Repasse" | 2026-05-14 09:00 → 2026-05-29 (+15d) | 2026-05-14 11:15 → 2026-05-29 (+15d) | 2.25h → 0.5d? |  | 12.16d → 2.25d |  | was named "Controle de assinatura de contrato" |
| 226 | **"Gestão de painel jurídico"** | 2026-05-29 09:00 → 2026-05-29 | 2026-05-29 15:00 → 2026-05-29 | 5h → 1d? |  | 0.81d → 1.75d |  |  |
| 227 | Elaborar EL-UCD_014 – Diagrama de Caso de Uso de "Gestão de painel jurídico" | 2026-05-14 09:00 → 2026-05-29 (+15d) | 2026-05-14 11:00 → 2026-05-29 (+15d) | 2h → 1d? |  | 12.19d → 1.75d |  | was named "Proposta de contrato" |
| 228 | Redigir EL-UCE_014 – Especificação de Caso de Uso de "Gestão de painel jurídico" | 2026-05-14 09:00 → 2026-05-29 (+15d) | 2026-05-14 11:00 → 2026-05-29 (+15d) | 2h → 1d? |  | 12.19d → 1.75d |  | was named Integração total EL-IT_042 - "Proposta de contrato"; resources Integrador → none |
| 229 | Elaborar EL-CD_014 – Diagrama de Classes de "Gestão de painel jurídico" | 2026-05-14 09:00 → 2026-05-29 (+15d) | 2026-05-14 11:30 → 2026-05-29 (+15d) | 2.5h → 1d? |  | 12.12d → 1.75d |  | was named "Busca de profissionais" |
| 230 | Elaborar EL-MER_014 – Modelo Entidade Relacionamento de "Gestão de painel jurídico" | 2026-05-14 09:00 → 2026-05-29 (+15d) | 2026-05-14 11:30 → 2026-05-29 (+15d) | 2.5h → 1d? |  | 12.12d → 1.75d |  | was named Integração total EL-IT_043 - "Busca de profissionais"; resources Integrador → none |
| 231 | Gerar EL-Script_014 – Esquema/Script de "Gestão de painel jurídico" | 2026-05-14 09:00 → 2026-05-29 (+15d) | 2026-05-14 11:30 → 2026-05-29 (+15d) | 2.5h → 0.5d? |  | 10.56d → 2.25d |  | was named "Gerenciamento de escala de trabalho" |
| 232 | Elaborar EL-DBD_014 – Documentação de Banco de Dados de "Gestão de painel jurídico" | 2026-05-14 09:00 → 2026-05-29 (+15d) | 2026-05-14 11:30 → 2026-05-29 (+15d) | 2.5h → 0.5d? |  | 10.56d → 2.25d |  | was named Integração total EL-IT_044 - "Gerenciamento de escala de trabalho"; resources Integrador → none |
| 233 | **"Cadastro do documento do profissional"** | 2026-05-29 09:00 → 2026-05-29 | 2026-05-29 15:00 → 2026-05-29 | 5h → 1d? |  | 0.81d → 1.75d |  |  |
| 237 | Elaborar EL-MER_015 – Modelo Entidade Relacionamento de "Cadastro do documento do profissional" | 2026-05-29 09:00 → 2026-05-29 | 2026-05-29 10:15 → 2026-05-29 | 1.25h → 1d? |  | 0.72d → 1.75d |  | was named Elaborar EL-UCD_045 - Diagrama de Caso de Uso de "Controle de pagamento"; resources Analista 01 → none |
| 238 | Gerar EL-Script_015 – Esquema/Script de "Cadastro do documento do profissional" | 2026-05-29 10:15 → 2026-05-29 | 2026-05-29 11:30 → 2026-05-29 | 1.25h → 0.5d? |  | 0.72d → 2.25d | 237 → none | was named Redigir EL-UCE_045 - Especificação de Caso de Uso de "Controle de pagamento"; resources Analista 01 → none |

| ID | Task | Start | Finish | Duration | Total float | Predecessors | Other |
| --- | --- | --- | --- | --- | --- | --- | --- |
| 239 | Elaborar EL-DBD_015 – Documentação de Banco de Dados de "Cadastro do documento do profissional" | 2026-05-29 11:30 → 2026-05-29 | 2026-05-29 12:00 → 2026-05-29 | 0.5h → 0.5d? | 0.72d → 2.25d | 238 → none | was named Elaborar EL-CD_045 - Diagrama de Classes de "Controle de pagamento"; resources Analista 01 → none |
| 240 | **"Gestão de relatórios financeiros"** | 2026-05-29 09:00 → 2026-05-29 | 2026-05-29 16:00 → 2026-05-29 | 6h → 1d? | 0.06d → 1.75d |  |  |
| 241 | Elaborar EL-UCD_016 – Diagrama de Caso de Uso de "Gestão de relatórios financeiros" | 2026-05-29 13:45 → 2026-05-29 | 2026-05-29 15:15 → 2026-05-29 | 1.5h → 1d? | 0.72d → 1.75d | Elaborar EL-MER_045 - Modelo Entidade Relacionamento de "Controle de pagamento" → none | was named Gerar EL-Script_045 - Esquema/Script de "Controle de pagamento"; resources Analista 01 → none |
| 242 | Redigir EL-UCE_016 – Especificação de Caso de Uso de "Gestão de relatórios financeiros" | 2026-05-29 15:15 → 2026-05-29 | 2026-05-29 15:45 → 2026-05-29 | 0.5h → 1d? | 0.72d → 1.75d | 241 → none | was named Elaborar EL-DBD_045 - Documentação de Banco de Dados de "Controle de pagamento"; resources Analista 01 → none |
| 244 | Elaborar EL-MER_016 – Modelo Entidade Relacionamento de "Gestão de relatórios financeiros" | 2026-05-29 09:00 → 2026-05-29 | 2026-05-29 10:15 → 2026-05-29 | 1.25h → 1d? | 0.72d → 1.75d |  | was named Elaborar EL-UCD_046 - Diagrama de Caso de Uso de "Configuração de Percentuais e Repasse"; resources Analista 02 → none |
| 245 | Gerar EL-Script_016 – Esquema/Script de "Gestão de relatórios financeiros" | 2026-05-29 10:15 → 2026-05-29 | 2026-05-29 11:30 → 2026-05-29 | 1.25h → 0.5d? | 0.72d → 2.25d | 244 → none | was named Redigir EL-UCE_046 - Especificação de Caso de Uso de "Configuração de Percentuais e Repasse"; resources Analista 02 → none |
| 246 | Elaborar EL-DBD_016 – Documentação de Banco de Dados de "Gestão de relatórios financeiros" | 2026-05-29 11:30 → 2026-05-29 | 2026-05-29 13:15 → 2026-05-29 | 0.75h → 0.5d? | 0.81d → 2.25d | 245 → none | was named Elaborar EL-CD_046 - Diagrama de Classes de "Configuração de Percentuais e Repasse"; resources Analista 02 → none |
| 247 | **Construção** | 2026-05-29 09:00 → 2026-05-29 | 2026-06-01 12:00 → 2026-06-01 | 11h → 2d? | 0d → 0.75d |  |  |
| 248 | **"Controle de pagamento"** | 2026-05-29 16:00 → 2026-05-29 | 2026-06-01 12:00 → 2026-06-01 | 5h → 2d? | 0.06d → 0.75d |  |  |
| 249 | Implementar EL-CMC_012 – Classes, Métodos e Componentes de "Controle de pagamento" | 2026-05-29 14:30 → 2026-05-29 | 2026-05-29 15:00 → 2026-06-01 (+3d) | 0.5h → 2d? | 0.81d → 0.75d | Gerar EL-Script_046 - Esquema/Script de "Configuração de Percentuais e Repasse" → none | was named Elaborar EL-DBD_046 - Documentação de Banco de Dados de "Configuração de Percentuais e Repasse"; resources Analista 02 → none |
| 251 | Identificar EL-API_012 – APIs de "Controle de pagamento" | 2026-05-29 09:00 → 2026-05-29 | 2026-05-29 10:00 → 2026-05-29 | 1h → 1d? | 0.75d → 1.75d |  | was named Elaborar EL-UCD_047 - Diagrama de Caso de Uso de "Gestão de painel jurídico"; resources Analista 03 → none |
| 252 | Criar EL-IBD_012 – Interface do Mapeamento de Banco de Dados de "Controle de pagamento" | 2026-05-29 10:00 → 2026-05-29 | 2026-05-29 11:30 → 2026-05-29 | 1.5h → 1d? | 0.75d → 1.75d | 251 → none | was named Redigir EL-UCE_047 - Especificação de Caso de Uso de "Gestão de painel jurídico"; resources Analista 03 → none |
| 253 | Integrar EL-I_012 – "Controle de pagamento" | 2026-05-29 11:30 → 2026-05-29 | 2026-05-29 13:15 → 2026-05-29 | 0.75h → 1d? | 0.81d → 1.75d | 252 → none | was named Elaborar EL-CD_047 - Diagrama de Classes de "Gestão de painel jurídico"; resources Analista 03 → none |
| 254 | **"Configuração de Percentuais e Repasse"** | 2026-05-29 09:00 → 2026-05-29 | 2026-05-29 16:00 → 2026-06-01 (+3d) | 6h → 2d? | 0.69d → 0.75d |  |  |
| 255 | Implementar EL-CMC_013 – Classes, Métodos e Componentes de "Configuração de Percentuais e Repasse" | 2026-05-29 14:00 → 2026-05-29 | 2026-05-29 14:30 → 2026-06-01 (+3d) | 0.5h → 2d? | 0.81d → 0.75d | Elaborar EL-MER_047 - Modelo Entidade Relacionamento de "Gestão de painel jurídico" → none | was named Gerar EL-Script_047 - Esquema/Script de "Gestão de painel jurídico"; resources Analista 03 → none |
| 256 | Implementar EL-FUX_013 – Front-UX de "Configuração de Percentuais e Repasse" | 2026-05-29 14:30 → 2026-05-29 | 2026-05-29 15:00 → 2026-06-01 (+3d) | 0.5h → 2d? | 0.81d → 0.75d | 255 → none | was named Elaborar EL-DBD_047 - Documentação de Banco de Dados de "Gestão de painel jurídico"; resources Analista 03 → none |
| 258 | Criar EL-IBD_013 – Interface do Mapeamento de Banco de Dados de "Configuração de Percentuais e Repasse" | 2026-05-29 09:00 → 2026-05-29 | 2026-05-29 10:15 → 2026-05-29 | 1.25h → 1d? | 0.72d → 1.75d |  | was named Elaborar EL-UCD_048 - Diagrama de Caso de Uso de "Cadastro do documento do profissional"; resources Analista 01 → none |
| 259 | Integrar EL-I_013 – "Configuração de Percentuais e Repasse" | 2026-05-29 10:15 → 2026-05-29 | 2026-05-29 11:30 → 2026-05-29 | 1.25h → 1d? | 0.72d → 1.75d | 258 → none | was named Redigir EL-UCE_048 - Especificação de Caso de Uso de "Cadastro do documento do profissional"; resources Analista 01 → none |
| 260 | **"Gestão de painel jurídico"** | 2026-05-29 09:00 → 2026-05-29 | 2026-05-29 15:15 → 2026-06-01 (+3d) | 5.25h → 2d? | 0.78d → 0.75d |  |  |
| 261 | Implementar EL-CMC_014 – Classes, Métodos e Componentes de "Gestão de painel jurídico" | 2026-05-29 13:15 → 2026-05-29 | 2026-05-29 14:00 → 2026-06-01 (+3d) | 0.75h → 2d? | 0.81d → 0.75d | Elaborar EL-CD_048 - Diagrama de Classes de "Cadastro do documento do profissional" → none | was named Elaborar EL-MER_048 - Modelo Entidade Relacionamento de "Cadastro do documento do profissional"; resources Analista 01 → none |
| 262 | Implementar EL-FUX_014 – Front-UX de "Gestão de painel jurídico" | 2026-05-29 14:00 → 2026-05-29 | 2026-05-29 14:30 → 2026-06-01 (+3d) | 0.5h → 2d? | 0.81d → 0.75d | 261 → none | was named Gerar EL-Script_048 - Esquema/Script de "Cadastro do documento do profissional"; resources Analista 01 → none |
| 263 | Identificar EL-API_014 – APIs de "Gestão de painel jurídico" | 2026-05-29 14:30 → 2026-05-29 | 2026-05-29 15:00 → 2026-05-29 | 0.5h → 1d? | 0.81d → 1.75d | 262 → none | was named Elaborar EL-DBD_048 - Documentação de Banco de Dados de "Cadastro do documento do profissional"; resources Analista 01 → none |
| 265 | Integrar EL-I_014 – "Gestão de painel jurídico" | 2026-05-29 09:00 → 2026-05-29 | 2026-05-29 11:15 → 2026-05-29 | 2.25h → 1d? | 0.06d → 1.75d |  | was named Elaborar EL-UCD_049 - Diagrama de Caso de Uso de "Gestão de relatórios financeiros"; resources Analista 02 → none |
| 266 | **"Cadastro do documento do profissional"** | 2026-05-29 09:00 → 2026-05-29 | 2026-05-29 15:15 → 2026-06-01 (+3d) | 5.25h → 2d? | 0.78d → 0.75d |  |  |
| 267 | Implementar EL-CMC_015 – Classes, Métodos e Componentes de "Cadastro do documento do profissional" | 2026-05-29 13:30 → 2026-05-29 | 2026-05-29 14:15 → 2026-06-01 (+3d) | 0.75h → 2d? | 0.06d → 0.75d | Redigir EL-UCE_049 - Especificação de Caso de Uso de "Gestão de relatórios financeiros" → none | was named Elaborar EL-CD_049 - Diagrama de Classes de "Gestão de relatórios financeiros"; resources Analista 02 → none |
| 268 | Implementar EL-FUX_015 – Front-UX de "Cadastro do documento do profissional" | 2026-05-29 14:15 → 2026-05-29 | 2026-05-29 15:00 → 2026-06-01 (+3d) | 0.75h → 2d? | 0.06d → 0.75d | 267 → none | was named Elaborar EL-MER_049 - Modelo Entidade Relacionamento de "Gestão de relatórios financeiros"; resources Analista 02 → none |
| 269 | Identificar EL-API_015 – APIs de "Cadastro do documento do profissional" | 2026-05-29 15:00 → 2026-05-29 | 2026-05-29 15:30 → 2026-05-29 | 0.5h → 1d? | 0.06d → 1.75d | 268 → none | was named Gerar EL-Script_049 - Esquema/Script de "Gestão de relatórios financeiros"; resources Analista 02 → none |
| 270 | Criar EL-IBD_015 – Interface do Mapeamento de Banco de Dados de "Cadastro do documento do profissional" | 2026-05-29 15:30 → 2026-05-29 | 2026-05-29 16:00 → 2026-05-29 | 0.5h → 1d? | 0.06d → 1.75d | 269 → none | was named Elaborar EL-DBD_049 - Documentação de Banco de Dados de "Gestão de relatórios financeiros"; resources Analista 02 → none |
| 272 | **"Gestão de relatórios financeiros"** | 2026-05-29 09:00 → 2026-05-29 | 2026-05-29 15:45 → 2026-06-01 (+3d) | 5.75h → 2d? | 0d → 0.75d |  |  |
| 273 | Implementar EL-CMC_016 – Classes, Métodos e Componentes de "Gestão de relatórios financeiros" | 2026-05-29 16:00 → 2026-05-29 | 2026-05-29 17:45 → 2026-06-01 (+3d) | 1.75h → 2d? | 0.06d → 0.75d | 270 → none | was named Implementar EL-CMC_050 - Classes, Métodos e Componentes de "Controle de pagamento"; resources Dev 01 → none |
| 274 | Implementar EL-FUX_016 – Front-UX de "Gestão de relatórios financeiros" | 2026-05-29 17:45 → 2026-05-29 | 2026-06-01 10:15 → 2026-06-01 | 1.5h → 2d? | 0.06d → 0.75d | 273 → none | was named Implementar EL-FUX_050 - Front-UX de "Controle de pagamento"; resources Dev 01 → none |
| 275 | Identificar EL-API_016 – APIs de "Gestão de relatórios financeiros" | 2026-06-01 10:15 → 2026-05-29 (-3d) | 2026-06-01 11:00 → 2026-05-29 (-3d) | 0.75h → 1d? | 0.06d → 1.75d | 274 → none | was named Identificar EL-API_050 - APIs de "Controle de pagamento"; resources Dev 01 → none |
| 276 | Criar EL-IBD_016 – Interface do Mapeamento de Banco de Dados de "Gestão de relatórios financeiros" | 2026-06-01 11:00 → 2026-05-29 (-3d) | 2026-06-01 11:30 → 2026-05-29 (-3d) | 0.5h → 1d? | 0.06d → 1.75d | 275 → none | was named Criar EL-IBD_050 - Interface do Mapeamento de Banco de Dados de "Controle de pagamento"; resources Dev 01 → none |
| 277 | Integrar EL-I_016 – "Gestão de relatórios financeiros" | 2026-06-01 11:30 → 2026-05-29 (-3d) | 2026-06-01 12:00 → 2026-05-29 (-3d) | 0.5h → 1d? | 0.06d → 1.75d | 276 → none | was named Integração parcial EL-IP_050 - "Controle de pagamento"; resources Dev 01 → none |
| 278 | **Testes** | 2026-05-29 09:00 → 2026-05-29 | 2026-06-01 13:30 → 2026-05-29 (-3d) | 11.5h → 1d? | 0d → 1.75d |  |  |
| 279 | **"Controle de pagamento"** | 2026-05-29 15:45 → 2026-05-29 | 2026-06-01 13:30 → 2026-05-29 (-3d) | 5.75h → 1d? | 0d → 1.75d |  |  |
| 280 | Implementar EL-TC_012 – Casos de Teste de "Controle de pagamento" | 2026-05-29 11:30 → 2026-05-29 | 2026-05-29 14:00 → 2026-05-29 | 1.5h → 1d? | 0.69d → 1.75d | Implementar EL-CMC_051 - Classes, Métodos e Componentes de "Configuração de Percentuais e Repasse" → none | was named Implementar EL-FUX_051 - Front-UX de "Configuração de Percentuais e Repasse"; resources Dev 02 → none |
| 281 | Executar EL-T_012 – Testes de "Controle de pagamento" | 2026-05-29 14:00 → 2026-05-29 | 2026-05-29 14:45 → 2026-05-29 | 0.75h → 1d? | 0.69d → 1.75d | 280 → none | was named Identificar EL-API_051 - APIs de "Configuração de Percentuais e Repasse"; resources Dev 02 → none |
| 282 | Registrar EL-LT_012 – Logs de Teste de "Controle de pagamento" | 2026-05-29 14:45 → 2026-05-29 | 2026-05-29 15:30 → 2026-05-29 | 0.75h → 0.5d? | 0.69d → 2.25d | 281 → none | was named Criar EL-IBD_051 - Interface do Mapeamento de Banco de Dados de "Configuração de Percentuais e Repasse"; resources Dev 02 → none |
| 283 | Executar EL-TH_012 – Testes de Homologação de "Controle de pagamento" | 2026-05-29 15:30 → 2026-05-29 | 2026-05-29 16:00 → 2026-05-29 | 0.5h → 1d? | 0.69d → 1.75d | 282 → none | was named Integração parcial EL-IP_051 - "Configuração de Percentuais e Repasse"; resources Dev 02 → none |
| 284 | **"Configuração de Percentuais e Repasse"** | 2026-05-29 09:00 → 2026-05-29 | 2026-05-29 14:45 → 2026-05-29 | 4.75h → 1d? | 0.84d → 1.75d |  |  |
| 285 | Implementar EL-TC_013 – Casos de Teste de "Configuração de Percentuais e Repasse" | 2026-05-29 09:00 → 2026-05-29 | 2026-05-29 10:45 → 2026-05-29 | 1.75h → 1d? | 0.66d → 1.75d |  | was named Implementar EL-CMC_052 - Classes, Métodos e Componentes de "Gestão de painel jurídico"; resources Dev 03 → none |
| 286 | Executar EL-T_013 – Testes de "Configuração de Percentuais e Repasse" | 2026-05-29 10:45 → 2026-05-29 | 2026-05-29 13:15 → 2026-05-29 | 1.5h → 1d? | 0.78d → 1.75d | 285 → none | was named Implementar EL-FUX_052 - Front-UX de "Gestão de painel jurídico"; resources Dev 03 → none |
| 287 | Registrar EL-LT_013 – Logs de Teste de "Configuração de Percentuais e Repasse" | 2026-05-29 13:15 → 2026-05-29 | 2026-05-29 14:00 → 2026-05-29 | 0.75h → 0.5d? | 0.78d → 2.25d | 286 → none | was named Identificar EL-API_052 - APIs de "Gestão de painel jurídico"; resources Dev 03 → none |
| 288 | Executar EL-TH_013 – Testes de Homologação de "Configuração de Percentuais e Repasse" | 2026-05-29 14:00 → 2026-05-29 | 2026-05-29 14:45 → 2026-05-29 | 0.75h → 1d? | 0.78d → 1.75d | 287 → none | was named Criar EL-IBD_052 - Interface do Mapeamento de Banco de Dados de "Gestão de painel jurídico"; resources Dev 03 → none |
| 289 | **"Gestão de painel jurídico"** | 2026-05-29 09:00 → 2026-05-29 | 2026-05-29 14:45 → 2026-05-29 | 4.75h → 1d? | 0.84d → 1.75d |  |  |
| 291 | Executar EL-T_014 – Testes de "Gestão de painel jurídico" | 2026-05-29 09:00 → 2026-05-29 | 2026-05-29 10:45 → 2026-05-29 | 1.75h → 1d? | 0.66d → 1.75d |  | was named Implementar EL-CMC_053 - Classes, Métodos e Componentes de "Cadastro do documento do profissional"; resources Dev 01 → none |
| 292 | Registrar EL-LT_014 – Logs de Teste de "Gestão de painel jurídico" | 2026-05-29 10:45 → 2026-05-29 | 2026-05-29 13:15 → 2026-05-29 | 1.5h → 0.5d? | 0.78d → 2.25d | 291 → none | was named Implementar EL-FUX_053 - Front-UX de "Cadastro do documento do profissional"; resources Dev 01 → none |
| 293 | Executar EL-TH_014 – Testes de Homologação de "Gestão de painel jurídico" | 2026-05-29 13:15 → 2026-05-29 | 2026-05-29 14:00 → 2026-05-29 | 0.75h → 1d? | 0.78d → 1.75d | 292 → none | was named Identificar EL-API_053 - APIs de "Cadastro do documento do profissional"; resources Dev 01 → none |
| 294 | **"Cadastro do documento do profissional"** | 2026-05-29 09:00 → 2026-05-29 | 2026-05-29 14:45 → 2026-05-29 | 4.75h → 1d? | 0.84d → 1.75d |  |  |
| 295 | Implementar EL-TC_015 – Casos de Teste de "Cadastro do documento do profissional" | 2026-05-29 14:45 → 2026-05-29 | 2026-05-29 15:15 → 2026-05-29 | 0.5h → 1d? | 0.78d → 1.75d | Criar EL-IBD_053 - Interface do Mapeamento de Banco de Dados de "Cadastro do documento do profissional" → none | was named Integração parcial EL-IP_053 - "Cadastro do documento do profissional"; resources Dev 01 → none |
| 297 | Registrar EL-LT_015 – Logs de Teste de "Cadastro do documento do profissional" | 2026-05-29 09:00 → 2026-05-29 | 2026-05-29 11:15 → 2026-05-29 | 2.25h → 0.5d? | 0d → 2.25d |  | was named Implementar EL-CMC_054 - Classes, Métodos e Componentes de "Gestão de relatórios financeiros"; resources Dev 02 → none |
| 298 | Executar EL-TH_015 – Testes de Homologação de "Cadastro do documento do profissional" | 2026-05-29 11:15 → 2026-05-29 | 2026-05-29 13:45 → 2026-05-29 | 1.5h → 1d? | 0d → 1.75d | 297 → none | was named Implementar EL-FUX_054 - Front-UX de "Gestão de relatórios financeiros"; resources Dev 02 → none |
| 299 | **"Gestão de relatórios financeiros"** | 2026-05-29 09:00 → 2026-05-29 | 2026-05-29 15:00 → 2026-05-29 | 5h → 1d? | 0.44d → 1.75d |  |  |
| 300 | Implementar EL-TC_016 – Casos de Teste de "Gestão de relatórios financeiros" | 2026-05-29 14:30 → 2026-05-29 | 2026-05-29 15:15 → 2026-05-29 | 0.75h → 1d? | 0d → 1.75d | Identificar EL-API_054 - APIs de "Gestão de relatórios financeiros" → none | was named Criar EL-IBD_054 - Interface do Mapeamento de Banco de Dados de "Gestão de relatórios financeiros"; resources Dev 02 → none |
| 301 | Executar EL-T_016 – Testes de "Gestão de relatórios financeiros" | 2026-05-29 15:15 → 2026-05-29 | 2026-05-29 15:45 → 2026-05-29 | 0.5h → 1d? | 0d → 1.75d | 300 → none | was named Integração parcial EL-IP_054 - "Gestão de relatórios financeiros"; resources Dev 02 → none |
| 304 | ★ Marco da Entrega da Iteração 03 | 2026-05-29 12:00 → 2026-05-29 | 2026-05-29 12:00 → 2026-05-29 | 0h → 0d? | 1.06d → 2.75d | Integração total EL-IT_064 - "Gestão de relatórios financeiros" → none | resources Gerente de Projeto → A/Laisa |

## Version 5 (data date 2026-06-08, saved 2026-06-09, file Cronograma_Elora_V3_Iteracoes_Sequenciais_MSProject.mpp)

Note of the change: Merge a26e98e6295125fc00b796a95f8d23998858f8b5 into 7d3e57d2ccf8c8a450d8a9a7f2fd930d07deae7a

Last finish 2026-06-02 → 2026-07-14 (+42d). Complete tasks 0 → 141.

Added:

| ID | Task | Duration | Start | Finish | Predecessors | Constraint | Resources |
| --- | --- | --- | --- | --- | --- | --- | --- |
| 78 | **Implantação** | 4h | 2026-05-21 09:00 A | 2026-05-21 14:00 A |  |  |  |
| 79 | **"Modelo de análise"** | 4h | 2026-05-21 09:00 A | 2026-05-21 14:00 A |  |  |  |
| 80 | Integração total EL-IT_013 - "Modelo de análise" | 4h | 2026-05-21 09:00 A | 2026-05-21 14:00 A |  |  | Integrador |
| 81 | **"Controle de acesso"** | 4h | 2026-05-21 09:00 A | 2026-05-21 14:00 A |  |  |  |
| 95 | Gerar EL-Script_017 - Esquema/Script de "Nível de acesso ao sistema" | 4h | 2026-05-28 14:00 A | 2026-05-29 09:00 A | 94 |  | Analista 01 |
| 102 | Gerar EL-Script_018 - Esquema/Script de "Cadastro de profissionais" | 4h | 2026-05-28 14:00 A | 2026-05-29 09:00 A | 101 |  | Analista 02 |
| 109 | Gerar EL-Script_019 - Esquema/Script de "Definição de taxa de serviço" | 4h | 2026-05-28 14:00 A | 2026-05-29 09:00 A | 108 |  | Analista 03 |
| 116 | Gerar EL-Script_020 - Esquema/Script de "Controle de assinatura de contrato" | 4h | 2026-05-28 14:00 A | 2026-05-29 09:00 A | 115 |  | Analista 04 |
| 123 | Gerar EL-Script_021 - Esquema/Script de "Proposta de contrato" | 4h | 2026-05-28 14:00 A | 2026-05-29 09:00 A | 122 |  | Analista 05 |
| 130 | Gerar EL-Script_022 - Esquema/Script de "Busca de profissionais" | 4h | 2026-05-28 14:00 A | 2026-05-29 09:00 A | 129 |  | Analista 06 |
| 131 | Elaborar EL-DBD_022 - Documentação de Banco de Dados de "Busca de profissionais" | 4h | 2026-05-29 09:00 A | 2026-05-29 14:00 A | 130 |  | Analista 06 |
| 137 | Gerar EL-Script_023 - Esquema/Script de "Gerenciamento de escala de trabalho" | 4h | 2026-05-28 14:00 A | 2026-05-29 09:00 A | 136 |  | Analista 07 |
| 143 | Identificar EL-API_024 - APIs de "Nível de acesso ao sistema" | 8h | 2026-06-04 14:00 A | 2026-06-05 14:00 A | 142 |  | Dev 01 |
| 149 | Identificar EL-API_025 - APIs de "Cadastro de profissionais" | 8h | 2026-06-04 14:00 A | 2026-06-05 14:00 A | 148 |  | Dev 02 |
| 155 | Identificar EL-API_026 - APIs de "Definição de taxa de serviço" | 8h | 2026-06-04 14:00 A | 2026-06-05 14:00 A | 154 |  | Dev 03 |
| 161 | Identificar EL-API_027 - APIs de "Controle de assinatura de contrato" | 8h | 2026-06-04 14:00 A | 2026-06-05 14:00 A | 160 |  | Dev 04 |
| 167 | Identificar EL-API_028 - APIs de "Proposta de contrato" | 8h | 2026-06-04 14:00 A | 2026-06-05 14:00 A | 166 |  | Dev 05 |
| 173 | Identificar EL-API_029 - APIs de "Busca de profissionais" | 8h | 2026-06-04 14:00 A | 2026-06-05 14:00 A | 172 |  | Dev 06 |
| 174 | Criar EL-IBD_029 - Interface do Mapeamento de Banco de Dados de "Busca de profissionais" | 8h | 2026-06-05 14:00 A | 2026-06-08 14:00 A | 173 |  | Dev 06 |
| 179 | Identificar EL-API_030 - APIs de "Gerenciamento de escala de trabalho" | 8h | 2026-06-04 14:00 A | 2026-06-05 14:00 A | 178 |  | Dev 07 |
| 184 | Implementar EL-TC_031 - Casos de Teste de "Nível de acesso ao sistema" | 4h | 2026-06-09 09:00 | 2026-06-09 14:00 |  |  | QA 01 |
| 189 | Implementar EL-TC_032 - Casos de Teste de "Cadastro de profissionais" | 4h | 2026-06-09 09:00 | 2026-06-09 14:00 |  |  | QA 02 |
| 194 | Implementar EL-TC_033 - Casos de Teste de "Definição de taxa de serviço" | 4h | 2026-06-09 09:00 | 2026-06-09 14:00 |  |  | QA 03 |
| 199 | Implementar EL-TC_034 - Casos de Teste de "Controle de assinatura de contrato" | 4h | 2026-06-09 09:00 | 2026-06-09 14:00 |  |  | QA 04 |
| 204 | Implementar EL-TC_035 - Casos de Teste de "Proposta de contrato" | 4h | 2026-06-09 09:00 | 2026-06-09 14:00 |  |  | QA 05 |
| 209 | Implementar EL-TC_036 - Casos de Teste de "Busca de profissionais" | 4h | 2026-06-09 09:00 | 2026-06-09 14:00 |  |  | QA 06 |
| 210 | Executar EL-T_036 - Testes de "Busca de profissionais" | 6h | 2026-06-09 14:00 | 2026-06-10 11:00 | 209 |  | QA 06 |
| 211 | Registrar EL-LT_036 - Logs de Teste de "Busca de profissionais" | 4h | 2026-06-10 11:00 | 2026-06-10 16:00 | 210 |  | QA 06 |
| 212 | Executar EL-TH_036 - Testes de Homologação de "Busca de profissionais" | 6h | 2026-06-10 16:00 | 2026-06-11 14:00 | 211 |  | QA 06 |
| 219 | **"Nível de acesso ao sistema"** | 4h | 2026-06-11 09:00 | 2026-06-11 14:00 |  |  |  |
| 226 | Integração total EL-IT_041 - "Controle de assinatura de contrato" | 4h | 2026-06-11 09:00 | 2026-06-11 14:00 |  |  | Integrador 04 |
| 240 | Elaborar EL-MER_045 - Modelo Entidade Relacionamento de "Controle de pagamento" | 6h | 2026-06-17 16:00 | 2026-06-18 14:00 | 239 |  | Analista 01 |
| 247 | Elaborar EL-MER_046 - Modelo Entidade Relacionamento de "Configuração de Percentuais e Repasse" | 6h | 2026-06-17 16:00 | 2026-06-18 14:00 | 246 |  | Analista 02 |
| 248 | Gerar EL-Script_046 - Esquema/Script de "Configuração de Percentuais e Repasse" | 4h | 2026-06-18 14:00 | 2026-06-19 09:00 | 247 |  | Analista 02 |
| 254 | Elaborar EL-MER_047 - Modelo Entidade Relacionamento de "Gestão de painel jurídico" | 6h | 2026-06-17 16:00 | 2026-06-18 14:00 | 253 |  | Analista 03 |
| 260 | Elaborar EL-CD_048 - Diagrama de Classes de "Cadastro do documento do profissional" | 6h | 2026-06-17 09:00 | 2026-06-17 16:00 | 259 |  | Analista 04 |
| 266 | Redigir EL-UCE_049 - Especificação de Caso de Uso de "Gestão de relatórios financeiros" | 8h | 2026-06-16 09:00 | 2026-06-17 09:00 | 265 |  | Analista 05 |
| 279 | Implementar EL-CMC_051 - Classes, Métodos e Componentes de "Configuração de Percentuais e Repasse" | 12h | 2026-06-15 09:00 | 2026-06-16 14:00 |  |  | Dev 02 |
| 289 | Integração parcial EL-IP_052 - "Gestão de painel jurídico" | 4h | 2026-06-19 14:00 | 2026-06-22 09:00 | 288 |  | Dev 03 |
| 294 | Criar EL-IBD_053 - Interface do Mapeamento de Banco de Dados de "Cadastro do documento do profissional" | 8h | 2026-06-18 14:00 | 2026-06-19 14:00 | 293 |  | Dev 04 |
| 299 | Identificar EL-API_054 - APIs de "Gestão de relatórios financeiros" | 8h | 2026-06-17 14:00 | 2026-06-18 14:00 | 298 |  | Dev 05 |
| 304 | Implementar EL-TC_055 - Casos de Teste de "Controle de pagamento" | 4h | 2026-06-22 09:00 | 2026-06-22 14:00 |  |  | QA 01 |
| 305 | Executar EL-T_055 - Testes de "Controle de pagamento" | 6h | 2026-06-22 14:00 | 2026-06-23 11:00 | 304 |  | QA 01 |
| 306 | Registrar EL-LT_055 - Logs de Teste de "Controle de pagamento" | 4h | 2026-06-23 11:00 | 2026-06-23 16:00 | 305 |  | QA 01 |
| 307 | Executar EL-TH_055 - Testes de Homologação de "Controle de pagamento" | 6h | 2026-06-23 16:00 | 2026-06-24 14:00 | 306 |  | QA 01 |
| 309 | Implementar EL-TC_056 - Casos de Teste de "Configuração de Percentuais e Repasse" | 4h | 2026-06-22 09:00 | 2026-06-22 14:00 |  |  | QA 02 |
| 310 | Executar EL-T_056 - Testes de "Configuração de Percentuais e Repasse" | 6h | 2026-06-22 14:00 | 2026-06-23 11:00 | 309 |  | QA 02 |
| 311 | Registrar EL-LT_056 - Logs de Teste de "Configuração de Percentuais e Repasse" | 4h | 2026-06-23 11:00 | 2026-06-23 16:00 | 310 |  | QA 02 |
| 312 | Executar EL-TH_056 - Testes de Homologação de "Configuração de Percentuais e Repasse" | 6h | 2026-06-23 16:00 | 2026-06-24 14:00 | 311 |  | QA 02 |
| 314 | Implementar EL-TC_057 - Casos de Teste de "Gestão de painel jurídico" | 4h | 2026-06-22 09:00 | 2026-06-22 14:00 |  |  | QA 03 |
| 315 | Executar EL-T_057 - Testes de "Gestão de painel jurídico" | 6h | 2026-06-22 14:00 | 2026-06-23 11:00 | 314 |  | QA 03 |
| 316 | Registrar EL-LT_057 - Logs de Teste de "Gestão de painel jurídico" | 4h | 2026-06-23 11:00 | 2026-06-23 16:00 | 315 |  | QA 03 |
| 317 | Executar EL-TH_057 - Testes de Homologação de "Gestão de painel jurídico" | 6h | 2026-06-23 16:00 | 2026-06-24 14:00 | 316 |  | QA 03 |
| 319 | Implementar EL-TC_058 - Casos de Teste de "Cadastro do documento do profissional" | 4h | 2026-06-22 09:00 | 2026-06-22 14:00 |  |  | QA 04 |
| 320 | Executar EL-T_058 - Testes de "Cadastro do documento do profissional" | 6h | 2026-06-22 14:00 | 2026-06-23 11:00 | 319 |  | QA 04 |
| 321 | Registrar EL-LT_058 - Logs de Teste de "Cadastro do documento do profissional" | 4h | 2026-06-23 11:00 | 2026-06-23 16:00 | 320 |  | QA 04 |
| 322 | Executar EL-TH_058 - Testes de Homologação de "Cadastro do documento do profissional" | 6h | 2026-06-23 16:00 | 2026-06-24 14:00 | 321 |  | QA 04 |
| 324 | Implementar EL-TC_059 - Casos de Teste de "Gestão de relatórios financeiros" | 4h | 2026-06-22 09:00 | 2026-06-22 14:00 |  |  | QA 05 |
| 325 | Executar EL-T_059 - Testes de "Gestão de relatórios financeiros" | 6h | 2026-06-22 14:00 | 2026-06-23 11:00 | 324 |  | QA 05 |
| 326 | Registrar EL-LT_059 - Logs de Teste de "Gestão de relatórios financeiros" | 4h | 2026-06-23 11:00 | 2026-06-23 16:00 | 325 |  | QA 05 |
| 327 | Executar EL-TH_059 - Testes de Homologação de "Gestão de relatórios financeiros" | 6h | 2026-06-23 16:00 | 2026-06-24 14:00 | 326 |  | QA 05 |
| 328 | **Implantação** | 4h | 2026-06-24 09:00 | 2026-06-24 14:00 |  |  |  |
| 329 | **"Controle de pagamento"** | 4h | 2026-06-24 09:00 | 2026-06-24 14:00 |  |  |  |
| 330 | Integração total EL-IT_060 - "Controle de pagamento" | 4h | 2026-06-24 09:00 | 2026-06-24 14:00 |  |  | Integrador |
| 331 | **"Configuração de Percentuais e Repasse"** | 4h | 2026-06-24 09:00 | 2026-06-24 14:00 |  |  |  |
| 332 | Integração total EL-IT_061 - "Configuração de Percentuais e Repasse" | 4h | 2026-06-24 09:00 | 2026-06-24 14:00 |  |  | Integrador 02 |
| 333 | **"Gestão de painel jurídico"** | 4h | 2026-06-24 09:00 | 2026-06-24 14:00 |  |  |  |
| 334 | Integração total EL-IT_062 - "Gestão de painel jurídico" | 4h | 2026-06-24 09:00 | 2026-06-24 14:00 |  |  | Integrador 03 |
| 335 | **"Cadastro do documento do profissional"** | 4h | 2026-06-24 09:00 | 2026-06-24 14:00 |  |  |  |
| 336 | Integração total EL-IT_063 - "Cadastro do documento do profissional" | 4h | 2026-06-24 09:00 | 2026-06-24 14:00 |  |  | Integrador 04 |
| 337 | **"Gestão de relatórios financeiros"** | 4h | 2026-06-24 09:00 | 2026-06-24 14:00 |  |  |  |
| 338 | Integração total EL-IT_064 - "Gestão de relatórios financeiros" | 4h | 2026-06-24 09:00 | 2026-06-24 14:00 |  |  | Integrador |
| 340 | **Encerramento / Revisão Final** | 48h | 2026-07-06 09:00 | 2026-07-14 09:00 | 339 | start no earlier than 2026-07-06 09:00 |  |
| 341 | Revisão final do cronograma e entregáveis | 8h | 2026-07-06 09:00 | 2026-07-07 09:00 | 339 |  | Gerente de Projeto |
| 342 | Consolidação da documentação final | 16h | 2026-07-07 09:00 | 2026-07-09 09:00 | 341 |  | Analista 06 |
| 343 | Correções finais e estabilização do sistema | 16h | 2026-07-09 09:00 | 2026-07-13 09:00 | 342 |  | Dev 06 |
| 344 | Validação final e aceite do projeto | 8h | 2026-07-13 09:00 | 2026-07-14 09:00 | 343 |  | QA 05 |
| 345 | Marco de encerramento do projeto | 0h | 2026-07-14 09:00 | 2026-07-14 09:00 | 344 |  |  |

Removed: 87 Elaborar EL-DBD_005 – Documentação de Banco de Dados de "Nível de acesso ao sistema"; 89 Elaborar EL-UCD_006 – Diagrama de Caso de Uso de "Cadastro de profissionais"; 90 Redigir EL-UCE_006 – Especificação de Caso de Uso de "Cadastro de profissionais"; 97 Redigir EL-UCE_007 – Especificação de Caso de Uso de "Definição de taxa de serviço"; 104 Redigir EL-UCE_008 – Especificação de Caso de Uso de "Controle de assinatura de contrato"; 111 Redigir EL-UCE_009 – Especificação de Caso de Uso de "Proposta de contrato"; 118 Redigir EL-UCE_010 – Especificação de Caso de Uso de "Busca de profissionais"; 125 Redigir EL-UCE_011 – Especificação de Caso de Uso de "Gerenciamento de escala de trabalho"; 132 Implementar EL-CMC_005 – Classes, Métodos e Componentes de "Nível de acesso ao sistema"; 139 Implementar EL-FUX_006 – Front-UX de "Cadastro de profissionais"; 140 Identificar EL-API_006 – APIs de "Cadastro de profissionais"; 146 Identificar EL-API_007 – APIs de "Definição de taxa de serviço"; 152 Identificar EL-API_008 – APIs de "Controle de assinatura de contrato"; 158 Identificar EL-API_009 – APIs de "Proposta de contrato"; 164 Identificar EL-API_010 – APIs de "Busca de profissionais"; 170 Identificar EL-API_011 – APIs de "Gerenciamento de escala de trabalho"; 176 Executar EL-T_005 – Testes de "Nível de acesso ao sistema"; 182 Registrar EL-LT_006 – Logs de Teste de "Cadastro de profissionais"; 183 Executar EL-TH_006 – Testes de Homologação de "Cadastro de profissionais"; 188 Executar EL-TH_007 – Testes de Homologação de "Definição de taxa de serviço"; 193 Executar EL-TH_008 – Testes de Homologação de "Controle de assinatura de contrato"; 198 Executar EL-TH_009 – Testes de Homologação de "Proposta de contrato"; 203 Executar EL-TH_010 – Testes de Homologação de "Busca de profissionais"; 208 Executar EL-TH_011 – Testes de Homologação de "Gerenciamento de escala de trabalho"; 213 Elaborar EL-UCD_012 – Diagrama de Caso de Uso de "Controle de pagamento"; 234 Elaborar EL-UCD_015 – Diagrama de Caso de Uso de "Cadastro do documento do profissional"; 235 Redigir EL-UCE_015 – Especificação de Caso de Uso de "Cadastro do documento do profissional"; 236 Elaborar EL-CD_015 – Diagrama de Classes de "Cadastro do documento do profissional"; 243 Elaborar EL-CD_016 – Diagrama de Classes de "Gestão de relatórios financeiros"; 250 Implementar EL-FUX_012 – Front-UX de "Controle de pagamento"; 257 Identificar EL-API_013 – APIs de "Configuração de Percentuais e Repasse"; 264 Criar EL-IBD_014 – Interface do Mapeamento de Banco de Dados de "Gestão de painel jurídico"; 271 Integrar EL-I_015 – "Cadastro do documento do profissional"; 290 Implementar EL-TC_014 – Casos de Teste de "Gestão de painel jurídico"; 296 Executar EL-T_015 – Testes de "Cadastro do documento do profissional"; 302 Registrar EL-LT_016 – Logs de Teste de "Gestão de relatórios financeiros"; 303 Executar EL-TH_016 – Testes de Homologação de "Gestão de relatórios financeiros"

Changed:

| ID | Task | Start | Finish | Duration | Complete | Total float | Predecessors | Other |
| --- | --- | --- | --- | --- | --- | --- | --- | --- |
| 1 | **Projeto Elora** | 2026-05-29 → 2026-04-29 09:00 A (-30d) | 2026-06-02 → 2026-07-14 09:00 (+42d) | 2.75d? → 432h | 0% → 57% |  |  | was named Elora |
| 2 | **Iteração 01** | 2026-05-29 → 2026-04-29 09:00 A (-30d) | 2026-06-02 → 2026-05-22 18:00 (-11d) | 2.75d? → 143h | 0% → 99% |  |  | constraint none → start no earlier than 2026-04-29 09:00 |
| 3 | **Modelagem** | 2026-05-29 → 2026-04-29 09:00 A (-30d) | 2026-06-02 → 2026-05-05 14:00 A (-28d) | 2.75d? → 36h | 0% → 100% | 0d → none |  |  |
| 4 | **"Modelo de análise"** | 2026-05-29 → 2026-04-29 09:00 A (-30d) | 2026-06-02 → 2026-05-05 14:00 A (-28d) | 2.75d? → 36h | 0% → 100% | 0d → none |  |  |
| 5 | Elaborar EL-UCD_001 - Diagrama de Caso de Uso de "Modelo de análise" | 2026-05-29 → 2026-04-29 09:00 A (-30d) | 2026-05-29 → 2026-04-30 09:00 A (-29d) | 1d? → 8h | 0% → 100% | 0d → none |  | was named Elaborar EL-UCD_001 – Diagrama de Caso de Uso de "Modelo de análise"; resources A/Laisa → Analista 01 |
| 6 | Redigir EL-UCE_001 - Especificação de Caso de Uso de "Modelo de análise" | 2026-05-29 → 2026-04-30 09:00 A (-29d) | 2026-05-29 → 2026-05-01 09:00 A (-28d) | 1d? → 8h | 0% → 100% | 0d → none | 5SS → 5 | was named Redigir EL-UCE_001 – Especificação de Caso de Uso de "Modelo de análise"; resources A/Fernanda → Analista 01 |
| 7 | Elaborar EL-CD_001 - Diagrama de Classes de "Modelo de análise" | 2026-06-01 → 2026-05-01 09:00 A (-31d) | 2026-06-01 → 2026-05-01 16:00 A (-31d) | 0.5d? → 6h | 0% → 100% | 0d → none |  | was named Elaborar EL-CD_001 – Diagrama de Classes de "Modelo de análise"; resources A/Carlos; A/Fernanda → Analista 01 |
| 8 | Elaborar EL-MER_001 - Modelo Entidade Relacionamento de "Modelo de análise" | 2026-06-01 → 2026-05-01 16:00 A (-31d) | 2026-06-01 → 2026-05-04 14:00 A (-28d) | 1d? → 6h | 0% → 100% | 0d → none | 7SS → 7 | was named Elaborar EL-MER_001 – Modelo Entidade Relacionamento de "Modelo de análise"; resources A/Laisa → Analista 01 |
| 9 | Gerar EL-Script_001 - Esquema/Script de "Modelo de análise" | 2026-06-02 → 2026-05-04 14:00 A (-29d) | 2026-06-02 → 2026-05-05 09:00 A (-28d) | 0.5d? → 4h | 0% → 100% | 0d → none |  | was named Gerar EL-Script_001 – Esquema/Script de "Modelo de análise"; resources A/Carlos → Analista 01 |
| 10 | Elaborar EL-DBD_001 - Documentação de Banco de Dados de "Modelo de análise" | 2026-06-02 → 2026-05-05 09:00 A (-28d) | 2026-06-02 → 2026-05-05 14:00 A (-28d) | 0.25d? → 4h | 0% → 100% | 0d → none |  | was named Elaborar EL-DBD_001 – Documentação de Banco de Dados de "Modelo de análise"; resources A/Laisa; A/Fernanda → Analista 01 |
| 11 | **"Controle de acesso"** | 2026-05-29 → 2026-04-29 09:00 A (-30d) | 2026-05-29 → 2026-05-05 14:00 A (-24d) | 1d? → 36h | 0% → 100% | 1.75d → none |  |  |
| 12 | Elaborar EL-UCD_002 - Diagrama de Caso de Uso de "Controle de acesso" | 2026-05-29 → 2026-04-29 09:00 A (-30d) | 2026-05-29 → 2026-04-30 09:00 A (-29d) | 0d? → 8h | 0% → 100% | 2.75d → none |  | was named Elaborar EL-UCD_002 – Diagrama de Caso de Uso de "Controle de acesso"; resources A/Fernanda → Analista 02 |
| 13 | Redigir EL-UCE_002 - Especificação de Caso de Uso de "Controle de acesso" | 2026-05-29 → 2026-04-30 09:00 A (-29d) | 2026-05-29 → 2026-05-01 09:00 A (-28d) | 1d? → 8h | 0% → 100% | 1.75d → none | none → 12 | was named Redigir EL-UCE_002 – Especificação de Caso de Uso de "Controle de acesso"; resources A/Carlos → Analista 02 |
| 14 | Elaborar EL-CD_002 - Diagrama de Classes de "Controle de acesso" | 2026-05-29 → 2026-05-01 09:00 A (-28d) | 2026-05-29 → 2026-05-01 16:00 A (-28d) | 0.5d? → 6h | 0% → 100% | 2.25d → none | none → 13 | was named Elaborar EL-CD_002 – Diagrama de Classes de "Controle de acesso"; resources A/Carlos; A/Laisa → Analista 02 |
| 15 | Elaborar EL-MER_002 - Modelo Entidade Relacionamento de "Controle de acesso" | 2026-05-29 → 2026-05-01 16:00 A (-28d) | 2026-05-29 → 2026-05-04 14:00 A (-25d) | 1d? → 6h | 0% → 100% | 1.75d → none | none → 14 | was named Elaborar EL-MER_002 – Modelo Entidade Relacionamento de "Controle de acesso"; resources A/Fernanda → Analista 02 |
| 16 | Gerar EL-Script_002 - Esquema/Script de "Controle de acesso" | 2026-05-29 → 2026-05-04 14:00 A (-25d) | 2026-05-29 → 2026-05-05 09:00 A (-24d) | 0.5d? → 4h | 0% → 100% | 2.25d → none | none → 15 | was named Gerar EL-Script_002 – Esquema/Script de "Controle de acesso"; resources A/Laisa → Analista 02 |
| 17 | Elaborar EL-DBD_002 - Documentação de Banco de Dados de "Controle de acesso" | 2026-05-29 → 2026-05-05 09:00 A (-24d) | 2026-05-29 → 2026-05-05 14:00 A (-24d) | 0.25d? → 4h | 0% → 100% | 2.5d → none | none → 16 | was named Elaborar EL-DBD_002 – Documentação de Banco de Dados de "Controle de acesso"; resources A/Fernanda; A/Carlos → Analista 02 |
| 18 | **"Cadastro de usuário"** | 2026-05-29 → 2026-04-29 09:00 A (-30d) | 2026-05-29 → 2026-05-05 14:00 A (-24d) | 0d? → 36h | 0% → 100% | 2.75d → none |  |  |
| 19 | Elaborar EL-UCD_003 - Diagrama de Caso de Uso de "Cadastro de usuário" | 2026-05-29 → 2026-04-29 09:00 A (-30d) | 2026-05-29 → 2026-04-30 09:00 A (-29d) | 0d? → 8h | 0% → 100% | 2.75d → none |  | was named Elaborar EL-UCD_003 – Diagrama de Caso de Uso de "Cadastro de usuário"; resources A/Carlos → Analista 03 |
| 20 | Redigir EL-UCE_003 - Especificação de Caso de Uso de "Cadastro de usuário" | 2026-05-29 → 2026-04-30 09:00 A (-29d) | 2026-05-29 → 2026-05-01 09:00 A (-28d) | 0d? → 8h | 0% → 100% | 2.75d → none | none → 19 | was named Redigir EL-UCE_003 – Especificação de Caso de Uso de "Cadastro de usuário"; resources A/Laisa → Analista 03 |
| 21 | Elaborar EL-CD_003 - Diagrama de Classes de "Cadastro de usuário" | 2026-05-29 → 2026-05-01 09:00 A (-28d) | 2026-05-29 → 2026-05-01 16:00 A (-28d) | 0d? → 6h | 0% → 100% | 2.75d → none | none → 20 | was named Elaborar EL-CD_003 – Diagrama de Classes de "Cadastro de usuário"; resources A/Laisa; A/Fernanda → Analista 03 |
| 22 | Elaborar EL-MER_003 - Modelo Entidade Relacionamento de "Cadastro de usuário" | 2026-05-29 → 2026-05-01 16:00 A (-28d) | 2026-05-29 → 2026-05-04 14:00 A (-25d) | 0d? → 6h | 0% → 100% | 2.75d → none | none → 21 | was named Elaborar EL-MER_003 – Modelo Entidade Relacionamento de "Cadastro de usuário"; resources A/Carlos → Analista 03 |
| 23 | Gerar EL-Script_003 - Esquema/Script de "Cadastro de usuário" | 2026-05-29 → 2026-05-04 14:00 A (-25d) | 2026-05-29 → 2026-05-05 09:00 A (-24d) | 0d? → 4h | 0% → 100% | 2.75d → none | none → 22 | was named Gerar EL-Script_003 – Esquema/Script de "Cadastro de usuário"; resources A/Fernanda → Analista 03 |
| 24 | Elaborar EL-DBD_003 - Documentação de Banco de Dados de "Cadastro de usuário" | 2026-05-29 → 2026-05-05 09:00 A (-24d) | 2026-05-29 → 2026-05-05 14:00 A (-24d) | 0d? → 4h | 0% → 100% | 2.75d → none | none → 23 | was named Elaborar EL-DBD_003 – Documentação de Banco de Dados de "Cadastro de usuário"; resources A/Carlos; A/Laisa → Analista 03 |
| 25 | **"Gestão de pagamento"** | 2026-05-29 → 2026-04-29 09:00 A (-30d) | 2026-05-29 → 2026-05-05 14:00 A (-24d) | 0d? → 36h | 0% → 100% | 2.75d → none |  |  |
| 26 | Elaborar EL-UCD_004 - Diagrama de Caso de Uso de "Gestão de pagamento" | 2026-05-29 → 2026-04-29 09:00 A (-30d) | 2026-05-29 → 2026-04-30 09:00 A (-29d) | 0d? → 8h | 0% → 100% | 2.75d → none |  | was named Elaborar EL-UCD_004 – Diagrama de Caso de Uso de "Gestão de pagamento"; resources A/Laisa → Analista 04 |
| 27 | Redigir EL-UCE_004 - Especificação de Caso de Uso de "Gestão de pagamento" | 2026-05-29 → 2026-04-30 09:00 A (-29d) | 2026-05-29 → 2026-05-01 09:00 A (-28d) | 0d? → 8h | 0% → 100% | 2.75d → none | none → 26 | was named Redigir EL-UCE_004 – Especificação de Caso de Uso de "Gestão de pagamento"; resources A/Fernanda → Analista 04 |
| 28 | Elaborar EL-CD_004 - Diagrama de Classes de "Gestão de pagamento" | 2026-05-29 → 2026-05-01 09:00 A (-28d) | 2026-05-29 → 2026-05-01 16:00 A (-28d) | 0d? → 6h | 0% → 100% | 2.75d → none | none → 27 | was named Elaborar EL-CD_004 – Diagrama de Classes de "Gestão de pagamento"; resources A/Fernanda; A/Carlos → Analista 04 |
| 29 | Elaborar EL-MER_004 - Modelo Entidade Relacionamento de "Gestão de pagamento" | 2026-05-29 → 2026-05-01 16:00 A (-28d) | 2026-05-29 → 2026-05-04 14:00 A (-25d) | 0d? → 6h | 0% → 100% | 2.75d → none | none → 28 | was named Elaborar EL-MER_004 – Modelo Entidade Relacionamento de "Gestão de pagamento"; resources A/Laisa → Analista 04 |
| 30 | Gerar EL-Script_004 - Esquema/Script de "Gestão de pagamento" | 2026-05-29 → 2026-05-04 14:00 A (-25d) | 2026-05-29 → 2026-05-05 09:00 A (-24d) | 0d? → 4h | 0% → 100% | 2.75d → none | none → 29 | was named Gerar EL-Script_004 – Esquema/Script de "Gestão de pagamento"; resources A/Carlos → Analista 04 |
| 31 | Elaborar EL-DBD_004 - Documentação de Banco de Dados de "Gestão de pagamento" | 2026-05-29 → 2026-05-05 09:00 A (-24d) | 2026-05-29 → 2026-05-05 14:00 A (-24d) | 0d? → 4h | 0% → 100% | 2.75d → none | none → 30 | was named Elaborar EL-DBD_004 – Documentação de Banco de Dados de "Gestão de pagamento"; resources A/Laisa; A/Fernanda → Analista 04 |
| 32 | **Construção** | 2026-05-29 → 2026-05-07 09:00 A (-22d) | 2026-05-29 → 2026-05-14 09:00 A (-15d) | 0d? → 5d | 0% → 100% | 2.75d → none |  |  |
| 33 | **"Modelo de análise"** | 2026-05-29 → 2026-05-07 09:00 A (-22d) | 2026-05-29 → 2026-05-14 09:00 A (-15d) | 0d? → 40h | 0% → 100% | 2.75d → none |  |  |
| 34 | Implementar EL-CMC_005 - Classes, Métodos e Componentes de "Modelo de análise" | 2026-05-29 → 2026-05-07 09:00 A (-22d) | 2026-05-29 → 2026-05-08 14:00 A (-21d) | 0d? → 12h | 0% → 100% | 2.75d → none |  | was named Implementar EL-CMC_001 – Classes, Métodos e Componentes de "Modelo de análise"; resources A/Laisa; DEV/Heitor → Dev 01 |
| 35 | Implementar EL-FUX_005 - Front-UX de "Modelo de análise" | 2026-05-29 → 2026-05-08 14:00 A (-21d) | 2026-05-29 → 2026-05-11 14:00 A (-18d) | 0d? → 8h | 0% → 100% | 2.75d → none | none → 34 | was named Implementar EL-FUX_001 – Front-UX de "Modelo de análise"; resources DEV/Mariana → Dev 01 |
| 36 | Identificar EL-API_005 - APIs de "Modelo de análise" | 2026-05-29 → 2026-05-11 14:00 A (-18d) | 2026-05-29 → 2026-05-12 14:00 A (-17d) | 0d? → 8h | 0% → 100% | 2.75d → none | none → 35 | was named Identificar EL-API_001 – APIs de "Modelo de análise"; resources DEV/Heitor → Dev 01 |
| 37 | Criar EL-IBD_005 - Interface do Mapeamento de Banco de Dados de "Modelo de análise" | 2026-05-29 → 2026-05-12 14:00 A (-17d) | 2026-05-29 → 2026-05-13 14:00 A (-16d) | 0d? → 8h | 0% → 100% | 2.75d → none | none → 36 | was named Criar EL-IBD_001 – Interface do Mapeamento de Banco de Dados de "Modelo de análise"; resources DEV/Heitor → Dev 01 |
| 38 | Integração parcial EL-IP_005 - "Modelo de análise" | 2026-05-29 → 2026-05-13 14:00 A (-16d) | 2026-05-29 → 2026-05-14 09:00 A (-15d) | 0d? → 4h | 0% → 100% | 2.75d → none | none → 37 | was named Integrar EL-I_001 – "Modelo de análise"; resources DEV/Heitor; I/Paulo → Dev 01 |
| 39 | **"Controle de acesso"** | 2026-05-29 → 2026-05-07 09:00 A (-22d) | 2026-05-29 → 2026-05-14 09:00 A (-15d) | 0d? → 40h | 0% → 100% | 2.75d → none |  |  |
| 40 | Implementar EL-CMC_006 - Classes, Métodos e Componentes de "Controle de acesso" | 2026-05-29 → 2026-05-07 09:00 A (-22d) | 2026-05-29 → 2026-05-08 14:00 A (-21d) | 0d? → 12h | 0% → 100% | 2.75d → none |  | was named Implementar EL-CMC_002 – Classes, Métodos e Componentes de "Controle de acesso"; resources A/Fernanda; DEV/Lucas → Dev 02 |
| 41 | Implementar EL-FUX_006 - Front-UX de "Controle de acesso" | 2026-05-29 → 2026-05-08 14:00 A (-21d) | 2026-05-29 → 2026-05-11 14:00 A (-18d) | 0d? → 8h | 0% → 100% | 2.75d → none | none → 40 | was named Implementar EL-FUX_002 – Front-UX de "Controle de acesso"; resources DEV/Lucas → Dev 02 |
| 42 | Identificar EL-API_006 - APIs de "Controle de acesso" | 2026-05-29 → 2026-05-11 14:00 A (-18d) | 2026-05-29 → 2026-05-12 14:00 A (-17d) | 0d? → 8h | 0% → 100% | 2.75d → none | none → 41 | was named Identificar EL-API_002 – APIs de "Controle de acesso"; resources DEV/Lucas → Dev 02 |
| 43 | Criar EL-IBD_006 - Interface do Mapeamento de Banco de Dados de "Controle de acesso" | 2026-05-29 → 2026-05-12 14:00 A (-17d) | 2026-05-29 → 2026-05-13 14:00 A (-16d) | 0d? → 8h | 0% → 100% | 2.75d → none | none → 42 | was named Criar EL-IBD_002 – Interface do Mapeamento de Banco de Dados de "Controle de acesso"; resources DEV/Mariana; DEV/Lucas → Dev 02 |
| 44 | Integração parcial EL-IP_006 - "Controle de acesso" | 2026-05-29 → 2026-05-13 14:00 A (-16d) | 2026-05-29 → 2026-05-14 09:00 A (-15d) | 0d? → 4h | 0% → 100% | 2.75d → none | none → 43 | was named Integrar EL-I_002 – "Controle de acesso"; resources DEV/Lucas; I/Paulo → Dev 02 |
| 45 | **"Cadastro de usuário"** | 2026-05-29 → 2026-05-07 09:00 A (-22d) | 2026-05-29 → 2026-05-14 09:00 A (-15d) | 0d? → 40h | 0% → 100% | 2.75d → none |  |  |
| 46 | Implementar EL-CMC_007 - Classes, Métodos e Componentes de "Cadastro de usuário" | 2026-05-29 → 2026-05-07 09:00 A (-22d) | 2026-05-29 → 2026-05-08 14:00 A (-21d) | 0d? → 12h | 0% → 100% | 2.75d → none |  | was named Implementar EL-CMC_003 – Classes, Métodos e Componentes de "Cadastro de usuário"; resources A/Laisa; DEV/Heitor → Dev 03 |
| 47 | Implementar EL-FUX_007 - Front-UX de "Cadastro de usuário" | 2026-05-29 → 2026-05-08 14:00 A (-21d) | 2026-05-29 → 2026-05-11 14:00 A (-18d) | 0d? → 8h | 0% → 100% | 2.75d → none | none → 46 | was named Implementar EL-FUX_003 – Front-UX de "Cadastro de usuário"; resources DEV/Mariana → Dev 03 |
| 48 | Identificar EL-API_007 - APIs de "Cadastro de usuário" | 2026-05-29 → 2026-05-11 14:00 A (-18d) | 2026-05-29 → 2026-05-12 14:00 A (-17d) | 0d? → 8h | 0% → 100% | 2.75d → none | none → 47 | was named Identificar EL-API_003 – APIs de "Cadastro de usuário"; resources DEV/Heitor → Dev 03 |
| 49 | Criar EL-IBD_007 - Interface do Mapeamento de Banco de Dados de "Cadastro de usuário" | 2026-05-29 → 2026-05-12 14:00 A (-17d) | 2026-05-29 → 2026-05-13 14:00 A (-16d) | 0d? → 8h | 0% → 100% | 2.75d → none | none → 48 | was named Criar EL-IBD_003 – Interface do Mapeamento de Banco de Dados de "Cadastro de usuário"; resources DEV/Heitor → Dev 03 |
| 50 | Integração parcial EL-IP_007 - "Cadastro de usuário" | 2026-05-29 → 2026-05-13 14:00 A (-16d) | 2026-05-29 → 2026-05-14 09:00 A (-15d) | 0d? → 4h | 0% → 100% | 2.75d → none | none → 49 | was named Integrar EL-I_003 – "Cadastro de usuário"; resources DEV/Heitor; I/Paulo → Dev 03 |
| 51 | **"Gestão de pagamento"** | 2026-05-29 → 2026-05-07 09:00 A (-22d) | 2026-05-29 → 2026-05-14 09:00 A (-15d) | 0d? → 40h | 0% → 100% | 2.75d → none |  |  |
| 52 | Implementar EL-CMC_008 - Classes, Métodos e Componentes de "Gestão de pagamento" | 2026-05-29 → 2026-05-07 09:00 A (-22d) | 2026-05-29 → 2026-05-08 14:00 A (-21d) | 0d? → 12h | 0% → 100% | 2.75d → none |  | was named Implementar EL-CMC_004 – Classes, Métodos e Componentes de "Gestão de pagamento"; resources A/Fernanda; DEV/Lucas → Dev 04 |
| 53 | Implementar EL-FUX_008 - Front-UX de "Gestão de pagamento" | 2026-05-29 → 2026-05-08 14:00 A (-21d) | 2026-05-29 → 2026-05-11 14:00 A (-18d) | 0d? → 8h | 0% → 100% | 2.75d → none | none → 52 | was named Implementar EL-FUX_004 – Front-UX de "Gestão de pagamento"; resources DEV/Lucas → Dev 04 |
| 54 | Identificar EL-API_008 - APIs de "Gestão de pagamento" | 2026-05-29 → 2026-05-11 14:00 A (-18d) | 2026-05-29 → 2026-05-12 14:00 A (-17d) | 0d? → 8h | 0% → 100% | 2.75d → none | none → 53 | was named Identificar EL-API_004 – APIs de "Gestão de pagamento"; resources DEV/Lucas → Dev 04 |
| 55 | Criar EL-IBD_008 - Interface do Mapeamento de Banco de Dados de "Gestão de pagamento" | 2026-05-29 → 2026-05-12 14:00 A (-17d) | 2026-05-29 → 2026-05-13 14:00 A (-16d) | 0d? → 8h | 0% → 100% | 2.75d → none | none → 54 | was named Criar EL-IBD_004 – Interface do Mapeamento de Banco de Dados de "Gestão de pagamento"; resources DEV/Mariana; DEV/Lucas → Dev 04 |
| 56 | Integração parcial EL-IP_008 - "Gestão de pagamento" | 2026-05-29 → 2026-05-13 14:00 A (-16d) | 2026-05-29 → 2026-05-14 09:00 A (-15d) | 0d? → 4h | 0% → 100% | 2.75d → none | none → 55 | was named Integrar EL-I_004 – "Gestão de pagamento"; resources DEV/Lucas; I/Paulo → Dev 04 |
| 57 | **Testes** | 2026-05-29 → 2026-05-18 09:00 A (-11d) | 2026-05-29 → 2026-05-20 14:00 A (-9d) | 0d? → 20h | 0% → 100% | 2.75d → none |  |  |
| 58 | **"Modelo de análise"** | 2026-05-29 → 2026-05-18 09:00 A (-11d) | 2026-05-29 → 2026-05-20 14:00 A (-9d) | 0d? → 20h | 0% → 100% | 2.75d → none |  |  |
| 59 | Implementar EL-TC_009 - Casos de Teste de "Modelo de análise" | 2026-05-29 → 2026-05-18 09:00 A (-11d) | 2026-05-29 → 2026-05-18 14:00 A (-11d) | 0d? → 4h | 0% → 100% | 2.75d → none |  | was named Implementar EL-TC_001 – Casos de Teste de "Modelo de análise"; resources QA/Rogério → QA 01 |
| 60 | Executar EL-T_009 - Testes de "Modelo de análise" | 2026-05-29 → 2026-05-18 14:00 A (-11d) | 2026-05-29 → 2026-05-19 11:00 A (-10d) | 0d? → 6h | 0% → 100% | 2.75d → none | none → 59 | was named Executar EL-T_001 – Testes de "Modelo de análise"; resources QA/Rogério → QA 01 |
| 61 | Registrar EL-LT_009 - Logs de Teste de "Modelo de análise" | 2026-05-29 → 2026-05-19 11:00 A (-10d) | 2026-05-29 → 2026-05-19 16:00 A (-10d) | 0d? → 4h | 0% → 100% | 2.75d → none | none → 60 | was named Registrar EL-LT_001 – Logs de Teste de "Modelo de análise"; resources A/Carlos → QA 01 |
| 62 | Executar EL-TH_009 - Testes de Homologação de "Modelo de análise" | 2026-05-29 → 2026-05-19 16:00 A (-10d) | 2026-05-29 → 2026-05-20 14:00 A (-9d) | 0d? → 6h | 0% → 100% | 2.75d → none | none → 61 | was named Executar EL-TH_001 – Testes de Homologação de "Modelo de análise"; resources QA/Rogério; A/Carlos → QA 01 |
| 63 | **"Controle de acesso"** | 2026-05-29 → 2026-05-18 09:00 A (-11d) | 2026-05-29 → 2026-05-20 14:00 A (-9d) | 0d? → 20h | 0% → 100% | 2.75d → none |  |  |
| 64 | Implementar EL-TC_010 - Casos de Teste de "Controle de acesso" | 2026-05-29 → 2026-05-18 09:00 A (-11d) | 2026-05-29 → 2026-05-18 14:00 A (-11d) | 0d? → 4h | 0% → 100% | 2.75d → none |  | was named Implementar EL-TC_002 – Casos de Teste de "Controle de acesso"; resources QA/Beatriz → QA 02 |
| 65 | Executar EL-T_010 - Testes de "Controle de acesso" | 2026-05-29 → 2026-05-18 14:00 A (-11d) | 2026-05-29 → 2026-05-19 11:00 A (-10d) | 0d? → 6h | 0% → 100% | 2.75d → none | none → 64 | was named Executar EL-T_002 – Testes de "Controle de acesso"; resources QA/Beatriz → QA 02 |
| 66 | Registrar EL-LT_010 - Logs de Teste de "Controle de acesso" | 2026-05-29 → 2026-05-19 11:00 A (-10d) | 2026-05-29 → 2026-05-19 16:00 A (-10d) | 0d? → 4h | 0% → 100% | 2.75d → none | none → 65 | was named Registrar EL-LT_002 – Logs de Teste de "Controle de acesso"; resources A/Laisa → QA 02 |
| 67 | Executar EL-TH_010 - Testes de Homologação de "Controle de acesso" | 2026-05-29 → 2026-05-19 16:00 A (-10d) | 2026-05-29 → 2026-05-20 14:00 A (-9d) | 0d? → 6h | 0% → 100% | 2.75d → none | none → 66 | was named Executar EL-TH_002 – Testes de Homologação de "Controle de acesso"; resources QA/Beatriz; A/Laisa → QA 02 |
| 68 | **"Cadastro de usuário"** | 2026-05-29 → 2026-05-18 09:00 A (-11d) | 2026-05-29 → 2026-05-20 14:00 A (-9d) | 0d? → 20h | 0% → 100% | 2.75d → none |  |  |
| 69 | Implementar EL-TC_011 - Casos de Teste de "Cadastro de usuário" | 2026-05-29 → 2026-05-18 09:00 A (-11d) | 2026-05-29 → 2026-05-18 14:00 A (-11d) | 0d? → 4h | 0% → 100% | 2.75d → none |  | was named Implementar EL-TC_003 – Casos de Teste de "Cadastro de usuário"; resources QA/Rogério → QA 03 |
| 70 | Executar EL-T_011 - Testes de "Cadastro de usuário" | 2026-05-29 → 2026-05-18 14:00 A (-11d) | 2026-05-29 → 2026-05-19 11:00 A (-10d) | 0d? → 6h | 0% → 100% | 2.75d → none | none → 69 | was named Executar EL-T_003 – Testes de "Cadastro de usuário"; resources QA/Rogério → QA 03 |

| ID | Task | Start | Finish | Duration | Complete | Total float | Predecessors | Other |
| --- | --- | --- | --- | --- | --- | --- | --- | --- |
| 71 | Registrar EL-LT_011 - Logs de Teste de "Cadastro de usuário" | 2026-05-29 → 2026-05-19 11:00 A (-10d) | 2026-05-29 → 2026-05-19 16:00 A (-10d) | 0d? → 4h | 0% → 100% | 2.75d → none | none → 70 | was named Registrar EL-LT_003 – Logs de Teste de "Cadastro de usuário"; resources A/Fernanda → QA 03 |
| 72 | Executar EL-TH_011 - Testes de Homologação de "Cadastro de usuário" | 2026-05-29 → 2026-05-19 16:00 A (-10d) | 2026-05-29 → 2026-05-20 14:00 A (-9d) | 0d? → 6h | 0% → 100% | 2.75d → none | none → 71 | was named Executar EL-TH_003 – Testes de Homologação de "Cadastro de usuário"; resources QA/Rogério; A/Fernanda → QA 03 |
| 73 | **"Gestão de pagamento"** | 2026-05-29 → 2026-05-18 09:00 A (-11d) | 2026-05-29 → 2026-05-20 14:00 A (-9d) | 0d? → 20h | 0% → 100% | 2.75d → none |  |  |
| 74 | Implementar EL-TC_012 - Casos de Teste de "Gestão de pagamento" | 2026-05-29 → 2026-05-18 09:00 A (-11d) | 2026-05-29 → 2026-05-18 14:00 A (-11d) | 0d? → 4h | 0% → 100% | 2.75d → none |  | was named Implementar EL-TC_004 – Casos de Teste de "Gestão de pagamento"; resources QA/Beatriz → QA 04 |
| 75 | Executar EL-T_012 - Testes de "Gestão de pagamento" | 2026-05-29 → 2026-05-18 14:00 A (-11d) | 2026-05-29 → 2026-05-19 11:00 A (-10d) | 0d? → 6h | 0% → 100% | 2.75d → none | none → 74 | was named Executar EL-T_004 – Testes de "Gestão de pagamento"; resources QA/Beatriz → QA 04 |
| 76 | Registrar EL-LT_012 - Logs de Teste de "Gestão de pagamento" | 2026-05-29 → 2026-05-19 11:00 A (-10d) | 2026-05-29 → 2026-05-19 16:00 A (-10d) | 0d? → 4h | 0% → 100% | 2.75d → none | none → 75 | was named Registrar EL-LT_004 – Logs de Teste de "Gestão de pagamento"; resources A/Carlos → QA 04 |
| 77 | Executar EL-TH_012 - Testes de Homologação de "Gestão de pagamento" | 2026-05-29 → 2026-05-19 16:00 A (-10d) | 2026-05-29 → 2026-05-20 14:00 A (-9d) | 0d? → 6h | 0% → 100% | 2.75d → none | none → 76 | was named Executar EL-TH_004 – Testes de Homologação de "Gestão de pagamento"; resources QA/Beatriz; A/Carlos → QA 04 |
| 82 | Integração total EL-IT_014 - "Controle de acesso" | 2026-05-29 → 2026-05-21 09:00 A (-8d) | 2026-05-29 → 2026-05-21 14:00 A (-8d) | 1d? → 4h | 0% → 100% | 1.75d → none |  | was named Elaborar EL-UCD_005 – Diagrama de Caso de Uso de "Nível de acesso ao sistema"; resources A/Fernanda → Integrador 02 |
| 83 | **"Cadastro de usuário"** | 2026-05-29 → 2026-05-21 09:00 A (-8d) | 2026-05-29 → 2026-05-21 14:00 A (-8d) | 0.5d? → 4h | 0% → 100% | 2.25d → none |  | was named Redigir EL-UCE_005 – Especificação de Caso de Uso de "Nível de acesso ao sistema"; resources A/Carlos; A/Fernanda → none |
| 84 | Integração total EL-IT_015 - "Cadastro de usuário" | 2026-05-29 → 2026-05-21 09:00 A (-8d) | 2026-05-29 → 2026-05-21 14:00 A (-8d) | 1d? → 4h | 0% → 100% | 1.75d → none |  | was named Elaborar EL-CD_005 – Diagrama de Classes de "Nível de acesso ao sistema"; resources A/Laisa → Integrador 03 |
| 85 | **"Gestão de pagamento"** | 2026-05-29 → 2026-05-21 09:00 A (-8d) | 2026-05-29 → 2026-05-21 14:00 A (-8d) | 1d? → 4h | 0% → 100% | 1.75d → none |  | was named Elaborar EL-MER_005 – Modelo Entidade Relacionamento de "Nível de acesso ao sistema"; resources A/Carlos → none |
| 86 | Integração total EL-IT_016 - "Gestão de pagamento" | 2026-05-29 → 2026-05-21 09:00 A (-8d) | 2026-05-29 → 2026-05-21 14:00 A (-8d) | 0.25d? → 4h | 0% → 100% | 2.5d → none |  | was named Gerar EL-Script_005 – Esquema/Script de "Nível de acesso ao sistema"; resources A/Laisa; A/Fernanda → Integrador 04 |
| 87 | ★ Marco da Entrega da Iteração 01 | 2026-05-29 → 2026-05-22 18:00 (-7d) | 2026-05-29 → 2026-05-22 18:00 (-7d) | 0d → 0h |  | 2.75d → 0d | none → 86 | constraint none → must finish on 2026-05-22 18:00 |
| 88 | **Iteração 02** | 2026-05-29 → 2026-05-25 09:00 A (-4d) | 2026-06-01 → 2026-06-12 18:00 (+11d) | 2d? → 119h | 0% → 76% | 0.75d → 21.12d | none → 87 | constraint none → start no earlier than 2026-05-25 09:00 |
| 89 | **Modelagem** | 2026-05-29 → 2026-05-25 09:00 A (-4d) | 2026-05-29 → 2026-05-29 14:00 A | 1d? → 36h | 0% → 100% | 1.75d → none | none → 87 |  |
| 90 | **"Nível de acesso ao sistema"** | 2026-05-29 → 2026-05-25 09:00 A (-4d) | 2026-05-29 → 2026-05-29 14:00 A | 1d? → 36h | 0% → 100% | 1.75d → none | none → 87 | resources A/Laisa → none |
| 91 | Elaborar EL-UCD_017 - Diagrama de Caso de Uso de "Nível de acesso ao sistema" | 2026-05-29 → 2026-05-25 09:00 A (-4d) | 2026-05-29 → 2026-05-26 09:00 A (-3d) | 1d? → 8h | 0% → 100% | 1.75d → none |  | was named Elaborar EL-CD_006 – Diagrama de Classes de "Cadastro de profissionais"; resources none → Analista 01 |
| 92 | Redigir EL-UCE_017 - Especificação de Caso de Uso de "Nível de acesso ao sistema" | 2026-05-29 → 2026-05-26 09:00 A (-3d) | 2026-05-29 → 2026-05-27 09:00 A (-2d) | 1d? → 8h | 0% → 100% | 1.75d → none | none → 91 | was named Elaborar EL-MER_006 – Modelo Entidade Relacionamento de "Cadastro de profissionais"; resources none → Analista 01 |
| 93 | Elaborar EL-CD_017 - Diagrama de Classes de "Nível de acesso ao sistema" | 2026-05-29 → 2026-05-27 09:00 A (-2d) | 2026-05-29 → 2026-05-27 16:00 A (-2d) | 0.5d? → 6h | 0% → 100% | 2.25d → none | none → 92 | was named Gerar EL-Script_006 – Esquema/Script de "Cadastro de profissionais"; resources none → Analista 01 |
| 94 | Elaborar EL-MER_017 - Modelo Entidade Relacionamento de "Nível de acesso ao sistema" | 2026-05-29 → 2026-05-27 16:00 A (-2d) | 2026-05-29 → 2026-05-28 14:00 A (-1d) | 0.5d? → 6h | 0% → 100% | 2.25d → none | none → 93 | was named Elaborar EL-DBD_006 – Documentação de Banco de Dados de "Cadastro de profissionais"; resources none → Analista 01 |
| 96 | Elaborar EL-DBD_017 - Documentação de Banco de Dados de "Nível de acesso ao sistema" | 2026-05-29 → 2026-05-29 09:00 A | 2026-05-29 → 2026-05-29 14:00 A | 1d? → 4h | 0% → 100% | 1.75d → none | none → 95 | was named Elaborar EL-UCD_007 – Diagrama de Caso de Uso de "Definição de taxa de serviço"; resources none → Analista 01 |
| 97 | **"Cadastro de profissionais"** | 2026-05-29 → 2026-05-25 09:00 A (-4d) | 2026-05-29 → 2026-05-29 14:00 A | 1d? → 36h | 0% → 100% | 1.75d → none |  |  |
| 98 | Elaborar EL-UCD_018 - Diagrama de Caso de Uso de "Cadastro de profissionais" | 2026-05-29 → 2026-05-25 09:00 A (-4d) | 2026-05-29 → 2026-05-26 09:00 A (-3d) | 1d? → 8h | 0% → 100% | 1.75d → none |  | was named Elaborar EL-CD_007 – Diagrama de Classes de "Definição de taxa de serviço"; resources none → Analista 02 |
| 99 | Redigir EL-UCE_018 - Especificação de Caso de Uso de "Cadastro de profissionais" | 2026-05-29 → 2026-05-26 09:00 A (-3d) | 2026-05-29 → 2026-05-27 09:00 A (-2d) | 1d? → 8h | 0% → 100% | 1.75d → none | none → 98 | was named Elaborar EL-MER_007 – Modelo Entidade Relacionamento de "Definição de taxa de serviço"; resources none → Analista 02 |
| 100 | Elaborar EL-CD_018 - Diagrama de Classes de "Cadastro de profissionais" | 2026-05-29 → 2026-05-27 09:00 A (-2d) | 2026-05-29 → 2026-05-27 16:00 A (-2d) | 0.5d? → 6h | 0% → 100% | 2.25d → none | none → 99 | was named Gerar EL-Script_007 – Esquema/Script de "Definição de taxa de serviço"; resources none → Analista 02 |
| 101 | Elaborar EL-MER_018 - Modelo Entidade Relacionamento de "Cadastro de profissionais" | 2026-05-29 → 2026-05-27 16:00 A (-2d) | 2026-05-29 → 2026-05-28 14:00 A (-1d) | 0.5d? → 6h | 0% → 100% | 2.25d → none | none → 100 | was named Elaborar EL-DBD_007 – Documentação de Banco de Dados de "Definição de taxa de serviço"; resources none → Analista 02 |
| 103 | Elaborar EL-DBD_018 - Documentação de Banco de Dados de "Cadastro de profissionais" | 2026-05-29 → 2026-05-29 09:00 A | 2026-05-29 → 2026-05-29 14:00 A | 1d? → 4h | 0% → 100% | 1.75d → none | none → 102 | was named Elaborar EL-UCD_008 – Diagrama de Caso de Uso de "Controle de assinatura de contrato"; resources none → Analista 02 |
| 104 | **"Definição de taxa de serviço"** | 2026-05-29 → 2026-05-25 09:00 A (-4d) | 2026-05-29 → 2026-05-29 14:00 A | 1d? → 36h | 0% → 100% | 1.75d → none |  |  |
| 105 | Elaborar EL-UCD_019 - Diagrama de Caso de Uso de "Definição de taxa de serviço" | 2026-05-29 → 2026-05-25 09:00 A (-4d) | 2026-05-29 → 2026-05-26 09:00 A (-3d) | 1d? → 8h | 0% → 100% | 1.75d → none |  | was named Elaborar EL-CD_008 – Diagrama de Classes de "Controle de assinatura de contrato"; resources none → Analista 03 |
| 106 | Redigir EL-UCE_019 - Especificação de Caso de Uso de "Definição de taxa de serviço" | 2026-05-29 → 2026-05-26 09:00 A (-3d) | 2026-05-29 → 2026-05-27 09:00 A (-2d) | 1d? → 8h | 0% → 100% | 1.75d → none | none → 105 | was named Elaborar EL-MER_008 – Modelo Entidade Relacionamento de "Controle de assinatura de contrato"; resources none → Analista 03 |
| 107 | Elaborar EL-CD_019 - Diagrama de Classes de "Definição de taxa de serviço" | 2026-05-29 → 2026-05-27 09:00 A (-2d) | 2026-05-29 → 2026-05-27 16:00 A (-2d) | 0.5d? → 6h | 0% → 100% | 2.25d → none | none → 106 | was named Gerar EL-Script_008 – Esquema/Script de "Controle de assinatura de contrato"; resources none → Analista 03 |
| 108 | Elaborar EL-MER_019 - Modelo Entidade Relacionamento de "Definição de taxa de serviço" | 2026-05-29 → 2026-05-27 16:00 A (-2d) | 2026-05-29 → 2026-05-28 14:00 A (-1d) | 0.5d? → 6h | 0% → 100% | 2.25d → none | none → 107 | was named Elaborar EL-DBD_008 – Documentação de Banco de Dados de "Controle de assinatura de contrato"; resources none → Analista 03 |
| 110 | Elaborar EL-DBD_019 - Documentação de Banco de Dados de "Definição de taxa de serviço" | 2026-05-29 → 2026-05-29 09:00 A | 2026-05-29 → 2026-05-29 14:00 A | 1d? → 4h | 0% → 100% | 1.75d → none | none → 109 | was named Elaborar EL-UCD_009 – Diagrama de Caso de Uso de "Proposta de contrato"; resources none → Analista 03 |
| 111 | **"Controle de assinatura de contrato"** | 2026-05-29 → 2026-05-25 09:00 A (-4d) | 2026-05-29 → 2026-05-29 14:00 A | 1d? → 36h | 0% → 100% | 1.75d → none |  |  |
| 112 | Elaborar EL-UCD_020 - Diagrama de Caso de Uso de "Controle de assinatura de contrato" | 2026-05-29 → 2026-05-25 09:00 A (-4d) | 2026-05-29 → 2026-05-26 09:00 A (-3d) | 1d? → 8h | 0% → 100% | 1.75d → none |  | was named Elaborar EL-CD_009 – Diagrama de Classes de "Proposta de contrato"; resources none → Analista 04 |
| 113 | Redigir EL-UCE_020 - Especificação de Caso de Uso de "Controle de assinatura de contrato" | 2026-05-29 → 2026-05-26 09:00 A (-3d) | 2026-05-29 → 2026-05-27 09:00 A (-2d) | 1d? → 8h | 0% → 100% | 1.75d → none | none → 112 | was named Elaborar EL-MER_009 – Modelo Entidade Relacionamento de "Proposta de contrato"; resources none → Analista 04 |
| 114 | Elaborar EL-CD_020 - Diagrama de Classes de "Controle de assinatura de contrato" | 2026-05-29 → 2026-05-27 09:00 A (-2d) | 2026-05-29 → 2026-05-27 16:00 A (-2d) | 0.5d? → 6h | 0% → 100% | 2.25d → none | none → 113 | was named Gerar EL-Script_009 – Esquema/Script de "Proposta de contrato"; resources none → Analista 04 |
| 115 | Elaborar EL-MER_020 - Modelo Entidade Relacionamento de "Controle de assinatura de contrato" | 2026-05-29 → 2026-05-27 16:00 A (-2d) | 2026-05-29 → 2026-05-28 14:00 A (-1d) | 0.5d? → 6h | 0% → 100% | 2.25d → none | none → 114 | was named Elaborar EL-DBD_009 – Documentação de Banco de Dados de "Proposta de contrato"; resources none → Analista 04 |
| 117 | Elaborar EL-DBD_020 - Documentação de Banco de Dados de "Controle de assinatura de contrato" | 2026-05-29 → 2026-05-29 09:00 A | 2026-05-29 → 2026-05-29 14:00 A | 1d? → 4h | 0% → 100% | 1.75d → none | none → 116 | was named Elaborar EL-UCD_010 – Diagrama de Caso de Uso de "Busca de profissionais"; resources none → Analista 04 |
| 118 | **"Proposta de contrato"** | 2026-05-29 → 2026-05-25 09:00 A (-4d) | 2026-05-29 → 2026-05-29 14:00 A | 1d? → 36h | 0% → 100% | 1.75d → none |  |  |
| 119 | Elaborar EL-UCD_021 - Diagrama de Caso de Uso de "Proposta de contrato" | 2026-05-29 → 2026-05-25 09:00 A (-4d) | 2026-05-29 → 2026-05-26 09:00 A (-3d) | 1d? → 8h | 0% → 100% | 1.75d → none |  | was named Elaborar EL-CD_010 – Diagrama de Classes de "Busca de profissionais"; resources none → Analista 05 |
| 120 | Redigir EL-UCE_021 - Especificação de Caso de Uso de "Proposta de contrato" | 2026-05-29 → 2026-05-26 09:00 A (-3d) | 2026-05-29 → 2026-05-27 09:00 A (-2d) | 1d? → 8h | 0% → 100% | 1.75d → none | none → 119 | was named Elaborar EL-MER_010 – Modelo Entidade Relacionamento de "Busca de profissionais"; resources none → Analista 05 |
| 121 | Elaborar EL-CD_021 - Diagrama de Classes de "Proposta de contrato" | 2026-05-29 → 2026-05-27 09:00 A (-2d) | 2026-05-29 → 2026-05-27 16:00 A (-2d) | 0.5d? → 6h | 0% → 100% | 2.25d → none | none → 120 | was named Gerar EL-Script_010 – Esquema/Script de "Busca de profissionais"; resources none → Analista 05 |
| 122 | Elaborar EL-MER_021 - Modelo Entidade Relacionamento de "Proposta de contrato" | 2026-05-29 → 2026-05-27 16:00 A (-2d) | 2026-05-29 → 2026-05-28 14:00 A (-1d) | 0.5d? → 6h | 0% → 100% | 2.25d → none | none → 121 | was named Elaborar EL-DBD_010 – Documentação de Banco de Dados de "Busca de profissionais"; resources none → Analista 05 |
| 124 | Elaborar EL-DBD_021 - Documentação de Banco de Dados de "Proposta de contrato" | 2026-05-29 → 2026-05-29 09:00 A | 2026-05-29 → 2026-05-29 14:00 A | 1d? → 4h | 0% → 100% | 1.75d → none | none → 123 | was named Elaborar EL-UCD_011 – Diagrama de Caso de Uso de "Gerenciamento de escala de trabalho"; resources none → Analista 05 |
| 125 | **"Busca de profissionais"** | 2026-05-29 → 2026-05-25 09:00 A (-4d) | 2026-05-29 → 2026-05-29 14:00 A | 1d? → 36h | 0% → 100% | 1.75d → none |  |  |
| 126 | Elaborar EL-UCD_022 - Diagrama de Caso de Uso de "Busca de profissionais" | 2026-05-29 → 2026-05-25 09:00 A (-4d) | 2026-05-29 → 2026-05-26 09:00 A (-3d) | 1d? → 8h | 0% → 100% | 1.75d → none |  | was named Elaborar EL-CD_011 – Diagrama de Classes de "Gerenciamento de escala de trabalho"; resources none → Analista 06 |
| 127 | Redigir EL-UCE_022 - Especificação de Caso de Uso de "Busca de profissionais" | 2026-05-29 → 2026-05-26 09:00 A (-3d) | 2026-05-29 → 2026-05-27 09:00 A (-2d) | 1d? → 8h | 0% → 100% | 1.75d → none | none → 126 | was named Elaborar EL-MER_011 – Modelo Entidade Relacionamento de "Gerenciamento de escala de trabalho"; resources none → Analista 06 |
| 128 | Elaborar EL-CD_022 - Diagrama de Classes de "Busca de profissionais" | 2026-05-29 → 2026-05-27 09:00 A (-2d) | 2026-05-29 → 2026-05-27 16:00 A (-2d) | 0.5d? → 6h | 0% → 100% | 2.25d → none | none → 127 | was named Gerar EL-Script_011 – Esquema/Script de "Gerenciamento de escala de trabalho"; resources none → Analista 06 |
| 129 | Elaborar EL-MER_022 - Modelo Entidade Relacionamento de "Busca de profissionais" | 2026-05-29 → 2026-05-27 16:00 A (-2d) | 2026-05-29 → 2026-05-28 14:00 A (-1d) | 0.5d? → 6h | 0% → 100% | 2.25d → none | none → 128 | was named Elaborar EL-DBD_011 – Documentação de Banco de Dados de "Gerenciamento de escala de trabalho"; resources none → Analista 06 |
| 132 | **"Gerenciamento de escala de trabalho"** | 2026-05-29 → 2026-05-25 09:00 A (-4d) | 2026-05-29 → 2026-05-29 14:00 A | 1d? → 36h | 0% → 100% | 1.75d → none |  |  |
| 133 | Elaborar EL-UCD_023 - Diagrama de Caso de Uso de "Gerenciamento de escala de trabalho" | 2026-05-29 → 2026-05-25 09:00 A (-4d) | 2026-06-01 → 2026-05-26 09:00 A (-6d) | 2d? → 8h | 0% → 100% | 0.75d → none |  | was named Implementar EL-FUX_005 – Front-UX de "Nível de acesso ao sistema"; resources none → Analista 07 |
| 134 | Redigir EL-UCE_023 - Especificação de Caso de Uso de "Gerenciamento de escala de trabalho" | 2026-05-29 → 2026-05-26 09:00 A (-3d) | 2026-05-29 → 2026-05-27 09:00 A (-2d) | 1d? → 8h | 0% → 100% | 1.75d → none | none → 133 | was named Identificar EL-API_005 – APIs de "Nível de acesso ao sistema"; resources none → Analista 07 |
| 135 | Elaborar EL-CD_023 - Diagrama de Classes de "Gerenciamento de escala de trabalho" | 2026-05-29 → 2026-05-27 09:00 A (-2d) | 2026-05-29 → 2026-05-27 16:00 A (-2d) | 1d? → 6h | 0% → 100% | 1.75d → none | none → 134 | was named Criar EL-IBD_005 – Interface do Mapeamento de Banco de Dados de "Nível de acesso ao sistema"; resources none → Analista 07 |
| 136 | Elaborar EL-MER_023 - Modelo Entidade Relacionamento de "Gerenciamento de escala de trabalho" | 2026-05-29 → 2026-05-27 16:00 A (-2d) | 2026-05-29 → 2026-05-28 14:00 A (-1d) | 1d? → 6h | 0% → 100% | 1.75d → none | none → 135 | was named Integrar EL-I_005 – "Nível de acesso ao sistema"; resources none → Analista 07 |
| 138 | Elaborar EL-DBD_023 - Documentação de Banco de Dados de "Gerenciamento de escala de trabalho" | 2026-05-29 → 2026-05-29 09:00 A | 2026-06-01 → 2026-05-29 14:00 A (-3d) | 2d? → 4h | 0% → 100% | 0.75d → none | none → 137 | was named Implementar EL-CMC_006 – Classes, Métodos e Componentes de "Cadastro de profissionais"; resources none → Analista 07 |
| 139 | **Construção** | 2026-05-29 → 2026-06-02 09:00 A (+4d) | 2026-06-01 → 2026-06-09 09:00 A (+8d) | 2d? → 40h | 0% → 100% | 0.75d → none |  |  |
| 140 | **"Nível de acesso ao sistema"** | 2026-05-29 → 2026-06-02 09:00 A (+4d) | 2026-06-01 → 2026-06-09 09:00 A (+8d) | 2d? → 40h | 0% → 100% | 0.75d → none |  |  |
| 141 | Implementar EL-CMC_024 - Classes, Métodos e Componentes de "Nível de acesso ao sistema" | 2026-05-29 → 2026-06-02 09:00 A (+4d) | 2026-05-29 → 2026-06-03 14:00 A (+5d) | 1d? → 12h | 0% → 100% | 1.75d → none |  | was named Criar EL-IBD_006 – Interface do Mapeamento de Banco de Dados de "Cadastro de profissionais"; resources none → Dev 01 |
| 142 | Implementar EL-FUX_024 - Front-UX de "Nível de acesso ao sistema" | 2026-05-29 → 2026-06-03 14:00 A (+5d) | 2026-05-29 → 2026-06-04 14:00 A (+6d) | 1d? → 8h | 0% → 100% | 1.75d → none | none → 141 | was named Integrar EL-I_006 – "Cadastro de profissionais"; resources none → Dev 01 |
| 144 | Criar EL-IBD_024 - Interface do Mapeamento de Banco de Dados de "Nível de acesso ao sistema" | 2026-05-29 → 2026-06-05 14:00 A (+7d) | 2026-06-01 → 2026-06-08 14:00 A (+7d) | 2d? → 8h | 0% → 100% | 0.75d → none | none → 143 | was named Implementar EL-CMC_007 – Classes, Métodos e Componentes de "Definição de taxa de serviço"; resources none → Dev 01 |
| 145 | Integração parcial EL-IP_024 - "Nível de acesso ao sistema" | 2026-05-29 → 2026-06-08 14:00 A (+10d) | 2026-06-01 → 2026-06-09 09:00 A (+8d) | 2d? → 4h | 0% → 100% | 0.75d → none | none → 144 | was named Implementar EL-FUX_007 – Front-UX de "Definição de taxa de serviço"; resources none → Dev 01 |
| 146 | **"Cadastro de profissionais"** | 2026-05-29 → 2026-06-02 09:00 A (+4d) | 2026-06-01 → 2026-06-09 09:00 A (+8d) | 2d? → 40h | 0% → 100% | 0.75d → none |  |  |
| 147 | Implementar EL-CMC_025 - Classes, Métodos e Componentes de "Cadastro de profissionais" | 2026-05-29 → 2026-06-02 09:00 A (+4d) | 2026-05-29 → 2026-06-03 14:00 A (+5d) | 1d? → 12h | 0% → 100% | 1.75d → none |  | was named Criar EL-IBD_007 – Interface do Mapeamento de Banco de Dados de "Definição de taxa de serviço"; resources none → Dev 02 |
| 148 | Implementar EL-FUX_025 - Front-UX de "Cadastro de profissionais" | 2026-05-29 → 2026-06-03 14:00 A (+5d) | 2026-05-29 → 2026-06-04 14:00 A (+6d) | 1d? → 8h | 0% → 100% | 1.75d → none | none → 147 | was named Integrar EL-I_007 – "Definição de taxa de serviço"; resources none → Dev 02 |
| 150 | Criar EL-IBD_025 - Interface do Mapeamento de Banco de Dados de "Cadastro de profissionais" | 2026-05-29 → 2026-06-05 14:00 A (+7d) | 2026-06-01 → 2026-06-08 14:00 A (+7d) | 2d? → 8h | 0% → 100% | 0.75d → none | none → 149 | was named Implementar EL-CMC_008 – Classes, Métodos e Componentes de "Controle de assinatura de contrato"; resources none → Dev 02 |
| 151 | Integração parcial EL-IP_025 - "Cadastro de profissionais" | 2026-05-29 → 2026-06-08 14:00 A (+10d) | 2026-06-01 → 2026-06-09 09:00 A (+8d) | 2d? → 4h | 0% → 100% | 0.75d → none | none → 150 | was named Implementar EL-FUX_008 – Front-UX de "Controle de assinatura de contrato"; resources none → Dev 02 |
| 152 | **"Definição de taxa de serviço"** | 2026-05-29 → 2026-06-02 09:00 A (+4d) | 2026-06-01 → 2026-06-09 09:00 A (+8d) | 2d? → 40h | 0% → 100% | 0.75d → none |  |  |
| 153 | Implementar EL-CMC_026 - Classes, Métodos e Componentes de "Definição de taxa de serviço" | 2026-05-29 → 2026-06-02 09:00 A (+4d) | 2026-05-29 → 2026-06-03 14:00 A (+5d) | 1d? → 12h | 0% → 100% | 1.75d → none |  | was named Criar EL-IBD_008 – Interface do Mapeamento de Banco de Dados de "Controle de assinatura de contrato"; resources none → Dev 03 |
| 154 | Implementar EL-FUX_026 - Front-UX de "Definição de taxa de serviço" | 2026-05-29 → 2026-06-03 14:00 A (+5d) | 2026-05-29 → 2026-06-04 14:00 A (+6d) | 1d? → 8h | 0% → 100% | 1.75d → none | none → 153 | was named Integrar EL-I_008 – "Controle de assinatura de contrato"; resources none → Dev 03 |

| ID | Task | Start | Finish | Duration | Complete | Total float | Predecessors | Other |
| --- | --- | --- | --- | --- | --- | --- | --- | --- |
| 156 | Criar EL-IBD_026 - Interface do Mapeamento de Banco de Dados de "Definição de taxa de serviço" | 2026-05-29 → 2026-06-05 14:00 A (+7d) | 2026-06-01 → 2026-06-08 14:00 A (+7d) | 2d? → 8h | 0% → 100% | 0.75d → none | none → 155 | was named Implementar EL-CMC_009 – Classes, Métodos e Componentes de "Proposta de contrato"; resources none → Dev 03 |
| 157 | Integração parcial EL-IP_026 - "Definição de taxa de serviço" | 2026-05-29 → 2026-06-08 14:00 A (+10d) | 2026-06-01 → 2026-06-09 09:00 A (+8d) | 2d? → 4h | 0% → 100% | 0.75d → none | none → 156 | was named Implementar EL-FUX_009 – Front-UX de "Proposta de contrato"; resources none → Dev 03 |
| 158 | **"Controle de assinatura de contrato"** | 2026-05-29 → 2026-06-02 09:00 A (+4d) | 2026-06-01 → 2026-06-09 09:00 A (+8d) | 2d? → 40h | 0% → 100% | 0.75d → none |  |  |
| 159 | Implementar EL-CMC_027 - Classes, Métodos e Componentes de "Controle de assinatura de contrato" | 2026-05-29 → 2026-06-02 09:00 A (+4d) | 2026-05-29 → 2026-06-03 14:00 A (+5d) | 1d? → 12h | 0% → 100% | 1.75d → none |  | was named Criar EL-IBD_009 – Interface do Mapeamento de Banco de Dados de "Proposta de contrato"; resources none → Dev 04 |
| 160 | Implementar EL-FUX_027 - Front-UX de "Controle de assinatura de contrato" | 2026-05-29 → 2026-06-03 14:00 A (+5d) | 2026-05-29 → 2026-06-04 14:00 A (+6d) | 1d? → 8h | 0% → 100% | 1.75d → none | none → 159 | was named Integrar EL-I_009 – "Proposta de contrato"; resources none → Dev 04 |
| 162 | Criar EL-IBD_027 - Interface do Mapeamento de Banco de Dados de "Controle de assinatura de contrato" | 2026-05-29 → 2026-06-05 14:00 A (+7d) | 2026-06-01 → 2026-06-08 14:00 A (+7d) | 2d? → 8h | 0% → 100% | 0.75d → none | none → 161 | was named Implementar EL-CMC_010 – Classes, Métodos e Componentes de "Busca de profissionais"; resources none → Dev 04 |
| 163 | Integração parcial EL-IP_027 - "Controle de assinatura de contrato" | 2026-05-29 → 2026-06-08 14:00 A (+10d) | 2026-06-01 → 2026-06-09 09:00 A (+8d) | 2d? → 4h | 0% → 100% | 0.75d → none | none → 162 | was named Implementar EL-FUX_010 – Front-UX de "Busca de profissionais"; resources none → Dev 04 |
| 164 | **"Proposta de contrato"** | 2026-05-29 → 2026-06-02 09:00 A (+4d) | 2026-06-01 → 2026-06-09 09:00 A (+8d) | 2d? → 40h | 0% → 100% | 0.75d → none |  |  |
| 165 | Implementar EL-CMC_028 - Classes, Métodos e Componentes de "Proposta de contrato" | 2026-05-29 → 2026-06-02 09:00 A (+4d) | 2026-05-29 → 2026-06-03 14:00 A (+5d) | 1d? → 12h | 0% → 100% | 1.75d → none |  | was named Criar EL-IBD_010 – Interface do Mapeamento de Banco de Dados de "Busca de profissionais"; resources none → Dev 05 |
| 166 | Implementar EL-FUX_028 - Front-UX de "Proposta de contrato" | 2026-05-29 → 2026-06-03 14:00 A (+5d) | 2026-05-29 → 2026-06-04 14:00 A (+6d) | 1d? → 8h | 0% → 100% | 1.75d → none | none → 165 | was named Integrar EL-I_010 – "Busca de profissionais"; resources none → Dev 05 |
| 168 | Criar EL-IBD_028 - Interface do Mapeamento de Banco de Dados de "Proposta de contrato" | 2026-05-29 → 2026-06-05 14:00 A (+7d) | 2026-06-01 → 2026-06-08 14:00 A (+7d) | 2d? → 8h | 0% → 100% | 0.75d → none | none → 167 | was named Implementar EL-CMC_011 – Classes, Métodos e Componentes de "Gerenciamento de escala de trabalho"; resources none → Dev 05 |
| 169 | Integração parcial EL-IP_028 - "Proposta de contrato" | 2026-05-29 → 2026-06-08 14:00 A (+10d) | 2026-06-01 → 2026-06-09 09:00 A (+8d) | 2d? → 4h | 0% → 100% | 0.75d → none | none → 168 | was named Implementar EL-FUX_011 – Front-UX de "Gerenciamento de escala de trabalho"; resources none → Dev 05 |
| 170 | **"Busca de profissionais"** | 2026-05-29 → 2026-06-02 09:00 A (+4d) | 2026-06-01 → 2026-06-09 09:00 A (+8d) | 2d? → 40h | 0% → 100% | 0.75d → none |  |  |
| 171 | Implementar EL-CMC_029 - Classes, Métodos e Componentes de "Busca de profissionais" | 2026-05-29 → 2026-06-02 09:00 A (+4d) | 2026-05-29 → 2026-06-03 14:00 A (+5d) | 1d? → 12h | 0% → 100% | 1.75d → none |  | was named Criar EL-IBD_011 – Interface do Mapeamento de Banco de Dados de "Gerenciamento de escala de trabalho"; resources none → Dev 06 |
| 172 | Implementar EL-FUX_029 - Front-UX de "Busca de profissionais" | 2026-05-29 → 2026-06-03 14:00 A (+5d) | 2026-05-29 → 2026-06-04 14:00 A (+6d) | 1d? → 8h | 0% → 100% | 1.75d → none | none → 171 | was named Integrar EL-I_011 – "Gerenciamento de escala de trabalho"; resources none → Dev 06 |
| 175 | Integração parcial EL-IP_029 - "Busca de profissionais" | 2026-05-29 → 2026-06-08 14:00 A (+10d) | 2026-05-29 → 2026-06-09 09:00 A (+11d) | 1d? → 4h | 0% → 100% | 1.75d → none | none → 174 | was named Implementar EL-TC_005 – Casos de Teste de "Nível de acesso ao sistema"; resources none → Dev 06 |
| 176 | **"Gerenciamento de escala de trabalho"** | 2026-05-29 → 2026-06-02 09:00 A (+4d) | 2026-06-01 → 2026-06-09 09:00 A (+8d) | 2d? → 40h | 0% → 100% | 0.75d → none |  |  |
| 177 | Implementar EL-CMC_030 - Classes, Métodos e Componentes de "Gerenciamento de escala de trabalho" | 2026-05-29 → 2026-06-02 09:00 A (+4d) | 2026-05-29 → 2026-06-03 14:00 A (+5d) | 0.5d? → 12h | 0% → 100% | 2.25d → none |  | was named Registrar EL-LT_005 – Logs de Teste de "Nível de acesso ao sistema"; resources none → Dev 07 |
| 178 | Implementar EL-FUX_030 - Front-UX de "Gerenciamento de escala de trabalho" | 2026-05-29 → 2026-06-03 14:00 A (+5d) | 2026-05-29 → 2026-06-04 14:00 A (+6d) | 1d? → 8h | 0% → 100% | 1.75d → none | none → 177 | was named Executar EL-TH_005 – Testes de Homologação de "Nível de acesso ao sistema"; resources none → Dev 07 |
| 180 | Criar EL-IBD_030 - Interface do Mapeamento de Banco de Dados de "Gerenciamento de escala de trabalho" | 2026-05-29 → 2026-06-05 14:00 A (+7d) | 2026-05-29 → 2026-06-08 14:00 A (+10d) | 1d? → 8h | 0% → 100% | 1.75d → none | none → 179 | was named Implementar EL-TC_006 – Casos de Teste de "Cadastro de profissionais"; resources none → Dev 07 |
| 181 | Integração parcial EL-IP_030 - "Gerenciamento de escala de trabalho" | 2026-05-29 → 2026-06-08 14:00 A (+10d) | 2026-05-29 → 2026-06-09 09:00 A (+11d) | 1d? → 4h | 0% → 100% | 1.75d → none | none → 180 | was named Executar EL-T_006 – Testes de "Cadastro de profissionais"; resources none → Dev 07 |
| 182 | **Testes** | 2026-05-29 → 2026-06-09 09:00 (+11d) | 2026-05-29 → 2026-06-11 14:00 (+13d) | 1d? → 2.5d |  | 1.75d → none |  |  |
| 183 | **"Nível de acesso ao sistema"** | 2026-05-29 → 2026-06-09 09:00 (+11d) | 2026-05-29 → 2026-06-11 14:00 (+13d) | 1d? → 20h |  | 1.75d → 22.5d |  |  |
| 185 | Executar EL-T_031 - Testes de "Nível de acesso ao sistema" | 2026-05-29 → 2026-06-09 14:00 (+11d) | 2026-05-29 → 2026-06-10 11:00 (+12d) | 1d? → 6h |  | 1.75d → 22.5d | none → 184 | was named Implementar EL-TC_007 – Casos de Teste de "Definição de taxa de serviço"; resources none → QA 01 |
| 186 | Registrar EL-LT_031 - Logs de Teste de "Nível de acesso ao sistema" | 2026-05-29 → 2026-06-10 11:00 (+12d) | 2026-05-29 → 2026-06-10 16:00 (+12d) | 1d? → 4h |  | 1.75d → 22.5d | none → 185 | was named Executar EL-T_007 – Testes de "Definição de taxa de serviço"; resources none → QA 01 |
| 187 | Executar EL-TH_031 - Testes de Homologação de "Nível de acesso ao sistema" | 2026-05-29 → 2026-06-10 16:00 (+12d) | 2026-05-29 → 2026-06-11 14:00 (+13d) | 0.5d? → 6h |  | 2.25d → 22.5d | none → 186 | was named Registrar EL-LT_007 – Logs de Teste de "Definição de taxa de serviço"; resources none → QA 01 |
| 188 | **"Cadastro de profissionais"** | 2026-05-29 → 2026-06-09 09:00 (+11d) | 2026-05-29 → 2026-06-11 14:00 (+13d) | 1d? → 20h |  | 1.75d → 22.5d |  |  |
| 190 | Executar EL-T_032 - Testes de "Cadastro de profissionais" | 2026-05-29 → 2026-06-09 14:00 (+11d) | 2026-05-29 → 2026-06-10 11:00 (+12d) | 1d? → 6h |  | 1.75d → 22.5d | none → 189 | was named Implementar EL-TC_008 – Casos de Teste de "Controle de assinatura de contrato"; resources none → QA 02 |
| 191 | Registrar EL-LT_032 - Logs de Teste de "Cadastro de profissionais" | 2026-05-29 → 2026-06-10 11:00 (+12d) | 2026-05-29 → 2026-06-10 16:00 (+12d) | 1d? → 4h |  | 1.75d → 22.5d | none → 190 | was named Executar EL-T_008 – Testes de "Controle de assinatura de contrato"; resources none → QA 02 |
| 192 | Executar EL-TH_032 - Testes de Homologação de "Cadastro de profissionais" | 2026-05-29 → 2026-06-10 16:00 (+12d) | 2026-05-29 → 2026-06-11 14:00 (+13d) | 0.5d? → 6h |  | 2.25d → 22.5d | none → 191 | was named Registrar EL-LT_008 – Logs de Teste de "Controle de assinatura de contrato"; resources none → QA 02 |
| 193 | **"Definição de taxa de serviço"** | 2026-05-29 → 2026-06-09 09:00 (+11d) | 2026-05-29 → 2026-06-11 14:00 (+13d) | 1d? → 20h |  | 1.75d → 22.5d |  |  |
| 195 | Executar EL-T_033 - Testes de "Definição de taxa de serviço" | 2026-05-29 → 2026-06-09 14:00 (+11d) | 2026-05-29 → 2026-06-10 11:00 (+12d) | 1d? → 6h |  | 1.75d → 22.5d | none → 194 | was named Implementar EL-TC_009 – Casos de Teste de "Proposta de contrato"; resources none → QA 03 |
| 196 | Registrar EL-LT_033 - Logs de Teste de "Definição de taxa de serviço" | 2026-05-29 → 2026-06-10 11:00 (+12d) | 2026-05-29 → 2026-06-10 16:00 (+12d) | 1d? → 4h |  | 1.75d → 22.5d | none → 195 | was named Executar EL-T_009 – Testes de "Proposta de contrato"; resources none → QA 03 |
| 197 | Executar EL-TH_033 - Testes de Homologação de "Definição de taxa de serviço" | 2026-05-29 → 2026-06-10 16:00 (+12d) | 2026-05-29 → 2026-06-11 14:00 (+13d) | 0.5d? → 6h |  | 2.25d → 22.5d | none → 196 | was named Registrar EL-LT_009 – Logs de Teste de "Proposta de contrato"; resources none → QA 03 |
| 198 | **"Controle de assinatura de contrato"** | 2026-05-29 → 2026-06-09 09:00 (+11d) | 2026-05-29 → 2026-06-11 14:00 (+13d) | 1d? → 20h |  | 1.75d → 22.5d |  |  |
| 200 | Executar EL-T_034 - Testes de "Controle de assinatura de contrato" | 2026-05-29 → 2026-06-09 14:00 (+11d) | 2026-05-29 → 2026-06-10 11:00 (+12d) | 1d? → 6h |  | 1.75d → 22.5d | none → 199 | was named Implementar EL-TC_010 – Casos de Teste de "Busca de profissionais"; resources none → QA 04 |
| 201 | Registrar EL-LT_034 - Logs de Teste de "Controle de assinatura de contrato" | 2026-05-29 → 2026-06-10 11:00 (+12d) | 2026-05-29 → 2026-06-10 16:00 (+12d) | 1d? → 4h |  | 1.75d → 22.5d | none → 200 | was named Executar EL-T_010 – Testes de "Busca de profissionais"; resources none → QA 04 |
| 202 | Executar EL-TH_034 - Testes de Homologação de "Controle de assinatura de contrato" | 2026-05-29 → 2026-06-10 16:00 (+12d) | 2026-05-29 → 2026-06-11 14:00 (+13d) | 0.5d? → 6h |  | 2.25d → 22.5d | none → 201 | was named Registrar EL-LT_010 – Logs de Teste de "Busca de profissionais"; resources none → QA 04 |
| 203 | **"Proposta de contrato"** | 2026-05-29 → 2026-06-09 09:00 (+11d) | 2026-05-29 → 2026-06-11 14:00 (+13d) | 1d? → 20h |  | 1.75d → 22.5d |  |  |
| 205 | Executar EL-T_035 - Testes de "Proposta de contrato" | 2026-05-29 → 2026-06-09 14:00 (+11d) | 2026-05-29 → 2026-06-10 11:00 (+12d) | 1d? → 6h |  | 1.75d → 22.5d | none → 204 | was named Implementar EL-TC_011 – Casos de Teste de "Gerenciamento de escala de trabalho"; resources none → QA 05 |
| 206 | Registrar EL-LT_035 - Logs de Teste de "Proposta de contrato" | 2026-05-29 → 2026-06-10 11:00 (+12d) | 2026-05-29 → 2026-06-10 16:00 (+12d) | 1d? → 4h |  | 1.75d → 22.5d | none → 205 | was named Executar EL-T_011 – Testes de "Gerenciamento de escala de trabalho"; resources none → QA 05 |
| 207 | Executar EL-TH_035 - Testes de Homologação de "Proposta de contrato" | 2026-05-29 → 2026-06-10 16:00 (+12d) | 2026-05-29 → 2026-06-11 14:00 (+13d) | 0.5d? → 6h |  | 2.25d → 22.5d | none → 206 | was named Registrar EL-LT_011 – Logs de Teste de "Gerenciamento de escala de trabalho"; resources none → QA 05 |
| 208 | **"Busca de profissionais"** | 2026-05-29 → 2026-06-09 09:00 (+11d) | 2026-05-29 → 2026-06-11 14:00 (+13d) | 1d? → 20h |  | 1.75d → 22.5d |  |  |
| 213 | **"Gerenciamento de escala de trabalho"** | 2026-05-29 → 2026-06-09 09:00 (+11d) | 2026-05-29 → 2026-06-11 14:00 (+13d) | 1d? → 20h |  | 1.75d → 22.5d |  |  |
| 214 | Implementar EL-TC_037 - Casos de Teste de "Gerenciamento de escala de trabalho" | 2026-05-29 → 2026-06-09 09:00 (+11d) | 2026-05-29 → 2026-06-09 14:00 (+11d) | 1d? → 4h |  | 1.75d → 22.5d |  | was named Redigir EL-UCE_012 – Especificação de Caso de Uso de "Controle de pagamento"; resources none → QA 07 |
| 215 | Executar EL-T_037 - Testes de "Gerenciamento de escala de trabalho" | 2026-05-29 → 2026-06-09 14:00 (+11d) | 2026-05-29 → 2026-06-10 11:00 (+12d) | 1d? → 6h |  | 1.75d → 22.5d | none → 214 | was named Elaborar EL-CD_012 – Diagrama de Classes de "Controle de pagamento"; resources none → QA 07 |
| 216 | Registrar EL-LT_037 - Logs de Teste de "Gerenciamento de escala de trabalho" | 2026-05-29 → 2026-06-10 11:00 (+12d) | 2026-05-29 → 2026-06-10 16:00 (+12d) | 1d? → 4h |  | 1.75d → 22.5d | none → 215 | was named Elaborar EL-MER_012 – Modelo Entidade Relacionamento de "Controle de pagamento"; resources none → QA 07 |
| 217 | Executar EL-TH_037 - Testes de Homologação de "Gerenciamento de escala de trabalho" | 2026-05-29 → 2026-06-10 16:00 (+12d) | 2026-05-29 → 2026-06-11 14:00 (+13d) | 0.5d? → 6h |  | 2.25d → 22.5d | none → 216 | was named Gerar EL-Script_012 – Esquema/Script de "Controle de pagamento"; resources none → QA 07 |
| 218 | **Implantação** | 2026-05-29 → 2026-06-11 09:00 (+13d) | 2026-05-29 → 2026-06-12 18:00 (+14d) | 0.5d? → 16h |  | 2.25d → none |  | was named Elaborar EL-DBD_012 – Documentação de Banco de Dados de "Controle de pagamento" |
| 220 | Integração total EL-IT_038 - "Nível de acesso ao sistema" | 2026-05-29 → 2026-06-11 09:00 (+13d) | 2026-05-29 → 2026-06-11 14:00 (+13d) | 1d? → 4h |  | 1.75d → 22.5d |  | was named Elaborar EL-UCD_013 – Diagrama de Caso de Uso de "Configuração de Percentuais e Repasse"; resources none → Integrador |
| 221 | **"Cadastro de profissionais"** | 2026-05-29 → 2026-06-11 09:00 (+13d) | 2026-05-29 → 2026-06-11 14:00 (+13d) | 1d? → 4h |  | 1.75d → 22.5d |  | was named Redigir EL-UCE_013 – Especificação de Caso de Uso de "Configuração de Percentuais e Repasse" |
| 222 | Integração total EL-IT_039 - "Cadastro de profissionais" | 2026-05-29 → 2026-06-11 09:00 (+13d) | 2026-05-29 → 2026-06-11 14:00 (+13d) | 1d? → 4h |  | 1.75d → 22.5d |  | was named Elaborar EL-CD_013 – Diagrama de Classes de "Configuração de Percentuais e Repasse"; resources none → Integrador 02 |
| 223 | **"Definição de taxa de serviço"** | 2026-05-29 → 2026-06-11 09:00 (+13d) | 2026-05-29 → 2026-06-11 14:00 (+13d) | 1d? → 4h |  | 1.75d → 22.5d |  | was named Elaborar EL-MER_013 – Modelo Entidade Relacionamento de "Configuração de Percentuais e Repasse" |
| 224 | Integração total EL-IT_040 - "Definição de taxa de serviço" | 2026-05-29 → 2026-06-11 09:00 (+13d) | 2026-05-29 → 2026-06-11 14:00 (+13d) | 0.5d? → 4h |  | 2.25d → 22.5d |  | was named Gerar EL-Script_013 – Esquema/Script de "Configuração de Percentuais e Repasse"; resources none → Integrador 03 |
| 225 | **"Controle de assinatura de contrato"** | 2026-05-29 → 2026-06-11 09:00 (+13d) | 2026-05-29 → 2026-06-11 14:00 (+13d) | 0.5d? → 4h |  | 2.25d → 22.5d |  | was named Elaborar EL-DBD_013 – Documentação de Banco de Dados de "Configuração de Percentuais e Repasse" |
| 227 | **"Proposta de contrato"** | 2026-05-29 → 2026-06-11 09:00 (+13d) | 2026-05-29 → 2026-06-11 14:00 (+13d) | 1d? → 4h |  | 1.75d → 22.5d |  | was named Elaborar EL-UCD_014 – Diagrama de Caso de Uso de "Gestão de painel jurídico" |
| 228 | Integração total EL-IT_042 - "Proposta de contrato" | 2026-05-29 → 2026-06-11 09:00 (+13d) | 2026-05-29 → 2026-06-11 14:00 (+13d) | 1d? → 4h |  | 1.75d → 22.5d |  | was named Redigir EL-UCE_014 – Especificação de Caso de Uso de "Gestão de painel jurídico"; resources none → Integrador |
| 229 | **"Busca de profissionais"** | 2026-05-29 → 2026-06-11 09:00 (+13d) | 2026-05-29 → 2026-06-11 14:00 (+13d) | 1d? → 4h |  | 1.75d → 22.5d |  | was named Elaborar EL-CD_014 – Diagrama de Classes de "Gestão de painel jurídico" |
| 230 | Integração total EL-IT_043 - "Busca de profissionais" | 2026-05-29 → 2026-06-11 09:00 (+13d) | 2026-05-29 → 2026-06-11 14:00 (+13d) | 1d? → 4h |  | 1.75d → 22.5d |  | was named Elaborar EL-MER_014 – Modelo Entidade Relacionamento de "Gestão de painel jurídico"; resources none → Integrador 02 |
| 231 | **"Gerenciamento de escala de trabalho"** | 2026-05-29 → 2026-06-11 09:00 (+13d) | 2026-05-29 → 2026-06-11 14:00 (+13d) | 0.5d? → 4h |  | 2.25d → 1.38d |  | was named Gerar EL-Script_014 – Esquema/Script de "Gestão de painel jurídico" |
| 232 | Integração total EL-IT_044 - "Gerenciamento de escala de trabalho" | 2026-05-29 → 2026-06-11 09:00 (+13d) | 2026-05-29 → 2026-06-11 14:00 (+13d) | 0.5d? → 4h |  | 2.25d → 1.38d |  | was named Elaborar EL-DBD_014 – Documentação de Banco de Dados de "Gestão de painel jurídico"; resources none → Integrador 03 |
| 233 | ★ Marco da Entrega da Iteração 02 | 2026-05-29 → 2026-06-12 18:00 (+14d) | 2026-05-29 → 2026-06-12 18:00 (+14d) | 0d → 0h |  | 2.75d → 0d | none → 232 | constraint none → must finish on 2026-06-12 18:00 |
| 234 | **Iteração 03** | 2026-05-29 → 2026-06-15 09:00 (+17d) | 2026-06-01 → 2026-07-03 18:00 (+32d) | 2d? → 119h |  | 0.75d → 5d | none → 233 | constraint none → start no earlier than 2026-06-15 09:00 |
| 235 | **Modelagem** | 2026-05-29 → 2026-06-15 09:00 (+17d) | 2026-05-29 → 2026-06-19 14:00 (+21d) | 1d? → 36h |  | 1.75d → 16.5d | none → 233 |  |
| 236 | **"Controle de pagamento"** | 2026-05-29 → 2026-06-15 09:00 (+17d) | 2026-05-29 → 2026-06-19 14:00 (+21d) | 1d? → 36h |  | 1.75d → 16.5d | none → 233 |  |
| 237 | Elaborar EL-UCD_045 - Diagrama de Caso de Uso de "Controle de pagamento" | 2026-05-29 → 2026-06-15 09:00 (+17d) | 2026-05-29 → 2026-06-16 09:00 (+18d) | 1d? → 8h |  | 1.75d → 16.5d |  | was named Elaborar EL-MER_015 – Modelo Entidade Relacionamento de "Cadastro do documento do profissional"; resources none → Analista 01 |
| 238 | Redigir EL-UCE_045 - Especificação de Caso de Uso de "Controle de pagamento" | 2026-05-29 → 2026-06-16 09:00 (+18d) | 2026-05-29 → 2026-06-17 09:00 (+19d) | 0.5d? → 8h |  | 2.25d → 16.5d | none → 237 | was named Gerar EL-Script_015 – Esquema/Script de "Cadastro do documento do profissional"; resources none → Analista 01 |
| 239 | Elaborar EL-CD_045 - Diagrama de Classes de "Controle de pagamento" | 2026-05-29 → 2026-06-17 09:00 (+19d) | 2026-05-29 → 2026-06-17 16:00 (+19d) | 0.5d? → 6h |  | 2.25d → 16.5d | none → 238 | was named Elaborar EL-DBD_015 – Documentação de Banco de Dados de "Cadastro do documento do profissional"; resources none → Analista 01 |
| 241 | Gerar EL-Script_045 - Esquema/Script de "Controle de pagamento" | 2026-05-29 → 2026-06-18 14:00 (+20d) | 2026-05-29 → 2026-06-19 09:00 (+21d) | 1d? → 4h |  | 1.75d → 16.5d | none → 240 | was named Elaborar EL-UCD_016 – Diagrama de Caso de Uso de "Gestão de relatórios financeiros"; resources none → Analista 01 |
| 242 | Elaborar EL-DBD_045 - Documentação de Banco de Dados de "Controle de pagamento" | 2026-05-29 → 2026-06-19 09:00 (+21d) | 2026-05-29 → 2026-06-19 14:00 (+21d) | 1d? → 4h |  | 1.75d → 16.5d | none → 241 | was named Redigir EL-UCE_016 – Especificação de Caso de Uso de "Gestão de relatórios financeiros"; resources none → Analista 01 |

| ID | Task | Start | Finish | Duration | Total float | Predecessors | Other |
| --- | --- | --- | --- | --- | --- | --- | --- |
| 243 | **"Configuração de Percentuais e Repasse"** | 2026-05-29 → 2026-06-15 09:00 (+17d) | 2026-05-29 → 2026-06-19 14:00 (+21d) | 1d? → 36h | 1.75d → 16.5d |  |  |
| 244 | Elaborar EL-UCD_046 - Diagrama de Caso de Uso de "Configuração de Percentuais e Repasse" | 2026-05-29 → 2026-06-15 09:00 (+17d) | 2026-05-29 → 2026-06-16 09:00 (+18d) | 1d? → 8h | 1.75d → 16.5d |  | was named Elaborar EL-MER_016 – Modelo Entidade Relacionamento de "Gestão de relatórios financeiros"; resources none → Analista 02 |
| 245 | Redigir EL-UCE_046 - Especificação de Caso de Uso de "Configuração de Percentuais e Repasse" | 2026-05-29 → 2026-06-16 09:00 (+18d) | 2026-05-29 → 2026-06-17 09:00 (+19d) | 0.5d? → 8h | 2.25d → 16.5d | none → 244 | was named Gerar EL-Script_016 – Esquema/Script de "Gestão de relatórios financeiros"; resources none → Analista 02 |
| 246 | Elaborar EL-CD_046 - Diagrama de Classes de "Configuração de Percentuais e Repasse" | 2026-05-29 → 2026-06-17 09:00 (+19d) | 2026-05-29 → 2026-06-17 16:00 (+19d) | 0.5d? → 6h | 2.25d → 16.5d | none → 245 | was named Elaborar EL-DBD_016 – Documentação de Banco de Dados de "Gestão de relatórios financeiros"; resources none → Analista 02 |
| 249 | Elaborar EL-DBD_046 - Documentação de Banco de Dados de "Configuração de Percentuais e Repasse" | 2026-05-29 → 2026-06-19 09:00 (+21d) | 2026-06-01 → 2026-06-19 14:00 (+18d) | 2d? → 4h | 0.75d → 16.5d | none → 248 | was named Implementar EL-CMC_012 – Classes, Métodos e Componentes de "Controle de pagamento"; resources none → Analista 02 |
| 250 | **"Gestão de painel jurídico"** | 2026-05-29 → 2026-06-15 09:00 (+17d) | 2026-05-29 → 2026-06-19 14:00 (+21d) | 1d? → 36h | 1.75d → 16.5d |  |  |
| 251 | Elaborar EL-UCD_047 - Diagrama de Caso de Uso de "Gestão de painel jurídico" | 2026-05-29 → 2026-06-15 09:00 (+17d) | 2026-05-29 → 2026-06-16 09:00 (+18d) | 1d? → 8h | 1.75d → 16.5d |  | was named Identificar EL-API_012 – APIs de "Controle de pagamento"; resources none → Analista 03 |
| 252 | Redigir EL-UCE_047 - Especificação de Caso de Uso de "Gestão de painel jurídico" | 2026-05-29 → 2026-06-16 09:00 (+18d) | 2026-05-29 → 2026-06-17 09:00 (+19d) | 1d? → 8h | 1.75d → 16.5d | none → 251 | was named Criar EL-IBD_012 – Interface do Mapeamento de Banco de Dados de "Controle de pagamento"; resources none → Analista 03 |
| 253 | Elaborar EL-CD_047 - Diagrama de Classes de "Gestão de painel jurídico" | 2026-05-29 → 2026-06-17 09:00 (+19d) | 2026-05-29 → 2026-06-17 16:00 (+19d) | 1d? → 6h | 1.75d → 16.5d | none → 252 | was named Integrar EL-I_012 – "Controle de pagamento"; resources none → Analista 03 |
| 255 | Gerar EL-Script_047 - Esquema/Script de "Gestão de painel jurídico" | 2026-05-29 → 2026-06-18 14:00 (+20d) | 2026-06-01 → 2026-06-19 09:00 (+18d) | 2d? → 4h | 0.75d → 16.5d | none → 254 | was named Implementar EL-CMC_013 – Classes, Métodos e Componentes de "Configuração de Percentuais e Repasse"; resources none → Analista 03 |
| 256 | Elaborar EL-DBD_047 - Documentação de Banco de Dados de "Gestão de painel jurídico" | 2026-05-29 → 2026-06-19 09:00 (+21d) | 2026-06-01 → 2026-06-19 14:00 (+18d) | 2d? → 4h | 0.75d → 16.5d | none → 255 | was named Implementar EL-FUX_013 – Front-UX de "Configuração de Percentuais e Repasse"; resources none → Analista 03 |
| 257 | **"Cadastro do documento do profissional"** | 2026-05-29 → 2026-06-15 09:00 (+17d) | 2026-05-29 → 2026-06-19 14:00 (+21d) | 1d? → 36h | 1.75d → 16.5d |  |  |
| 258 | Elaborar EL-UCD_048 - Diagrama de Caso de Uso de "Cadastro do documento do profissional" | 2026-05-29 → 2026-06-15 09:00 (+17d) | 2026-05-29 → 2026-06-16 09:00 (+18d) | 1d? → 8h | 1.75d → 16.5d |  | was named Criar EL-IBD_013 – Interface do Mapeamento de Banco de Dados de "Configuração de Percentuais e Repasse"; resources none → Analista 04 |
| 259 | Redigir EL-UCE_048 - Especificação de Caso de Uso de "Cadastro do documento do profissional" | 2026-05-29 → 2026-06-16 09:00 (+18d) | 2026-05-29 → 2026-06-17 09:00 (+19d) | 1d? → 8h | 1.75d → 16.5d | none → 258 | was named Integrar EL-I_013 – "Configuração de Percentuais e Repasse"; resources none → Analista 04 |
| 261 | Elaborar EL-MER_048 - Modelo Entidade Relacionamento de "Cadastro do documento do profissional" | 2026-05-29 → 2026-06-17 16:00 (+19d) | 2026-06-01 → 2026-06-18 14:00 (+17d) | 2d? → 6h | 0.75d → 16.5d | none → 260 | was named Implementar EL-CMC_014 – Classes, Métodos e Componentes de "Gestão de painel jurídico"; resources none → Analista 04 |
| 262 | Gerar EL-Script_048 - Esquema/Script de "Cadastro do documento do profissional" | 2026-05-29 → 2026-06-18 14:00 (+20d) | 2026-06-01 → 2026-06-19 09:00 (+18d) | 2d? → 4h | 0.75d → 16.5d | none → 261 | was named Implementar EL-FUX_014 – Front-UX de "Gestão de painel jurídico"; resources none → Analista 04 |
| 263 | Elaborar EL-DBD_048 - Documentação de Banco de Dados de "Cadastro do documento do profissional" | 2026-05-29 → 2026-06-19 09:00 (+21d) | 2026-05-29 → 2026-06-19 14:00 (+21d) | 1d? → 4h | 1.75d → 16.5d | none → 262 | was named Identificar EL-API_014 – APIs de "Gestão de painel jurídico"; resources none → Analista 04 |
| 264 | **"Gestão de relatórios financeiros"** | 2026-05-29 → 2026-06-15 09:00 (+17d) | 2026-05-29 → 2026-06-19 14:00 (+21d) | 1d? → 36h | 1.75d → 16.5d |  |  |
| 265 | Elaborar EL-UCD_049 - Diagrama de Caso de Uso de "Gestão de relatórios financeiros" | 2026-05-29 → 2026-06-15 09:00 (+17d) | 2026-05-29 → 2026-06-16 09:00 (+18d) | 1d? → 8h | 1.75d → 16.5d |  | was named Integrar EL-I_014 – "Gestão de painel jurídico"; resources none → Analista 05 |
| 267 | Elaborar EL-CD_049 - Diagrama de Classes de "Gestão de relatórios financeiros" | 2026-05-29 → 2026-06-17 09:00 (+19d) | 2026-06-01 → 2026-06-17 16:00 (+16d) | 2d? → 6h | 0.75d → 16.5d | none → 266 | was named Implementar EL-CMC_015 – Classes, Métodos e Componentes de "Cadastro do documento do profissional"; resources none → Analista 05 |
| 268 | Elaborar EL-MER_049 - Modelo Entidade Relacionamento de "Gestão de relatórios financeiros" | 2026-05-29 → 2026-06-17 16:00 (+19d) | 2026-06-01 → 2026-06-18 14:00 (+17d) | 2d? → 6h | 0.75d → 16.5d | none → 267 | was named Implementar EL-FUX_015 – Front-UX de "Cadastro do documento do profissional"; resources none → Analista 05 |
| 269 | Gerar EL-Script_049 - Esquema/Script de "Gestão de relatórios financeiros" | 2026-05-29 → 2026-06-18 14:00 (+20d) | 2026-05-29 → 2026-06-19 09:00 (+21d) | 1d? → 4h | 1.75d → 16.5d | none → 268 | was named Identificar EL-API_015 – APIs de "Cadastro do documento do profissional"; resources none → Analista 05 |
| 270 | Elaborar EL-DBD_049 - Documentação de Banco de Dados de "Gestão de relatórios financeiros" | 2026-05-29 → 2026-06-19 09:00 (+21d) | 2026-05-29 → 2026-06-19 14:00 (+21d) | 1d? → 4h | 1.75d → 16.5d | none → 269 | was named Criar EL-IBD_015 – Interface do Mapeamento de Banco de Dados de "Cadastro do documento do profissional"; resources none → Analista 05 |
| 271 | **Construção** | 2026-05-29 → 2026-06-15 09:00 (+17d) | 2026-06-01 → 2026-06-22 09:00 (+21d) | 2d? → 40h | 0.75d → 16d |  |  |
| 272 | **"Controle de pagamento"** | 2026-05-29 → 2026-06-15 09:00 (+17d) | 2026-06-01 → 2026-06-22 09:00 (+21d) | 2d? → 40h | 0.75d → 16d |  |  |
| 273 | Implementar EL-CMC_050 - Classes, Métodos e Componentes de "Controle de pagamento" | 2026-05-29 → 2026-06-15 09:00 (+17d) | 2026-06-01 → 2026-06-16 14:00 (+15d) | 2d? → 12h | 0.75d → 16d |  | was named Implementar EL-CMC_016 – Classes, Métodos e Componentes de "Gestão de relatórios financeiros"; resources none → Dev 01 |
| 274 | Implementar EL-FUX_050 - Front-UX de "Controle de pagamento" | 2026-05-29 → 2026-06-16 14:00 (+18d) | 2026-06-01 → 2026-06-17 14:00 (+16d) | 2d? → 8h | 0.75d → 16d | none → 273 | was named Implementar EL-FUX_016 – Front-UX de "Gestão de relatórios financeiros"; resources none → Dev 01 |
| 275 | Identificar EL-API_050 - APIs de "Controle de pagamento" | 2026-05-29 → 2026-06-17 14:00 (+19d) | 2026-05-29 → 2026-06-18 14:00 (+20d) | 1d? → 8h | 1.75d → 16d | none → 274 | was named Identificar EL-API_016 – APIs de "Gestão de relatórios financeiros"; resources none → Dev 01 |
| 276 | Criar EL-IBD_050 - Interface do Mapeamento de Banco de Dados de "Controle de pagamento" | 2026-05-29 → 2026-06-18 14:00 (+20d) | 2026-05-29 → 2026-06-19 14:00 (+21d) | 1d? → 8h | 1.75d → 16d | none → 275 | was named Criar EL-IBD_016 – Interface do Mapeamento de Banco de Dados de "Gestão de relatórios financeiros"; resources none → Dev 01 |
| 277 | Integração parcial EL-IP_050 - "Controle de pagamento" | 2026-05-29 → 2026-06-19 14:00 (+21d) | 2026-05-29 → 2026-06-22 09:00 (+24d) | 1d? → 4h | 1.75d → 16d | none → 276 | was named Integrar EL-I_016 – "Gestão de relatórios financeiros"; resources none → Dev 01 |
| 278 | **"Configuração de Percentuais e Repasse"** | 2026-05-29 → 2026-06-15 09:00 (+17d) | 2026-06-01 → 2026-06-22 09:00 (+21d) | 2d? → 40h | 0.75d → 16d |  |  |
| 280 | Implementar EL-FUX_051 - Front-UX de "Configuração de Percentuais e Repasse" | 2026-05-29 → 2026-06-16 14:00 (+18d) | 2026-05-29 → 2026-06-17 14:00 (+19d) | 1d? → 8h | 1.75d → 16d | none → 279 | was named Implementar EL-TC_012 – Casos de Teste de "Controle de pagamento"; resources none → Dev 02 |
| 281 | Identificar EL-API_051 - APIs de "Configuração de Percentuais e Repasse" | 2026-05-29 → 2026-06-17 14:00 (+19d) | 2026-05-29 → 2026-06-18 14:00 (+20d) | 1d? → 8h | 1.75d → 16d | none → 280 | was named Executar EL-T_012 – Testes de "Controle de pagamento"; resources none → Dev 02 |
| 282 | Criar EL-IBD_051 - Interface do Mapeamento de Banco de Dados de "Configuração de Percentuais e Repasse" | 2026-05-29 → 2026-06-18 14:00 (+20d) | 2026-05-29 → 2026-06-19 14:00 (+21d) | 0.5d? → 8h | 2.25d → 16d | none → 281 | was named Registrar EL-LT_012 – Logs de Teste de "Controle de pagamento"; resources none → Dev 02 |
| 283 | Integração parcial EL-IP_051 - "Configuração de Percentuais e Repasse" | 2026-05-29 → 2026-06-19 14:00 (+21d) | 2026-05-29 → 2026-06-22 09:00 (+24d) | 1d? → 4h | 1.75d → 16d | none → 282 | was named Executar EL-TH_012 – Testes de Homologação de "Controle de pagamento"; resources none → Dev 02 |
| 284 | **"Gestão de painel jurídico"** | 2026-05-29 → 2026-06-15 09:00 (+17d) | 2026-06-01 → 2026-06-22 09:00 (+21d) | 2d? → 40h | 0.75d → 16d |  |  |
| 285 | Implementar EL-CMC_052 - Classes, Métodos e Componentes de "Gestão de painel jurídico" | 2026-05-29 → 2026-06-15 09:00 (+17d) | 2026-05-29 → 2026-06-16 14:00 (+18d) | 1d? → 12h | 1.75d → 16d |  | was named Implementar EL-TC_013 – Casos de Teste de "Configuração de Percentuais e Repasse"; resources none → Dev 03 |
| 286 | Implementar EL-FUX_052 - Front-UX de "Gestão de painel jurídico" | 2026-05-29 → 2026-06-16 14:00 (+18d) | 2026-05-29 → 2026-06-17 14:00 (+19d) | 1d? → 8h | 1.75d → 16d | none → 285 | was named Executar EL-T_013 – Testes de "Configuração de Percentuais e Repasse"; resources none → Dev 03 |
| 287 | Identificar EL-API_052 - APIs de "Gestão de painel jurídico" | 2026-05-29 → 2026-06-17 14:00 (+19d) | 2026-05-29 → 2026-06-18 14:00 (+20d) | 0.5d? → 8h | 2.25d → 16d | none → 286 | was named Registrar EL-LT_013 – Logs de Teste de "Configuração de Percentuais e Repasse"; resources none → Dev 03 |
| 288 | Criar EL-IBD_052 - Interface do Mapeamento de Banco de Dados de "Gestão de painel jurídico" | 2026-05-29 → 2026-06-18 14:00 (+20d) | 2026-05-29 → 2026-06-19 14:00 (+21d) | 1d? → 8h | 1.75d → 16d | none → 287 | was named Executar EL-TH_013 – Testes de Homologação de "Configuração de Percentuais e Repasse"; resources none → Dev 03 |
| 290 | **"Cadastro do documento do profissional"** | 2026-05-29 → 2026-06-15 09:00 (+17d) | 2026-06-01 → 2026-06-22 09:00 (+21d) | 2d? → 40h | 0.75d → 16d |  |  |
| 291 | Implementar EL-CMC_053 - Classes, Métodos e Componentes de "Cadastro do documento do profissional" | 2026-05-29 → 2026-06-15 09:00 (+17d) | 2026-05-29 → 2026-06-16 14:00 (+18d) | 1d? → 12h | 1.75d → 16d |  | was named Executar EL-T_014 – Testes de "Gestão de painel jurídico"; resources none → Dev 04 |
| 292 | Implementar EL-FUX_053 - Front-UX de "Cadastro do documento do profissional" | 2026-05-29 → 2026-06-16 14:00 (+18d) | 2026-05-29 → 2026-06-17 14:00 (+19d) | 0.5d? → 8h | 2.25d → 16d | none → 291 | was named Registrar EL-LT_014 – Logs de Teste de "Gestão de painel jurídico"; resources none → Dev 04 |
| 293 | Identificar EL-API_053 - APIs de "Cadastro do documento do profissional" | 2026-05-29 → 2026-06-17 14:00 (+19d) | 2026-05-29 → 2026-06-18 14:00 (+20d) | 1d? → 8h | 1.75d → 16d | none → 292 | was named Executar EL-TH_014 – Testes de Homologação de "Gestão de painel jurídico"; resources none → Dev 04 |
| 295 | Integração parcial EL-IP_053 - "Cadastro do documento do profissional" | 2026-05-29 → 2026-06-19 14:00 (+21d) | 2026-05-29 → 2026-06-22 09:00 (+24d) | 1d? → 4h | 1.75d → 16d | none → 294 | was named Implementar EL-TC_015 – Casos de Teste de "Cadastro do documento do profissional"; resources none → Dev 04 |
| 296 | **"Gestão de relatórios financeiros"** | 2026-05-29 → 2026-06-15 09:00 (+17d) | 2026-06-01 → 2026-06-22 09:00 (+21d) | 2d? → 40h | 0.75d → 16d |  |  |
| 297 | Implementar EL-CMC_054 - Classes, Métodos e Componentes de "Gestão de relatórios financeiros" | 2026-05-29 → 2026-06-15 09:00 (+17d) | 2026-05-29 → 2026-06-16 14:00 (+18d) | 0.5d? → 12h | 2.25d → 16d |  | was named Registrar EL-LT_015 – Logs de Teste de "Cadastro do documento do profissional"; resources none → Dev 05 |
| 298 | Implementar EL-FUX_054 - Front-UX de "Gestão de relatórios financeiros" | 2026-05-29 → 2026-06-16 14:00 (+18d) | 2026-05-29 → 2026-06-17 14:00 (+19d) | 1d? → 8h | 1.75d → 16d | none → 297 | was named Executar EL-TH_015 – Testes de Homologação de "Cadastro do documento do profissional"; resources none → Dev 05 |
| 300 | Criar EL-IBD_054 - Interface do Mapeamento de Banco de Dados de "Gestão de relatórios financeiros" | 2026-05-29 → 2026-06-18 14:00 (+20d) | 2026-05-29 → 2026-06-19 14:00 (+21d) | 1d? → 8h | 1.75d → 16d | none → 299 | was named Implementar EL-TC_016 – Casos de Teste de "Gestão de relatórios financeiros"; resources none → Dev 05 |
| 301 | Integração parcial EL-IP_054 - "Gestão de relatórios financeiros" | 2026-05-29 → 2026-06-19 14:00 (+21d) | 2026-05-29 → 2026-06-22 09:00 (+24d) | 1d? → 4h | 1.75d → 16d | none → 300 | was named Executar EL-T_016 – Testes de "Gestão de relatórios financeiros"; resources none → Dev 05 |
| 302 | **Testes** | 2026-05-29 → 2026-06-22 09:00 (+24d) | 2026-05-29 → 2026-06-24 14:00 (+26d) | 1d? → 20h | 1.75d → none |  |  |
| 303 | **"Controle de pagamento"** | 2026-05-29 → 2026-06-22 09:00 (+24d) | 2026-05-29 → 2026-06-24 14:00 (+26d) | 1d? → 20h | 1.75d → 13.5d |  |  |
| 308 | **"Configuração de Percentuais e Repasse"** | 2026-05-29 → 2026-06-22 09:00 (+24d) | 2026-05-29 → 2026-06-24 14:00 (+26d) | 1d? → 20h | 1.75d → 13.5d |  |  |
| 313 | **"Gestão de painel jurídico"** | 2026-05-29 → 2026-06-22 09:00 (+24d) | 2026-05-29 → 2026-06-24 14:00 (+26d) | 1d? → 20h | 1.75d → 13.5d |  |  |
| 318 | **"Cadastro do documento do profissional"** | 2026-05-29 → 2026-06-22 09:00 (+24d) | 2026-05-29 → 2026-06-24 14:00 (+26d) | 1d? → 20h | 1.75d → 13.5d |  |  |
| 323 | **"Gestão de relatórios financeiros"** | 2026-05-29 → 2026-06-22 09:00 (+24d) | 2026-05-29 → 2026-06-24 14:00 (+26d) | 1d? → 20h | 1.75d → 13.5d |  |  |
| 339 | ★ Marco da Entrega da Iteração 03 | 2026-05-29 → 2026-07-03 18:00 (+35d) | 2026-05-29 → 2026-07-03 18:00 (+35d) | 0d? → 0h | 2.75d → 0d | none → 338 | constraint none → must finish on 2026-07-03 18:00; resources A/Laisa → none |

## Version 6 (data date 2026-06-08, saved 2026-06-09, file Cronograma_Elora_V4.mpp)

Note of the change: Merge a26e98e6295125fc00b796a95f8d23998858f8b5 into 7d3e57d2ccf8c8a450d8a9a7f2fd930d07deae7a

Last finish stays 2026-07-14. Complete tasks 141 → 126.

Changed:

| ID | Task | Start | Finish | Duration | Complete | Total float | Predecessors | Other |
| --- | --- | --- | --- | --- | --- | --- | --- | --- |
| 1 | **Projeto Elora** |  |  |  | 57% → 51% |  |  |  |
| 2 | **Iteração 01** |  |  |  | 99% → 76% | 0d → 36.12d |  |  |
| 3 | **Modelagem** |  | 2026-05-05 14:00 A → 2026-05-05 14:00 |  | 100% → 78% | none → 49.5d |  |  |
| 6 | Redigir EL-UCE_001 - Especificação de Caso de Uso de "Modelo de análise" |  |  |  |  |  | 5 → 5SS | resources Analista 01 → Analista 02 |
| 7 | Elaborar EL-CD_001 - Diagrama de Classes de "Modelo de análise" |  |  |  |  |  |  | resources Analista 01 → Analista 03 |
| 8 | Elaborar EL-MER_001 - Modelo Entidade Relacionamento de "Modelo de análise" |  |  |  |  |  | 7 → 7SS | resources Analista 01 → Analista 04 |
| 11 | **"Controle de acesso"** |  | 2026-05-05 14:00 A → 2026-05-05 14:00 |  | 100% → 44% | none → 49.5d |  |  |
| 12 | Elaborar EL-UCD_002 - Diagrama de Caso de Uso de "Controle de acesso" | 2026-04-29 09:00 A → 2026-04-29 09:00 | 2026-04-30 09:00 A → 2026-04-30 09:00 |  | 100% → 0% | none → 53d |  | resources Analista 02 → Analista 05 |
| 13 | Redigir EL-UCE_002 - Especificação de Caso de Uso de "Controle de acesso" | 2026-04-30 09:00 A → 2026-04-29 09:00 (-1d) | 2026-05-01 09:00 A → 2026-04-30 09:00 (-1d) |  | 100% → 0% | none → 53d | 12 → 12SS | resources Analista 02 → Analista 06 |
| 14 | Elaborar EL-CD_002 - Diagrama de Classes de "Controle de acesso" |  |  |  |  |  |  | resources Analista 02 → Analista 07 |
| 15 | Elaborar EL-MER_002 - Modelo Entidade Relacionamento de "Controle de acesso" |  |  |  |  |  | 14 → 14SS | resources Analista 02 → Analista 06 |
| 16 | Gerar EL-Script_002 - Esquema/Script de "Controle de acesso" |  |  |  |  |  |  | resources Analista 02 → Analista 07 |
| 17 | Elaborar EL-DBD_002 - Documentação de Banco de Dados de "Controle de acesso" | 2026-05-05 09:00 A → 2026-05-05 09:00 | 2026-05-05 14:00 A → 2026-05-05 14:00 |  | 100% → 0% | none → 49.5d |  | resources Analista 02 → Analista 08 |
| 18 | **"Cadastro de usuário"** |  | 2026-05-05 14:00 A → 2026-05-05 14:00 |  | 100% → 67% | none → 49.5d |  |  |
| 19 | Elaborar EL-UCD_003 - Diagrama de Caso de Uso de "Cadastro de usuário" | 2026-04-29 09:00 A → 2026-04-29 09:00 | 2026-04-30 09:00 A → 2026-04-30 09:00 |  | 100% → 0% | none → 53d |  | resources Analista 03 → Analista 09 |
| 20 | Redigir EL-UCE_003 - Especificação de Caso de Uso de "Cadastro de usuário" |  |  |  |  |  |  | resources Analista 03 → Analista 10 |
| 21 | Elaborar EL-CD_003 - Diagrama de Classes de "Cadastro de usuário" |  |  |  |  |  |  | resources Analista 03 → Analista 09 |
| 22 | Elaborar EL-MER_003 - Modelo Entidade Relacionamento de "Cadastro de usuário" |  |  |  |  |  |  | resources Analista 03 → Analista 11 |
| 23 | Gerar EL-Script_003 - Esquema/Script de "Cadastro de usuário" | 2026-05-04 14:00 A → 2026-05-04 14:00 | 2026-05-05 09:00 A → 2026-05-05 09:00 |  | 100% → 0% | none → 50d |  | resources Analista 03 → Analista 12 |
| 24 | Elaborar EL-DBD_003 - Documentação de Banco de Dados de "Cadastro de usuário" |  |  |  |  |  |  | resources Analista 03 → Analista 11 |
| 32 | **Construção** |  | 2026-05-14 09:00 A → 2026-05-14 09:00 | 5d → 40h | 100% → 73% |  |  |  |
| 35 | Implementar EL-FUX_005 - Front-UX de "Modelo de análise" |  |  |  |  |  | 34 → 34SS | resources Dev 01 → Dev 02 |
| 36 | Identificar EL-API_005 - APIs de "Modelo de análise" |  |  |  |  |  | 35 → 35SS |  |
| 37 | Criar EL-IBD_005 - Interface do Mapeamento de Banco de Dados de "Modelo de análise" |  |  |  |  |  |  | resources Dev 01 → Dev 03 |
| 38 | Integração parcial EL-IP_005 - "Modelo de análise" |  |  |  |  |  |  | resources Dev 01 → Dev 04 |
| 39 | **"Controle de acesso"** |  | 2026-05-14 09:00 A → 2026-05-14 09:00 |  | 100% → 80% | none → 43d |  |  |
| 40 | Implementar EL-CMC_006 - Classes, Métodos e Componentes de "Controle de acesso" |  |  |  |  |  |  | resources Dev 02 → Dev 05 |
| 41 | Implementar EL-FUX_006 - Front-UX de "Controle de acesso" | 2026-05-08 14:00 A → 2026-05-08 14:00 | 2026-05-11 14:00 A → 2026-05-11 14:00 |  | 100% → 0% | none → 45.5d |  | resources Dev 02 → Dev 06 |
| 42 | Identificar EL-API_006 - APIs de "Controle de acesso" |  |  |  |  |  |  | resources Dev 02 → Dev 07 |
| 43 | Criar EL-IBD_006 - Interface do Mapeamento de Banco de Dados de "Controle de acesso" |  |  |  |  |  |  | resources Dev 02 → Dev 05 |
| 44 | Integração parcial EL-IP_006 - "Controle de acesso" |  |  |  |  |  |  | resources Dev 02 → Dev 08 |
| 45 | **"Cadastro de usuário"** |  | 2026-05-14 09:00 A → 2026-05-13 14:00 (-1d) | 40h → 4.5d | 100% → 70% | none → 43.5d |  |  |
| 46 | Implementar EL-CMC_007 - Classes, Métodos e Componentes de "Cadastro de usuário" |  |  |  |  |  |  | resources Dev 03 → Dev 09 |
| 47 | Implementar EL-FUX_007 - Front-UX de "Cadastro de usuário" |  |  |  |  |  | 46 → 46SS | resources Dev 03 → Dev 10 |
| 48 | Identificar EL-API_007 - APIs de "Cadastro de usuário" |  |  |  |  |  |  | resources Dev 03 → Dev 09 |
| 49 | Criar EL-IBD_007 - Interface do Mapeamento de Banco de Dados de "Cadastro de usuário" | 2026-05-12 14:00 A → 2026-05-12 09:00 | 2026-05-13 14:00 A → 2026-05-13 09:00 |  | 100% → 0% | none → 43.5d | 48 → 48SS | constraint none → start no earlier than 2026-05-12 09:00; resources Dev 03 → Dev 11 |
| 50 | Integração parcial EL-IP_007 - "Cadastro de usuário" | 2026-05-13 14:00 A → 2026-05-13 09:00 | 2026-05-14 09:00 A → 2026-05-13 14:00 (-1d) |  | 100% → 0% | none → 43.5d |  | constraint none → start no earlier than 2026-05-13 09:00; resources Dev 03 → Dev 12 |
| 51 | **"Gestão de pagamento"** |  | 2026-05-14 09:00 A → 2026-05-14 09:00 |  | 100% → 40% |  |  |  |
| 52 | Implementar EL-CMC_008 - Classes, Métodos e Componentes de "Gestão de pagamento" | 2026-05-07 09:00 A → 2026-05-07 09:00 | 2026-05-08 14:00 A → 2026-05-08 14:00 |  | 100% → 0% | none → 46.5d |  | resources Dev 04 → Dev 13 |
| 53 | Implementar EL-FUX_008 - Front-UX de "Gestão de pagamento" | 2026-05-08 14:00 A → 2026-05-08 09:00 A | 2026-05-11 14:00 A → 2026-05-11 09:00 A |  |  |  | 52 → 52SS | resources Dev 04 → Dev 14 |
| 54 | Identificar EL-API_008 - APIs de "Gestão de pagamento" |  |  |  |  |  |  | resources Dev 04 → Dev 13 |
| 55 | Criar EL-IBD_008 - Interface do Mapeamento de Banco de Dados de "Gestão de pagamento" | 2026-05-12 14:00 A → 2026-05-12 14:00 | 2026-05-13 14:00 A → 2026-05-13 14:00 |  | 100% → 0% | none → 43d |  | resources Dev 04 → Dev 15 |
| 56 | Integração parcial EL-IP_008 - "Gestão de pagamento" | 2026-05-13 14:00 A → 2026-05-13 14:00 | 2026-05-14 09:00 A → 2026-05-14 09:00 |  | 100% → 0% | none → 43d |  | resources Dev 04 → Dev 16 |
| 57 | **Testes** |  | 2026-05-20 14:00 A → 2026-05-20 14:00 |  | 100% → 73% | none → 38.5d |  |  |
| 60 | Executar EL-T_009 - Testes de "Modelo de análise" |  |  |  |  |  | 59 → 59SS | resources QA 01 → QA 02 |
| 62 | Executar EL-TH_009 - Testes de Homologação de "Modelo de análise" |  |  |  |  |  |  | resources QA 01 → QA 03 |
| 63 | **"Controle de acesso"** |  | 2026-05-20 14:00 A → 2026-05-20 14:00 |  | 100% → 70% | none → 38.5d |  |  |
| 64 | Implementar EL-TC_010 - Casos de Teste de "Controle de acesso" |  |  |  |  |  |  | resources QA 02 → QA 04 |
| 65 | Executar EL-T_010 - Testes de "Controle de acesso" | 2026-05-18 14:00 A → 2026-05-18 14:00 | 2026-05-19 11:00 A → 2026-05-19 11:00 |  | 100% → 0% | none → 39.75d |  | resources QA 02 → QA 05 |
| 66 | Registrar EL-LT_010 - Logs de Teste de "Controle de acesso" |  |  |  |  |  |  | resources QA 02 → QA 06 |
| 67 | Executar EL-TH_010 - Testes de Homologação de "Controle de acesso" |  |  |  |  |  |  | resources QA 02 → QA 05 |
| 69 | Implementar EL-TC_011 - Casos de Teste de "Cadastro de usuário" |  |  |  |  |  |  | resources QA 03 → QA 07 |
| 70 | Executar EL-T_011 - Testes de "Cadastro de usuário" |  |  |  |  |  |  | resources QA 03 → QA 07 |
| 71 | Registrar EL-LT_011 - Logs de Teste de "Cadastro de usuário" |  |  |  |  |  |  | resources QA 03 → QA 08 |
| 72 | Executar EL-TH_011 - Testes de Homologação de "Cadastro de usuário" |  |  |  |  |  |  | resources QA 03 → QA 09 |
| 73 | **"Gestão de pagamento"** |  | 2026-05-20 14:00 A → 2026-05-20 14:00 |  | 100% → 20% | none → 38.5d |  |  |
| 74 | Implementar EL-TC_012 - Casos de Teste de "Gestão de pagamento" |  |  |  |  |  |  | resources QA 04 → QA 10 |
| 75 | Executar EL-T_012 - Testes de "Gestão de pagamento" | 2026-05-18 14:00 A → 2026-05-18 14:00 | 2026-05-19 11:00 A → 2026-05-19 11:00 |  | 100% → 0% | none → 38.5d |  | resources QA 04 → QA 11 |
| 76 | Registrar EL-LT_012 - Logs de Teste de "Gestão de pagamento" | 2026-05-19 11:00 A → 2026-05-19 11:00 | 2026-05-19 16:00 A → 2026-05-19 16:00 |  | 100% → 0% | none → 38.5d |  | resources QA 04 → QA 12 |
| 77 | Executar EL-TH_012 - Testes de Homologação de "Gestão de pagamento" | 2026-05-19 16:00 A → 2026-05-19 16:00 | 2026-05-20 14:00 A → 2026-05-20 14:00 |  | 100% → 0% | none → 38.5d |  | resources QA 04 → QA 13 |

## Version 7 (data date 2026-06-08, saved 2026-06-10, file Cronograma_Elora_V5.mpp)

Note of the change: Merge a26e98e6295125fc00b796a95f8d23998858f8b5 into 7d3e57d2ccf8c8a450d8a9a7f2fd930d07deae7a

Last finish stays 2026-07-14. Complete tasks 126 → 121.

Changed:

| ID | Task | Start | Finish | Duration | Complete | Total float | Predecessors | Other |
| --- | --- | --- | --- | --- | --- | --- | --- | --- |
| 1 | **Projeto Elora** |  |  |  | 51% → 49% |  |  |  |
| 2 | **Iteração 01** |  |  |  | 76% → 69% |  |  |  |
| 3 | **Modelagem** |  |  |  | 78% → 61% |  |  |  |
| 13 | Redigir EL-UCE_002 - Especificação de Caso de Uso de "Controle de acesso" | 2026-04-29 09:00 → 2026-04-30 09:00 (+1d) | 2026-04-30 09:00 → 2026-05-01 09:00 (+1d) |  |  | 53d → 4d |  | constraint none → start no earlier than 2026-04-30 09:00 |
| 25 | **"Gestão de pagamento"** |  | 2026-05-05 14:00 A → 2026-05-05 14:00 |  | 100% → 33% | none → 2.5d |  |  |
| 26 | Elaborar EL-UCD_004 - Diagrama de Caso de Uso de "Gestão de pagamento" |  |  |  |  |  |  | resources Analista 04 → Analista 13 |
| 27 | Redigir EL-UCE_004 - Especificação de Caso de Uso de "Gestão de pagamento" | 2026-04-30 09:00 A → 2026-04-30 09:00 | 2026-05-01 09:00 A → 2026-05-01 09:00 |  | 100% → 0% | none → 3d |  | resources Analista 04 → Analista 13 |
| 28 | Elaborar EL-CD_004 - Diagrama de Classes de "Gestão de pagamento" | 2026-05-01 09:00 A → 2026-05-01 09:00 | 2026-05-01 16:00 A → 2026-05-01 16:00 |  | 100% → 0% | none → 3d |  | resources Analista 04 → Analista 14 |
| 29 | Elaborar EL-MER_004 - Modelo Entidade Relacionamento de "Gestão de pagamento" | 2026-05-01 16:00 A → 2026-05-01 16:00 | 2026-05-04 14:00 A → 2026-05-04 14:00 |  | 100% → 0% | none → 3d |  | resources Analista 04 → Analista 15 |
| 30 | Gerar EL-Script_004 - Esquema/Script de "Gestão de pagamento" | 2026-05-04 14:00 A → 2026-05-04 14:00 | 2026-05-05 09:00 A → 2026-05-05 09:00 |  | 100% → 0% | none → 3d |  | resources Analista 04 → Analista 14 |
| 31 | Elaborar EL-DBD_004 - Documentação de Banco de Dados de "Gestão de pagamento" |  |  |  |  |  |  | resources Analista 04 → Analista 15 |
| 33 | **"Modelo de análise"** |  |  |  |  |  | none → 4 |  |
| 39 | **"Controle de acesso"** |  |  |  |  |  | none → 11 |  |
| 51 | **"Gestão de pagamento"** |  |  |  |  |  | none → 25 |  |
| 79 | **"Modelo de análise"** |  | 2026-05-21 14:00 A → 2026-05-21 10:00 A | 4h → 1h |  |  | none → 58 |  |
| 80 | Integração total EL-IT_013 - "Modelo de análise" |  | 2026-05-21 14:00 A → 2026-05-21 10:00 A | 4h → 1h |  |  |  |  |
| 81 | **"Controle de acesso"** |  | 2026-05-21 14:00 A → 2026-05-21 10:00 A | 4h → 1h |  |  | none → 63 |  |
| 82 | Integração total EL-IT_014 - "Controle de acesso" |  | 2026-05-21 14:00 A → 2026-05-21 10:00 A | 4h → 1h |  |  |  |  |
| 83 | **"Cadastro de usuário"** |  | 2026-05-21 14:00 A → 2026-05-21 10:00 A | 4h → 1h |  |  | none → 68 |  |
| 84 | Integração total EL-IT_015 - "Cadastro de usuário" |  | 2026-05-21 14:00 A → 2026-05-21 10:00 A | 4h → 1h |  |  |  |  |
| 85 | **"Gestão de pagamento"** |  |  |  |  |  | none → 73 |  |
| 88 | **Iteração 02** |  |  |  | 76% → 77% |  |  |  |
| 89 | **Modelagem** |  | 2026-05-29 14:00 A → 2026-05-29 14:00 |  | 100% → 97% | none → 31.5d | 87 → none |  |
| 90 | **"Nível de acesso ao sistema"** |  |  |  |  |  | 87 → none |  |
| 92 | Redigir EL-UCE_017 - Especificação de Caso de Uso de "Nível de acesso ao sistema" |  |  |  |  |  |  | resources Analista 01 → Analista 02 |
| 93 | Elaborar EL-CD_017 - Diagrama de Classes de "Nível de acesso ao sistema" |  |  |  |  |  |  | resources Analista 01 → Analista 03 |
| 94 | Elaborar EL-MER_017 - Modelo Entidade Relacionamento de "Nível de acesso ao sistema" |  |  |  |  |  |  | resources Analista 01 → Analista 04 |
| 98 | Elaborar EL-UCD_018 - Diagrama de Caso de Uso de "Cadastro de profissionais" |  |  |  |  |  |  | resources Analista 02 → Analista 05 |
| 99 | Redigir EL-UCE_018 - Especificação de Caso de Uso de "Cadastro de profissionais" |  |  |  |  |  |  | resources Analista 02 → Analista 06 |
| 100 | Elaborar EL-CD_018 - Diagrama de Classes de "Cadastro de profissionais" |  |  |  |  |  |  | resources Analista 02 → Analista 07 |
| 101 | Elaborar EL-MER_018 - Modelo Entidade Relacionamento de "Cadastro de profissionais" |  |  |  |  |  |  | resources Analista 02 → Analista 06 |
| 102 | Gerar EL-Script_018 - Esquema/Script de "Cadastro de profissionais" |  |  |  |  |  |  | resources Analista 02 → Analista 07 |
| 103 | Elaborar EL-DBD_018 - Documentação de Banco de Dados de "Cadastro de profissionais" |  |  |  |  |  |  | resources Analista 02 → Analista 08 |
| 105 | Elaborar EL-UCD_019 - Diagrama de Caso de Uso de "Definição de taxa de serviço" |  |  |  |  |  |  | resources Analista 03 → Analista 09 |
| 106 | Redigir EL-UCE_019 - Especificação de Caso de Uso de "Definição de taxa de serviço" |  |  |  |  |  |  | resources Analista 03 → Analista 10 |
| 107 | Elaborar EL-CD_019 - Diagrama de Classes de "Definição de taxa de serviço" |  |  |  |  |  |  | resources Analista 03 → Analista 09 |
| 108 | Elaborar EL-MER_019 - Modelo Entidade Relacionamento de "Definição de taxa de serviço" |  |  |  |  |  |  | resources Analista 03 → Analista 11 |
| 109 | Gerar EL-Script_019 - Esquema/Script de "Definição de taxa de serviço" |  |  |  |  |  |  | resources Analista 03 → Analista 12 |
| 110 | Elaborar EL-DBD_019 - Documentação de Banco de Dados de "Definição de taxa de serviço" |  |  |  |  |  |  | resources Analista 03 → Analista 11 |
| 112 | Elaborar EL-UCD_020 - Diagrama de Caso de Uso de "Controle de assinatura de contrato" |  |  |  |  |  |  | resources Analista 04 → Analista 13 |
| 113 | Redigir EL-UCE_020 - Especificação de Caso de Uso de "Controle de assinatura de contrato" |  |  |  |  |  |  | resources Analista 04 → Analista 13 |
| 114 | Elaborar EL-CD_020 - Diagrama de Classes de "Controle de assinatura de contrato" |  |  |  |  |  |  | resources Analista 04 → Analista 14 |
| 115 | Elaborar EL-MER_020 - Modelo Entidade Relacionamento de "Controle de assinatura de contrato" |  |  |  |  |  |  | resources Analista 04 → Analista 15 |
| 116 | Gerar EL-Script_020 - Esquema/Script de "Controle de assinatura de contrato" |  |  |  |  |  |  | resources Analista 04 → Analista 14 |
| 117 | Elaborar EL-DBD_020 - Documentação de Banco de Dados de "Controle de assinatura de contrato" |  |  |  |  |  |  | resources Analista 04 → Analista 15 |
| 118 | **"Proposta de contrato"** |  | 2026-05-29 14:00 A → 2026-05-29 14:00 |  | 100% → 78% | none → 31.5d |  |  |
| 119 | Elaborar EL-UCD_021 - Diagrama de Caso de Uso de "Proposta de contrato" | 2026-05-25 09:00 A → 2026-05-25 09:00 | 2026-05-26 09:00 A → 2026-05-26 09:00 |  | 100% → 0% | none → 35d |  | resources Analista 05 → Analista 16 |
| 120 | Redigir EL-UCE_021 - Especificação de Caso de Uso de "Proposta de contrato" |  |  |  |  |  |  | resources Analista 05 → Analista 16 |
| 121 | Elaborar EL-CD_021 - Diagrama de Classes de "Proposta de contrato" |  |  |  |  |  |  | resources Analista 05 → Analista 17 |
| 122 | Elaborar EL-MER_021 - Modelo Entidade Relacionamento de "Proposta de contrato" |  |  |  |  |  |  | resources Analista 05 → Analista 18 |
| 123 | Gerar EL-Script_021 - Esquema/Script de "Proposta de contrato" |  |  |  |  |  |  | resources Analista 05 → Analista 17 |
| 124 | Elaborar EL-DBD_021 - Documentação de Banco de Dados de "Proposta de contrato" |  |  |  |  |  |  | resources Analista 05 → Analista 18 |
| 126 | Elaborar EL-UCD_022 - Diagrama de Caso de Uso de "Busca de profissionais" |  |  |  |  |  |  | resources Analista 06 → Analista 20 |
| 127 | Redigir EL-UCE_022 - Especificação de Caso de Uso de "Busca de profissionais" |  |  |  |  |  |  | resources Analista 06 → Analista 19 |
| 128 | Elaborar EL-CD_022 - Diagrama de Classes de "Busca de profissionais" |  |  |  |  |  |  | resources Analista 06 → Analista 20 |
| 129 | Elaborar EL-MER_022 - Modelo Entidade Relacionamento de "Busca de profissionais" |  |  |  |  |  |  | resources Analista 06 → Analista 19 |
| 130 | Gerar EL-Script_022 - Esquema/Script de "Busca de profissionais" |  |  |  |  |  |  | resources Analista 06 → Analista 21 |
| 131 | Elaborar EL-DBD_022 - Documentação de Banco de Dados de "Busca de profissionais" |  |  |  |  |  |  | resources Analista 06 → Analista 20 |
| 133 | Elaborar EL-UCD_023 - Diagrama de Caso de Uso de "Gerenciamento de escala de trabalho" |  |  |  |  |  |  | resources Analista 07 → Analista 21 |
| 134 | Redigir EL-UCE_023 - Especificação de Caso de Uso de "Gerenciamento de escala de trabalho" |  |  |  |  |  |  | resources Analista 07 → Analista 21 |
| 135 | Elaborar EL-CD_023 - Diagrama de Classes de "Gerenciamento de escala de trabalho" |  |  |  |  |  |  | resources Analista 07 → Analista 22 |
| 136 | Elaborar EL-MER_023 - Modelo Entidade Relacionamento de "Gerenciamento de escala de trabalho" |  |  |  |  |  |  | resources Analista 07 → Analista 23 |
| 137 | Gerar EL-Script_023 - Esquema/Script de "Gerenciamento de escala de trabalho" |  |  |  |  |  |  | resources Analista 07 → Analista 24 |
| 138 | Elaborar EL-DBD_023 - Documentação de Banco de Dados de "Gerenciamento de escala de trabalho" |  |  |  |  |  |  | resources Analista 07 → Analista 25 |
| 140 | **"Nível de acesso ao sistema"** |  |  |  |  |  | none → 90 |  |
| 142 | Implementar EL-FUX_024 - Front-UX de "Nível de acesso ao sistema" |  |  |  |  |  |  | resources Dev 01 → Dev 02 |
| 144 | Criar EL-IBD_024 - Interface do Mapeamento de Banco de Dados de "Nível de acesso ao sistema" |  |  |  |  |  |  | resources Dev 01 → Dev 03 |
| 145 | Integração parcial EL-IP_024 - "Nível de acesso ao sistema" |  |  |  |  |  |  | resources Dev 01 → Dev 04 |
| 146 | **"Cadastro de profissionais"** |  |  |  |  |  | none → 97 |  |
| 147 | Implementar EL-CMC_025 - Classes, Métodos e Componentes de "Cadastro de profissionais" |  |  |  |  |  |  | resources Dev 02 → Dev 05 |

| ID | Task | Start | Finish | Duration | Total float | Predecessors | Other |
| --- | --- | --- | --- | --- | --- | --- | --- |
| 148 | Implementar EL-FUX_025 - Front-UX de "Cadastro de profissionais" |  |  |  |  |  | resources Dev 02 → Dev 06 |
| 149 | Identificar EL-API_025 - APIs de "Cadastro de profissionais" |  |  |  |  |  | resources Dev 02 → Dev 07 |
| 150 | Criar EL-IBD_025 - Interface do Mapeamento de Banco de Dados de "Cadastro de profissionais" |  |  |  |  |  | resources Dev 02 → Dev 05 |
| 151 | Integração parcial EL-IP_025 - "Cadastro de profissionais" |  |  |  |  |  | resources Dev 02 → Dev 08 |
| 152 | **"Definição de taxa de serviço"** |  |  |  |  | none → 104 |  |
| 153 | Implementar EL-CMC_026 - Classes, Métodos e Componentes de "Definição de taxa de serviço" |  |  |  |  |  | resources Dev 03 → Dev 09 |
| 154 | Implementar EL-FUX_026 - Front-UX de "Definição de taxa de serviço" |  |  |  |  |  | resources Dev 03 → Dev 10 |
| 155 | Identificar EL-API_026 - APIs de "Definição de taxa de serviço" |  |  |  |  |  | resources Dev 03 → Dev 09 |
| 156 | Criar EL-IBD_026 - Interface do Mapeamento de Banco de Dados de "Definição de taxa de serviço" |  |  |  |  |  | resources Dev 03 → Dev 11 |
| 157 | Integração parcial EL-IP_026 - "Definição de taxa de serviço" |  |  |  |  |  | resources Dev 03 → Dev 12 |
| 158 | **"Controle de assinatura de contrato"** |  |  |  |  | none → 111 |  |
| 159 | Implementar EL-CMC_027 - Classes, Métodos e Componentes de "Controle de assinatura de contrato" |  |  |  |  |  | resources Dev 04 → Dev 13 |
| 160 | Implementar EL-FUX_027 - Front-UX de "Controle de assinatura de contrato" |  |  |  |  |  | resources Dev 04 → Dev 14 |
| 161 | Identificar EL-API_027 - APIs de "Controle de assinatura de contrato" |  |  |  |  |  | resources Dev 04 → Dev 13 |
| 162 | Criar EL-IBD_027 - Interface do Mapeamento de Banco de Dados de "Controle de assinatura de contrato" |  |  |  |  |  | resources Dev 04 → Dev 15 |
| 163 | Integração parcial EL-IP_027 - "Controle de assinatura de contrato" |  |  |  |  |  | resources Dev 04 → Dev 16 |
| 164 | **"Proposta de contrato"** |  |  |  |  | none → 118 |  |
| 165 | Implementar EL-CMC_028 - Classes, Métodos e Componentes de "Proposta de contrato" |  |  |  |  |  | resources Dev 05 → Dev 17 |
| 166 | Implementar EL-FUX_028 - Front-UX de "Proposta de contrato" |  |  |  |  |  | resources Dev 05 → Dev 17 |
| 167 | Identificar EL-API_028 - APIs de "Proposta de contrato" |  |  |  |  |  | resources Dev 05 → Dev 18 |
| 168 | Criar EL-IBD_028 - Interface do Mapeamento de Banco de Dados de "Proposta de contrato" |  |  |  |  |  | resources Dev 05 → Dev 19 |
| 169 | Integração parcial EL-IP_028 - "Proposta de contrato" |  |  |  |  |  | resources Dev 05 → Dev 19 |
| 170 | **"Busca de profissionais"** |  |  |  |  | none → 125 |  |
| 171 | Implementar EL-CMC_029 - Classes, Métodos e Componentes de "Busca de profissionais" |  |  |  |  |  | resources Dev 06 → Dev 20 |
| 172 | Implementar EL-FUX_029 - Front-UX de "Busca de profissionais" |  |  |  |  |  | resources Dev 06 → Dev 21 |
| 173 | Identificar EL-API_029 - APIs de "Busca de profissionais" |  |  |  |  |  | resources Dev 06 → Dev 22 |
| 174 | Criar EL-IBD_029 - Interface do Mapeamento de Banco de Dados de "Busca de profissionais" |  |  |  |  |  | resources Dev 06 → Dev 21 |
| 175 | Integração parcial EL-IP_029 - "Busca de profissionais" |  |  |  |  |  | resources Dev 06 → Dev 22 |
| 176 | **"Gerenciamento de escala de trabalho"** |  |  |  |  | none → 132 |  |
| 177 | Implementar EL-CMC_030 - Classes, Métodos e Componentes de "Gerenciamento de escala de trabalho" |  |  |  |  |  | resources Dev 07 → Dev 23 |
| 178 | Implementar EL-FUX_030 - Front-UX de "Gerenciamento de escala de trabalho" |  |  |  |  |  | resources Dev 07 → Dev 24 |
| 179 | Identificar EL-API_030 - APIs de "Gerenciamento de escala de trabalho" |  |  |  |  |  | resources Dev 07 → Dev 25 |
| 180 | Criar EL-IBD_030 - Interface do Mapeamento de Banco de Dados de "Gerenciamento de escala de trabalho" |  |  |  |  |  | resources Dev 07 → Dev 23 |
| 181 | Integração parcial EL-IP_030 - "Gerenciamento de escala de trabalho" |  |  |  |  |  | resources Dev 07 → Dev 24 |
| 184 | Implementar EL-TC_031 - Casos de Teste de "Nível de acesso ao sistema" |  |  |  | 22.5d → 22.38d |  | resources QA 01 → QA03 |
| 186 | Registrar EL-LT_031 - Logs de Teste de "Nível de acesso ao sistema" |  |  |  | 22.5d → 22.38d |  | resources QA 01 → QA03 |
| 189 | Implementar EL-TC_032 - Casos de Teste de "Cadastro de profissionais" |  |  |  | 22.5d → 22.38d |  | resources QA 02 → QA 09 |
| 190 | Executar EL-T_032 - Testes de "Cadastro de profissionais" |  |  |  | 22.5d → 22.38d |  | resources QA 02 → QA 08 |
| 191 | Registrar EL-LT_032 - Logs de Teste de "Cadastro de profissionais" |  |  |  | 22.5d → 22.38d |  | resources QA 02 → QA 08 |
| 192 | Executar EL-TH_032 - Testes de Homologação de "Cadastro de profissionais" |  |  |  | 22.5d → 22.38d |  | resources QA 02 → QA 09 |
| 194 | Implementar EL-TC_033 - Casos de Teste de "Definição de taxa de serviço" |  |  |  | 22.5d → 22.38d |  | resources QA 03 → QA 10 |
| 195 | Executar EL-T_033 - Testes de "Definição de taxa de serviço" |  |  |  | 22.5d → 22.38d |  | resources QA 03 → QA 11 |
| 196 | Registrar EL-LT_033 - Logs de Teste de "Definição de taxa de serviço" |  |  |  | 22.5d → 22.38d |  | resources QA 03 → QA 11 |
| 197 | Executar EL-TH_033 - Testes de Homologação de "Definição de taxa de serviço" |  |  |  | 22.5d → 22.38d |  | resources QA 03 → QA 12 |
| 199 | Implementar EL-TC_034 - Casos de Teste de "Controle de assinatura de contrato" |  |  |  | 22.5d → 22.38d |  | resources QA 04 → QA 13 |
| 200 | Executar EL-T_034 - Testes de "Controle de assinatura de contrato" |  |  |  | 22.5d → 22.38d |  | resources QA 04 → QA 15 |
| 201 | Registrar EL-LT_034 - Logs de Teste de "Controle de assinatura de contrato" |  |  |  | 22.5d → 22.38d |  | resources QA 04 → QA 14 |
| 202 | Executar EL-TH_034 - Testes de Homologação de "Controle de assinatura de contrato" |  |  |  | 22.5d → 22.38d |  | resources QA 04 → QA 15 |
| 204 | Implementar EL-TC_035 - Casos de Teste de "Proposta de contrato" |  |  |  | 22.5d → 22.38d |  | resources QA 05 → QA 16 |
| 205 | Executar EL-T_035 - Testes de "Proposta de contrato" |  |  |  | 22.5d → 22.38d |  | resources QA 05 → QA 16 |
| 206 | Registrar EL-LT_035 - Logs de Teste de "Proposta de contrato" |  |  |  | 22.5d → 22.38d |  | resources QA 05 → QA 17 |
| 207 | Executar EL-TH_035 - Testes de Homologação de "Proposta de contrato" |  |  |  | 22.5d → 22.38d |  | resources QA 05 → QA 18 |
| 209 | Implementar EL-TC_036 - Casos de Teste de "Busca de profissionais" |  |  |  | 22.5d → 22.38d |  | resources QA 06 → QA 19 |
| 210 | Executar EL-T_036 - Testes de "Busca de profissionais" |  |  |  | 22.5d → 22.38d |  | resources QA 06 → QA 20 |
| 211 | Registrar EL-LT_036 - Logs de Teste de "Busca de profissionais" |  |  |  | 22.5d → 22.38d |  | resources QA 06 → QA 20 |
| 212 | Executar EL-TH_036 - Testes de Homologação de "Busca de profissionais" |  |  |  | 22.5d → 22.38d |  | resources QA 06 → QA 21 |
| 214 | Implementar EL-TC_037 - Casos de Teste de "Gerenciamento de escala de trabalho" |  |  |  | 22.5d → 1.25d |  | resources QA 07 → QA 22 |
| 215 | Executar EL-T_037 - Testes de "Gerenciamento de escala de trabalho" |  |  |  | 22.5d → 1.25d |  | resources QA 07 → QA 23 |
| 216 | Registrar EL-LT_037 - Logs de Teste de "Gerenciamento de escala de trabalho" |  |  |  | 22.5d → 1.25d |  | resources QA 07 → QA 24 |
| 217 | Executar EL-TH_037 - Testes de Homologação de "Gerenciamento de escala de trabalho" |  |  |  | 22.5d → 1.25d |  | resources QA 07 → QA 25 |
| 219 | **"Nível de acesso ao sistema"** | 2026-06-11 09:00 → 2026-06-11 14:00 | 2026-06-11 14:00 → 2026-06-11 15:00 | 4h → 1h | 22.5d → 22.38d | none → 183 |  |
| 220 | Integração total EL-IT_038 - "Nível de acesso ao sistema" | 2026-06-11 09:00 → 2026-06-11 14:00 | 2026-06-11 14:00 → 2026-06-11 15:00 | 4h → 1h | 22.5d → 22.38d |  |  |
| 221 | **"Cadastro de profissionais"** | 2026-06-11 09:00 → 2026-06-11 14:00 | 2026-06-11 14:00 → 2026-06-11 15:00 | 4h → 1h | 22.5d → 22.38d | none → 188 |  |
| 222 | Integração total EL-IT_039 - "Cadastro de profissionais" | 2026-06-11 09:00 → 2026-06-11 14:00 | 2026-06-11 14:00 → 2026-06-11 15:00 | 4h → 1h | 22.5d → 22.38d |  |  |
| 223 | **"Definição de taxa de serviço"** | 2026-06-11 09:00 → 2026-06-11 14:00 | 2026-06-11 14:00 → 2026-06-11 15:00 | 4h → 1h | 22.5d → 22.38d | none → 193 |  |
| 224 | Integração total EL-IT_040 - "Definição de taxa de serviço" | 2026-06-11 09:00 → 2026-06-11 14:00 | 2026-06-11 14:00 → 2026-06-11 15:00 | 4h → 1h | 22.5d → 22.38d |  |  |
| 225 | **"Controle de assinatura de contrato"** | 2026-06-11 09:00 → 2026-06-11 14:00 | 2026-06-11 14:00 → 2026-06-11 15:00 | 4h → 1h | 22.5d → 22.38d | none → 198 |  |
| 226 | Integração total EL-IT_041 - "Controle de assinatura de contrato" | 2026-06-11 09:00 → 2026-06-11 14:00 | 2026-06-11 14:00 → 2026-06-11 15:00 | 4h → 1h | 22.5d → 22.38d |  |  |
| 227 | **"Proposta de contrato"** | 2026-06-11 09:00 → 2026-06-11 14:00 | 2026-06-11 14:00 → 2026-06-11 15:00 | 4h → 1h | 22.5d → 22.38d | none → 203 |  |
| 228 | Integração total EL-IT_042 - "Proposta de contrato" | 2026-06-11 09:00 → 2026-06-11 14:00 | 2026-06-11 14:00 → 2026-06-11 15:00 | 4h → 1h | 22.5d → 22.38d |  |  |

| ID | Task | Start | Finish | Duration | Total float | Predecessors | Other |
| --- | --- | --- | --- | --- | --- | --- | --- |
| 229 | **"Busca de profissionais"** | 2026-06-11 09:00 → 2026-06-11 14:00 | 2026-06-11 14:00 → 2026-06-11 15:00 | 4h → 1h | 22.5d → 22.38d | none → 208 |  |
| 230 | Integração total EL-IT_043 - "Busca de profissionais" | 2026-06-11 09:00 → 2026-06-11 14:00 | 2026-06-11 14:00 → 2026-06-11 15:00 | 4h → 1h | 22.5d → 22.38d |  |  |
| 231 | **"Gerenciamento de escala de trabalho"** | 2026-06-11 09:00 → 2026-06-11 14:00 | 2026-06-11 14:00 → 2026-06-11 15:00 | 4h → 1h | 1.38d → 1.25d | none → 213 |  |
| 232 | Integração total EL-IT_044 - "Gerenciamento de escala de trabalho" | 2026-06-11 09:00 → 2026-06-11 14:00 | 2026-06-11 14:00 → 2026-06-11 15:00 | 4h → 1h | 1.38d → 1.25d |  |  |
| 235 | **Modelagem** |  |  |  | 16.5d → 14d | 233 → none |  |
| 236 | **"Controle de pagamento"** |  |  |  | 16.5d → 14d | 233 → none |  |
| 237 | Elaborar EL-UCD_045 - Diagrama de Caso de Uso de "Controle de pagamento" |  |  |  | 16.5d → 14d |  | resources Analista 01 → Analista 21 |
| 238 | Redigir EL-UCE_045 - Especificação de Caso de Uso de "Controle de pagamento" |  |  |  | 16.5d → 14d |  | resources Analista 01 → Analista 21 |
| 239 | Elaborar EL-CD_045 - Diagrama de Classes de "Controle de pagamento" |  |  |  | 16.5d → 14d |  | resources Analista 01 → Analista 22 |
| 240 | Elaborar EL-MER_045 - Modelo Entidade Relacionamento de "Controle de pagamento" |  |  |  | 16.5d → 14d |  | resources Analista 01 → Analista 23 |
| 241 | Gerar EL-Script_045 - Esquema/Script de "Controle de pagamento" |  |  |  | 16.5d → 14d |  | resources Analista 01 → Analista 24 |
| 242 | Elaborar EL-DBD_045 - Documentação de Banco de Dados de "Controle de pagamento" |  |  |  | 16.5d → 14d |  | resources Analista 01 → Analista 25 |
| 244 | Elaborar EL-UCD_046 - Diagrama de Caso de Uso de "Configuração de Percentuais e Repasse" |  |  |  | 16.5d → 14d |  | resources Analista 02 → Analista 20 |
| 245 | Redigir EL-UCE_046 - Especificação de Caso de Uso de "Configuração de Percentuais e Repasse" |  |  |  | 16.5d → 14d |  | resources Analista 02 → Analista 19 |
| 246 | Elaborar EL-CD_046 - Diagrama de Classes de "Configuração de Percentuais e Repasse" |  |  |  | 16.5d → 14d |  | resources Analista 02 → Analista 20 |
| 247 | Elaborar EL-MER_046 - Modelo Entidade Relacionamento de "Configuração de Percentuais e Repasse" |  |  |  | 16.5d → 14d |  | resources Analista 02 → Analista 19 |
| 248 | Gerar EL-Script_046 - Esquema/Script de "Configuração de Percentuais e Repasse" |  |  |  | 16.5d → 14d |  | resources Analista 02 → Analista 21 |
| 249 | Elaborar EL-DBD_046 - Documentação de Banco de Dados de "Configuração de Percentuais e Repasse" |  |  |  | 16.5d → 14d |  | resources Analista 02 → Analista 20 |
| 251 | Elaborar EL-UCD_047 - Diagrama de Caso de Uso de "Gestão de painel jurídico" |  |  |  | 16.5d → 14d |  | resources Analista 03 → Analista 16 |
| 252 | Redigir EL-UCE_047 - Especificação de Caso de Uso de "Gestão de painel jurídico" |  |  |  | 16.5d → 14d |  | resources Analista 03 → Analista 16 |
| 253 | Elaborar EL-CD_047 - Diagrama de Classes de "Gestão de painel jurídico" |  |  |  | 16.5d → 14d |  | resources Analista 03 → Analista 17 |
| 254 | Elaborar EL-MER_047 - Modelo Entidade Relacionamento de "Gestão de painel jurídico" |  |  |  | 16.5d → 14d |  | resources Analista 03 → Analista 18 |
| 255 | Gerar EL-Script_047 - Esquema/Script de "Gestão de painel jurídico" |  |  |  | 16.5d → 14d |  | resources Analista 03 → Analista 17 |
| 256 | Elaborar EL-DBD_047 - Documentação de Banco de Dados de "Gestão de painel jurídico" |  |  |  | 16.5d → 14d |  | resources Analista 03 → Analista 18 |
| 258 | Elaborar EL-UCD_048 - Diagrama de Caso de Uso de "Cadastro do documento do profissional" |  |  |  | 16.5d → 14d |  | resources Analista 04 → Analista 13 |
| 259 | Redigir EL-UCE_048 - Especificação de Caso de Uso de "Cadastro do documento do profissional" |  |  |  | 16.5d → 14d |  | resources Analista 04 → Analista 13 |
| 260 | Elaborar EL-CD_048 - Diagrama de Classes de "Cadastro do documento do profissional" |  |  |  | 16.5d → 14d |  | resources Analista 04 → Analista 14 |
| 261 | Elaborar EL-MER_048 - Modelo Entidade Relacionamento de "Cadastro do documento do profissional" |  |  |  | 16.5d → 14d |  | resources Analista 04 → Analista 15 |
| 262 | Gerar EL-Script_048 - Esquema/Script de "Cadastro do documento do profissional" |  |  |  | 16.5d → 14d |  | resources Analista 04 → Analista 14 |
| 263 | Elaborar EL-DBD_048 - Documentação de Banco de Dados de "Cadastro do documento do profissional" |  |  |  | 16.5d → 14d |  | resources Analista 04 → Analista 15 |
| 265 | Elaborar EL-UCD_049 - Diagrama de Caso de Uso de "Gestão de relatórios financeiros" |  |  |  |  |  | resources Analista 05 → Analista 09 |
| 266 | Redigir EL-UCE_049 - Especificação de Caso de Uso de "Gestão de relatórios financeiros" |  |  |  |  |  | resources Analista 05 → Analista 10 |
| 267 | Elaborar EL-CD_049 - Diagrama de Classes de "Gestão de relatórios financeiros" |  |  |  |  |  | resources Analista 05 → Analista 09 |
| 268 | Elaborar EL-MER_049 - Modelo Entidade Relacionamento de "Gestão de relatórios financeiros" |  |  |  |  |  | resources Analista 05 → Analista 11 |
| 269 | Gerar EL-Script_049 - Esquema/Script de "Gestão de relatórios financeiros" |  |  |  |  |  | resources Analista 05 → Analista 12 |
| 270 | Elaborar EL-DBD_049 - Documentação de Banco de Dados de "Gestão de relatórios financeiros" |  |  |  |  |  | resources Analista 05 → Analista 11 |
| 273 | Implementar EL-CMC_050 - Classes, Métodos e Componentes de "Controle de pagamento" |  |  |  |  |  | resources Dev 01 → Dev 23 |
| 274 | Implementar EL-FUX_050 - Front-UX de "Controle de pagamento" |  |  |  |  |  | resources Dev 01 → Dev 24 |
| 275 | Identificar EL-API_050 - APIs de "Controle de pagamento" |  |  |  |  |  | resources Dev 01 → Dev 25 |
| 276 | Criar EL-IBD_050 - Interface do Mapeamento de Banco de Dados de "Controle de pagamento" |  |  |  |  |  | resources Dev 01 → Dev 23 |
| 277 | Integração parcial EL-IP_050 - "Controle de pagamento" |  |  |  |  |  | resources Dev 01 → Dev 24 |
| 279 | Implementar EL-CMC_051 - Classes, Métodos e Componentes de "Configuração de Percentuais e Repasse" |  |  |  |  |  | resources Dev 02 → Dev 20 |
| 280 | Implementar EL-FUX_051 - Front-UX de "Configuração de Percentuais e Repasse" |  |  |  |  |  | resources Dev 02 → Dev 21 |
| 281 | Identificar EL-API_051 - APIs de "Configuração de Percentuais e Repasse" |  |  |  |  |  | resources Dev 02 → Dev 22 |
| 282 | Criar EL-IBD_051 - Interface do Mapeamento de Banco de Dados de "Configuração de Percentuais e Repasse" |  |  |  |  |  | resources Dev 02 → Dev 21 |
| 283 | Integração parcial EL-IP_051 - "Configuração de Percentuais e Repasse" |  |  |  |  |  | resources Dev 02 → Dev 22 |
| 285 | Implementar EL-CMC_052 - Classes, Métodos e Componentes de "Gestão de painel jurídico" |  |  |  |  |  | resources Dev 03 → Dev 17 |
| 286 | Implementar EL-FUX_052 - Front-UX de "Gestão de painel jurídico" |  |  |  |  |  | resources Dev 03 → Dev 17 |
| 287 | Identificar EL-API_052 - APIs de "Gestão de painel jurídico" |  |  |  |  |  | resources Dev 03 → Dev 18 |
| 288 | Criar EL-IBD_052 - Interface do Mapeamento de Banco de Dados de "Gestão de painel jurídico" |  |  |  |  |  | resources Dev 03 → Dev 19 |
| 289 | Integração parcial EL-IP_052 - "Gestão de painel jurídico" |  |  |  |  |  | resources Dev 03 → Dev 19 |
| 291 | Implementar EL-CMC_053 - Classes, Métodos e Componentes de "Cadastro do documento do profissional" |  |  |  |  |  | resources Dev 04 → Dev 13 |
| 292 | Implementar EL-FUX_053 - Front-UX de "Cadastro do documento do profissional" |  |  |  |  |  | resources Dev 04 → Dev 14 |
| 293 | Identificar EL-API_053 - APIs de "Cadastro do documento do profissional" |  |  |  |  |  | resources Dev 04 → Dev 13 |
| 294 | Criar EL-IBD_053 - Interface do Mapeamento de Banco de Dados de "Cadastro do documento do profissional" |  |  |  |  |  | resources Dev 04 → Dev 15 |
| 295 | Integração parcial EL-IP_053 - "Cadastro do documento do profissional" |  |  |  |  |  | resources Dev 04 → Dev 16 |
| 297 | Implementar EL-CMC_054 - Classes, Métodos e Componentes de "Gestão de relatórios financeiros" |  |  |  | 16d → 13.5d |  | resources Dev 05 → Dev 09 |
| 298 | Implementar EL-FUX_054 - Front-UX de "Gestão de relatórios financeiros" |  |  |  | 16d → 13.5d |  | resources Dev 05 → Dev 10 |
| 299 | Identificar EL-API_054 - APIs de "Gestão de relatórios financeiros" |  |  |  | 16d → 13.5d |  | resources Dev 05 → Dev 09 |
| 300 | Criar EL-IBD_054 - Interface do Mapeamento de Banco de Dados de "Gestão de relatórios financeiros" |  |  |  | 16d → 13.5d |  | resources Dev 05 → Dev 11 |
| 301 | Integração parcial EL-IP_054 - "Gestão de relatórios financeiros" |  |  |  | 16d → 13.5d |  | resources Dev 05 → Dev 12 |
| 303 | **"Controle de pagamento"** |  |  |  |  | none → 236 |  |
| 304 | Implementar EL-TC_055 - Casos de Teste de "Controle de pagamento" |  |  |  |  |  | resources QA 01 → QA 22 |
| 305 | Executar EL-T_055 - Testes de "Controle de pagamento" |  |  |  |  |  | resources QA 01 → QA 23 |
| 306 | Registrar EL-LT_055 - Logs de Teste de "Controle de pagamento" |  |  |  |  |  | resources QA 01 → QA 24 |
| 307 | Executar EL-TH_055 - Testes de Homologação de "Controle de pagamento" |  |  |  |  |  | resources QA 01 → QA 25 |
| 308 | **"Configuração de Percentuais e Repasse"** |  |  |  |  | none → 243 |  |
| 309 | Implementar EL-TC_056 - Casos de Teste de "Configuração de Percentuais e Repasse" |  |  |  |  |  | resources QA 02 → QA 19 |
| 310 | Executar EL-T_056 - Testes de "Configuração de Percentuais e Repasse" |  |  |  |  |  | resources QA 02 → QA 20 |
| 311 | Registrar EL-LT_056 - Logs de Teste de "Configuração de Percentuais e Repasse" |  |  |  |  |  | resources QA 02 → QA 20 |

| ID | Task | Finish | Duration | Total float | Predecessors | Other |
| --- | --- | --- | --- | --- | --- | --- |
| 312 | Executar EL-TH_056 - Testes de Homologação de "Configuração de Percentuais e Repasse" |  |  |  |  | resources QA 02 → QA 21 |
| 313 | **"Gestão de painel jurídico"** |  |  |  | none → 250 |  |
| 314 | Implementar EL-TC_057 - Casos de Teste de "Gestão de painel jurídico" |  |  |  |  | resources QA 03 → QA 16 |
| 315 | Executar EL-T_057 - Testes de "Gestão de painel jurídico" |  |  |  |  | resources QA 03 → QA 16 |
| 316 | Registrar EL-LT_057 - Logs de Teste de "Gestão de painel jurídico" |  |  |  |  | resources QA 03 → QA 17 |
| 317 | Executar EL-TH_057 - Testes de Homologação de "Gestão de painel jurídico" |  |  |  |  | resources QA 03 → QA 18 |
| 318 | **"Cadastro do documento do profissional"** |  |  |  | none → 257 |  |
| 319 | Implementar EL-TC_058 - Casos de Teste de "Cadastro do documento do profissional" |  |  |  |  | resources QA 04 → QA 13 |
| 320 | Executar EL-T_058 - Testes de "Cadastro do documento do profissional" |  |  |  |  | resources QA 04 → QA 15 |
| 321 | Registrar EL-LT_058 - Logs de Teste de "Cadastro do documento do profissional" |  |  |  |  | resources QA 04 → QA 14 |
| 322 | Executar EL-TH_058 - Testes de Homologação de "Cadastro do documento do profissional" |  |  |  |  | resources QA 04 → QA 15 |
| 323 | **"Gestão de relatórios financeiros"** |  |  |  | none → 296 |  |
| 324 | Implementar EL-TC_059 - Casos de Teste de "Gestão de relatórios financeiros" |  |  |  |  | resources QA 05 → QA 10 |
| 325 | Executar EL-T_059 - Testes de "Gestão de relatórios financeiros" |  |  |  |  | resources QA 05 → QA 11 |
| 326 | Registrar EL-LT_059 - Logs de Teste de "Gestão de relatórios financeiros" |  |  |  |  | resources QA 05 → QA 11 |
| 327 | Executar EL-TH_059 - Testes de Homologação de "Gestão de relatórios financeiros" |  |  |  |  | resources QA 05 → QA 12 |
| 329 | **"Controle de pagamento"** | 2026-06-24 14:00 → 2026-06-24 10:00 | 4h → 1h | 13.5d → 13.88d |  |  |
| 330 | Integração total EL-IT_060 - "Controle de pagamento" | 2026-06-24 14:00 → 2026-06-24 10:00 | 4h → 1h | 13.5d → 13.88d |  |  |
| 331 | **"Configuração de Percentuais e Repasse"** | 2026-06-24 14:00 → 2026-06-24 10:00 | 4h → 1h | 13.5d → 13.88d |  |  |
| 332 | Integração total EL-IT_061 - "Configuração de Percentuais e Repasse" | 2026-06-24 14:00 → 2026-06-24 10:00 | 4h → 1h | 13.5d → 13.88d |  |  |
| 333 | **"Gestão de painel jurídico"** | 2026-06-24 14:00 → 2026-06-24 10:00 | 4h → 1h | 13.5d → 13.88d |  |  |
| 334 | Integração total EL-IT_062 - "Gestão de painel jurídico" | 2026-06-24 14:00 → 2026-06-24 10:00 | 4h → 1h | 13.5d → 13.88d |  |  |
| 335 | **"Cadastro do documento do profissional"** | 2026-06-24 14:00 → 2026-06-24 10:00 | 4h → 1h | 13.5d → 13.88d |  |  |
| 336 | Integração total EL-IT_063 - "Cadastro do documento do profissional" | 2026-06-24 14:00 → 2026-06-24 10:00 | 4h → 1h | 13.5d → 13.88d |  |  |
| 337 | **"Gestão de relatórios financeiros"** | 2026-06-24 14:00 → 2026-06-24 10:00 | 4h → 1h | 7.38d → 7.75d |  |  |
| 338 | Integração total EL-IT_064 - "Gestão de relatórios financeiros" | 2026-06-24 14:00 → 2026-06-24 10:00 | 4h → 1h | 7.38d → 7.75d |  |  |
